# Cleopatra Jungle

Schedule from Primavera P6, 2010-06-21 to 2010-11-30, data date 2010-06-21.

## Calendars

- Gama projects calender: Mon-Thu 08:00-16:00; Fri off; Sat-Sun 08:00-16:00. Exceptions (off unless hours are given): 2010-11-15 to 2010-11-18.
- jungle: Mon-Thu 08:00-16:00; Fri off; Sat-Sun 08:00-16:00. Exceptions (off unless hours are given): 2010-09-08 to 2010-09-09, 2010-09-11 to 2010-09-12.

## Schedule

| ID | WBS | Activity | Type | Duration | Start | Finish | Predecessors | Total float | Free float | Calendar | zone number | villa number | Work Category | concrete type |
| --- | --- | --- | --- | --- | --- | --- | --- | --- | --- | --- | --- | --- | --- | --- |
|  | Startup | **Startup Phase** |  |  | 2010-06-21 | 2010-06-21 |  |  |  |  |  |  |  |  |
| A1000 |  | Project Start | milestone | 0d | 2010-06-21 | 2010-06-21 | A1020 | 33d | 0d |  |  |  |  |  |
| A1020 |  | Site Taking Over | milestone | 0d | 2010-06-21 | 2010-06-21 |  | 33d | 0d |  |  |  |  |  |
|  | Const. | **Construction Phase** |  |  | 2010-06-21 | 2010-11-30 |  |  |  |  |  |  |  |  |
|  | zone 1 | **Zone.No 1** |  |  | 2010-06-21 | 2010-10-23 |  |  |  |  |  |  |  |  |
|  | villa 9 | **Villa Number D9** |  |  | 2010-06-21 | 2010-10-20 |  |  |  |  |  |  |  |  |
|  | 1 | **general dates** |  |  | 2010-06-21 | 2010-10-20 |  |  |  |  |  |  |  |  |
| A10230 |  | Start Villa construction | milestone | 0d | 2010-06-21 | 2010-06-21 | A10250, A1000 | 33d | 0d |  | 01 | 9 | 07 |  |
| A10250 |  | IFC drawings | milestone | 0d | 2010-06-21 | 2010-06-21 |  | 33d | 0d |  | 01 | 9 | 01 |  |
| A10300 |  | Fence Drawings IFC |  | 1d | 2010-06-21 | 2010-06-21 | A10230 | 73d | 40d |  | 01 | 9 | 01 |  |
| A10240 |  | finish Villa construction | milestone | 0d | 2010-10-20 | 2010-10-20 | A10200, A10192, A10290 | 31d |  |  | 01 | 9 | 08 |  |
|  | 2 | **earth works** |  |  | 2010-06-21 | 2010-07-06 |  |  |  |  |  |  |  |  |
| A9980 |  | excavation |  | 2d | 2010-06-21 | 2010-06-22 | A10230 | 33d | 0d |  | 01 | 9 | 02 |  |
| A9990 |  | soil replacement |  | 12d | 2010-06-23 | 2010-07-06 | A9980 | 33d | 0d |  | 01 | 9 | 02 |  |
|  | 3 | **foundation level** |  |  | 2010-07-07 | 2010-09-13 |  |  |  |  |  |  |  |  |
| A10000 |  | Plain Concrete Foundation |  | 2d | 2010-07-07 | 2010-07-08 | A9990 | 33d | 0d |  | 01 | 9 | 03 | 01 |
| A10001 |  | backfilling between P.C Foundation |  | 2d | 2010-07-11 | 2010-07-12 | A10000 FS+1d | 33d | 0d | jungle | 01 | 9 | 02 |  |
| A10002 |  | P.C Under Smells |  | 1d | 2010-07-13 | 2010-07-13 | A10001 | 33d | 0d | jungle | 01 | 9 | 03 | 01 |
| A10010 |  | Reinforced Concrete Foundation |  | 7d | 2010-07-14 | 2010-07-21 | A10002 | 33d | 0d |  | 01 | 9 | 03 | 02 |
| A10020 |  | under ground brick works |  | 2d | 2010-07-29 | 2010-07-31 | A10080 | 33d | 0d |  | 01 | 9 | 09 |  |
| A10030 |  | under ground insulation for RC & Brick work |  | 2d | 2010-08-01 | 2010-08-02 | A10020 | 33d | 0d |  | 01 | 9 | 10 |  |
| A10040 |  | backfilling for under ground |  | 4d | 2010-08-03 | 2010-08-07 | A10030 | 33d | 0d |  | 01 | 9 | 02 |  |
| A10050 |  | P.C slab on grade 10CM |  | 1d | 2010-09-06 | 2010-09-06 | A10210, A10140 | 42d | 0d |  | 01 | 9 | 03 | 03 |
| A10060 |  | moisture insulation with membrane sheets |  | 2d | 2010-09-07 | 2010-09-11 | A10050 | 42d | 0d |  | 01 | 9 | 10 |  |
| A10070 |  | R.C slab on grade |  | 2d | 2010-09-12 | 2010-09-13 | A10060 | 42d | 0d |  | 01 | 9 | 03 | 03 |

| ID | WBS | Activity | Duration | Start | Finish | Predecessors | Total float | Free float | Calendar | zone number | villa number | Work Category | concrete type |
| --- | --- | --- | --- | --- | --- | --- | --- | --- | --- | --- | --- | --- | --- |
|  | 4 | **skeleton & brick walls** |  | 2010-07-22 | 2010-10-18 |  |  |  |  |  |  |  |  |
| A10080 |  | columns for ground floor | 6d | 2010-07-22 | 2010-07-28 | A10010 | 33d | 0d |  | 01 | 9 | 03 | 04 |
| A10090 |  | slab for ground floor | 9d | 2010-08-08 | 2010-08-17 | A10080, A10040 | 33d | 0d |  | 01 | 9 | 03 | 05 |
| A10260 |  | pouring for ground floor's slab | 1d | 2010-08-18 | 2010-08-18 | A10090, A10150 FF+3d | 33d | 0d |  | 01 | 9 | 03 |  |
| A10100 |  | columns for 1st floor | 6d | 2010-08-19 | 2010-08-25 | A10260 | 35d | 0d |  | 01 | 9 | 03 | 04 |
| A10290 |  | Fence work | 50d | 2010-08-19 | 2010-10-18 | A10260, A10300 FS+10d | 33d | 2d |  | 01 | 9 | 06 |  |
| A10110 |  | slab for 1st floor | 9d | 2010-08-26 | 2010-09-05 | A10100 | 35d | 0d |  | 01 | 9 | 03 | 05 |
| A10140 |  | Brick works for ground floor | 5d | 2010-08-31 | 2010-09-05 | A10260 FS+10d | 42d | 0d |  | 01 | 9 | 09 |  |
| A10270 |  | pouring for 1st floor's slab | 1d | 2010-09-06 | 2010-09-06 | A10110, A10160 FF+3d | 35d | 0d |  | 01 | 9 | 03 |  |
| A10120 |  | columns for roof floor | 4d | 2010-09-12 | 2010-09-15 | A10270 FS+2d | 35d | 0d |  | 01 | 9 | 03 | 04 |
| A10130 |  | slab for roof floor | 6d | 2010-09-16 | 2010-09-22 | A10120 | 35d | 0d |  | 01 | 9 | 03 | 05 |
| A10141 |  | Brick works for 1st floor | 5d | 2010-09-21 | 2010-09-26 | A10270 FS+10d | 41d | 0d | jungle | 01 | 9 | 09 |  |
| A10280 |  | pouring for roof floor's slab | 1d | 2010-09-23 | 2010-09-23 | A10130, A10170 FF+2d | 35d | 0d |  | 01 | 9 | 03 |  |
| A10142 |  | Brick works for roof floor | 5d | 2010-10-04 | 2010-10-09 | A10280 FS+8d | 35d | 0d | jungle | 01 | 9 | 09 |  |
|  | 5 | **electro mechanical** |  | 2010-08-08 | 2010-10-11 |  |  |  |  |  |  |  |  |
| A10210 |  | plumbing connections under slab on grade | 2d | 2010-08-08 | 2010-08-09 | A10040 | 65d | 23d |  | 01 | 9 | 04 |  |
| A10150 |  | electrical conduits for ground floor's slab | 2d | 2010-08-12 | 2010-08-14 | A10090 SS+4d | 34d | 1d |  | 01 | 9 | 04 |  |
| A10160 |  | electrical conduits for 1st floor slab | 2d | 2010-08-31 | 2010-09-01 | A10110 SS+4d | 36d | 1d |  | 01 | 9 | 04 |  |
| A10171 |  | electrical conduits for ground floor walls | 2d | 2010-09-15 | 2010-09-16 | A10070 FS+1d | 42d | 0d | jungle | 01 | 9 | 04 |  |
| A10170 |  | electrical conduits for roof slab | 1d | 2010-09-20 | 2010-09-20 | A10130 SS+3d | 36d | 1d |  | 01 | 9 | 04 |  |
| A10172 |  | electrical conduits for 1st floor walls | 2d | 2010-09-27 | 2010-09-28 | A10141 | 41d | 0d | jungle | 01 | 9 | 04 |  |
| A10173 |  | electrical conduits for roof floor walls | 2d | 2010-10-10 | 2010-10-11 | A10142 | 38d | 0d | jungle | 01 | 9 | 04 |  |
|  | 6 | **finishing** |  | 2010-09-18 | 2010-10-20 |  |  |  |  |  |  |  |  |
| A10190 |  | Internal plastering for ground floor | 8d | 2010-09-18 | 2010-09-26 | A10171 | 42d | 2d |  | 01 | 9 | 05 |  |
| A10191 |  | Internal plastering for 1st floor | 8d | 2010-09-29 | 2010-10-07 | A10190, A10172 | 41d | 3d | jungle | 01 | 9 | 05 |  |
| A10200 |  | External plastering | 10d | 2010-10-10 | 2010-10-20 | A10142 | 31d | 0d |  | 01 | 9 | 05 |  |
| A10192 |  | Internal plastering for roof floor | 5d | 2010-10-12 | 2010-10-17 | A10191, A10173 | 38d | 3d | jungle | 01 | 9 | 05 |  |

| ID | WBS | Activity | Type | Duration | Start | Finish | Predecessors | Total float | Free float | Calendar | zone number | villa number | Work Category | concrete type |
| --- | --- | --- | --- | --- | --- | --- | --- | --- | --- | --- | --- | --- | --- | --- |
|  | villa 10 | **Villa Number D10** |  |  | 2010-06-21 | 2010-10-05 |  |  |  |  |  |  |  |  |
|  | 1 | **general dates** |  |  | 2010-06-21 | 2010-10-05 |  |  |  |  |  |  |  |  |
| A10540 |  | Start Villa construction | milestone | 0d | 2010-06-21 | 2010-06-21 | A10560 | 46d | 0d |  | 01 | 10 | 07 |  |
| A10560 |  | IFC drawings | milestone | 0d | 2010-06-21 | 2010-06-21 |  | 46d | 0d |  | 01 | 10 | 01 |  |
| A10610 |  | Fence Drawings IFC |  | 1d | 2010-06-21 | 2010-06-21 | A10540 | 73d | 27d |  | 01 | 10 | 01 |  |
| A10550 |  | finish Villa construction | milestone | 0d | 2010-10-05 | 2010-10-05 | A10520, A10670, A10600 | 44d |  |  | 01 | 10 | 08 |  |
|  | 2 | **earth works** |  |  | 2010-06-21 | 2010-06-22 |  |  |  |  |  |  |  |  |
| A10310 |  | excavation |  | 1d | 2010-06-21 | 2010-06-21 | A10540 | 46d | 0d |  | 01 | 10 | 02 |  |
| A10320 |  | soil replacement |  | 0d | 2010-06-22 | 2010-06-22 | A10310 | 46d | 0d |  | 01 | 10 | 02 |  |
|  | 3 | **foundation level** |  |  | 2010-06-22 | 2010-08-26 |  |  |  |  |  |  |  |  |
| A10330 |  | Plain Concrete Foundation |  | 2d | 2010-06-22 | 2010-06-23 | A10320 | 46d | 0d |  | 01 | 10 | 03 | 01 |
| A10620 |  | backfilling between P.C Foundation |  | 2d | 2010-06-26 | 2010-06-27 | A10330 FS+1d | 46d | 0d | jungle | 01 | 10 | 02 |  |
| A10630 |  | P.C Under Smells |  | 1d | 2010-06-28 | 2010-06-28 | A10620 | 46d | 0d | jungle | 01 | 10 | 03 | 01 |
| A10340 |  | Reinforced Concrete Foundation |  | 7d | 2010-06-29 | 2010-07-06 | A10630 | 46d | 0d |  | 01 | 10 | 03 | 02 |
| A10350 |  | under ground brick works |  | 2d | 2010-07-14 | 2010-07-15 | A10410 | 46d | 0d |  | 01 | 10 | 09 |  |
| A10360 |  | under ground insulation for RC & Brick work |  | 2d | 2010-07-17 | 2010-07-18 | A10350 | 46d | 0d |  | 01 | 10 | 10 |  |
| A10370 |  | backfilling for under ground |  | 4d | 2010-07-19 | 2010-07-22 | A10360 | 46d | 0d |  | 01 | 10 | 02 |  |
| A10380 |  | P.C slab on grade 10CM |  | 1d | 2010-08-22 | 2010-08-22 | A10530, A10470 | 55d | 0d |  | 01 | 10 | 03 | 03 |
| A10390 |  | moisture insulation with membrane sheets |  | 2d | 2010-08-23 | 2010-08-24 | A10380 | 55d | 0d |  | 01 | 10 | 10 |  |
| A10400 |  | R.C slab on grade |  | 2d | 2010-08-25 | 2010-08-26 | A10390 | 55d | 0d |  | 01 | 10 | 03 | 03 |
|  | 4 | **skeleton & brick walls** |  |  | 2010-07-07 | 2010-10-03 |  |  |  |  |  |  |  |  |
| A10410 |  | columns for ground floor |  | 6d | 2010-07-07 | 2010-07-13 | A10340 | 46d | 0d |  | 01 | 10 | 03 | 04 |
| A10420 |  | slab for ground floor |  | 9d | 2010-07-24 | 2010-08-02 | A10410, A10370 | 46d | 0d |  | 01 | 10 | 03 | 05 |
| A10570 |  | pouring for ground floor's slab |  | 1d | 2010-08-03 | 2010-08-03 | A10420, A10480 FF+3d | 46d | 0d |  | 01 | 10 | 03 |  |
| A10430 |  | columns for 1st floor |  | 6d | 2010-08-04 | 2010-08-10 | A10570 | 48d | 0d |  | 01 | 10 | 03 | 04 |
| A10600 |  | Fence work |  | 50d | 2010-08-04 | 2010-10-03 | A10570, A10610 FS+10d | 46d | 2d |  | 01 | 10 | 06 |  |
| A10440 |  | slab for 1st floor |  | 9d | 2010-08-11 | 2010-08-21 | A10430 | 48d | 0d |  | 01 | 10 | 03 | 05 |
| A10470 |  | Brick works for ground floor |  | 5d | 2010-08-16 | 2010-08-21 | A10570 FS+10d | 55d | 0d |  | 01 | 10 | 09 |  |
| A10580 |  | pouring for 1st floor's slab |  | 1d | 2010-08-22 | 2010-08-22 | A10440, A10490 FF+3d | 48d | 0d |  | 01 | 10 | 03 |  |
| A10450 |  | columns for roof floor |  | 4d | 2010-08-25 | 2010-08-29 | A10580 FS+2d | 48d | 0d |  | 01 | 10 | 03 | 04 |
| A10460 |  | slab for roof floor |  | 6d | 2010-08-30 | 2010-09-05 | A10450 | 48d | 0d |  | 01 | 10 | 03 | 05 |
| A10640 |  | Brick works for 1st floor |  | 5d | 2010-09-04 | 2010-09-13 | A10580 FS+10d | 52d | 0d | jungle | 01 | 10 | 09 |  |
| A10590 |  | pouring for roof floor's slab |  | 1d | 2010-09-06 | 2010-09-06 | A10460, A10500 FF+2d | 48d | 0d |  | 01 | 10 | 03 |  |
| A10650 |  | Brick works for roof floor |  | 5d | 2010-09-19 | 2010-09-23 | A10590 FS+8d | 48d | 0d | jungle | 01 | 10 | 09 |  |

| ID | WBS | Activity | Type | Duration | Start | Finish | Predecessors | Total float | Free float | Calendar | zone number | villa number | Work Category | concrete type |
| --- | --- | --- | --- | --- | --- | --- | --- | --- | --- | --- | --- | --- | --- | --- |
|  | 5 | **electro mechanical** |  |  | 2010-07-24 | 2010-09-26 |  |  |  |  |  |  |  |  |
| A10530 |  | plumbing connections under slab on grade |  | 2d | 2010-07-24 | 2010-07-25 | A10370 | 78d | 23d |  | 01 | 10 | 04 |  |
| A10480 |  | electrical conduits for ground floor's slab |  | 2d | 2010-07-28 | 2010-07-29 | A10420 SS+4d | 47d | 1d |  | 01 | 10 | 04 |  |
| A10490 |  | electrical conduits for 1st floor slab |  | 2d | 2010-08-16 | 2010-08-17 | A10440 SS+4d | 49d | 1d |  | 01 | 10 | 04 |  |
| A10680 |  | electrical conduits for ground floor walls |  | 2d | 2010-08-29 | 2010-08-30 | A10400 FS+1d | 53d | 0d | jungle | 01 | 10 | 04 |  |
| A10500 |  | electrical conduits for roof slab |  | 1d | 2010-09-02 | 2010-09-02 | A10460 SS+3d | 49d | 1d |  | 01 | 10 | 04 |  |
| A10690 |  | electrical conduits for 1st floor walls |  | 2d | 2010-09-14 | 2010-09-15 | A10640 | 52d | 0d | jungle | 01 | 10 | 04 |  |
| A10700 |  | electrical conduits for roof floor walls |  | 2d | 2010-09-25 | 2010-09-26 | A10650 | 51d | 0d | jungle | 01 | 10 | 04 |  |
|  | 6 | **finishing** |  |  | 2010-08-31 | 2010-10-05 |  |  |  |  |  |  |  |  |
| A10510 |  | Internal plastering for ground floor |  | 8d | 2010-08-31 | 2010-09-11 | A10680 | 55d | 4d |  | 01 | 10 | 05 |  |
| A10660 |  | Internal plastering for 1st floor |  | 8d | 2010-09-16 | 2010-09-25 | A10510, A10690 | 52d | 1d | jungle | 01 | 10 | 05 |  |
| A10520 |  | External plastering |  | 10d | 2010-09-25 | 2010-10-05 | A10650 | 44d | 0d |  | 01 | 10 | 05 |  |
| A10670 |  | Internal plastering for roof floor |  | 5d | 2010-09-27 | 2010-10-02 | A10660, A10700 | 51d | 3d | jungle | 01 | 10 | 05 |  |
|  | villa 11 | **Villa Number B11** |  |  | 2010-06-21 | 2010-10-19 |  |  |  |  |  |  |  |  |
|  | 1 | **general dates** |  |  | 2010-06-21 | 2010-10-19 |  |  |  |  |  |  |  |  |
| A10940 |  | Start Villa construction | milestone | 0d | 2010-06-21 | 2010-06-21 | A10960 | 34d | 0d |  | 01 | 11 | 07 |  |
| A10960 |  | IFC drawings | milestone | 0d | 2010-06-21 | 2010-06-21 |  | 34d | 0d |  | 01 | 11 | 01 |  |
| A11010 |  | Fence Drawings IFC |  | 1d | 2010-06-21 | 2010-06-21 | A10940 | 73d | 39d |  | 01 | 11 | 01 |  |
| A10950 |  | finish Villa construction | milestone | 0d | 2010-10-19 | 2010-10-19 | A10920, A11070, A11000 | 32d |  |  | 01 | 11 | 08 |  |
|  | 2 | **earth works** |  |  | 2010-06-22 | 2010-07-05 |  |  |  |  |  |  |  |  |
| A10710 |  | excavation |  | 0d | 2010-06-22 | 2010-06-22 | A10940 FS+1d | 34d | 0d |  | 01 | 11 | 02 |  |
| A10720 |  | soil replacement |  | 12d | 2010-06-22 | 2010-07-05 | A10710 | 34d | 0d |  | 01 | 11 | 02 |  |
|  | 3 | **foundation level** |  |  | 2010-07-06 | 2010-09-12 |  |  |  |  |  |  |  |  |
| A10730 |  | Plain Concrete Foundation |  | 2d | 2010-07-06 | 2010-07-07 | A10720 | 34d | 0d |  | 01 | 11 | 03 | 01 |
| A11020 |  | backfilling between P.C Foundation |  | 2d | 2010-07-10 | 2010-07-11 | A10730 FS+1d | 34d | 0d | jungle | 01 | 11 | 02 |  |
| A11030 |  | P.C Under Smells |  | 1d | 2010-07-12 | 2010-07-12 | A11020 | 34d | 0d | jungle | 01 | 11 | 03 | 01 |
| A10740 |  | Reinforced Concrete Foundation |  | 7d | 2010-07-13 | 2010-07-20 | A11030 | 34d | 0d |  | 01 | 11 | 03 | 02 |
| A10750 |  | under ground brick works |  | 2d | 2010-07-28 | 2010-07-29 | A10810 | 34d | 0d |  | 01 | 11 | 09 |  |
| A10760 |  | under ground insulation for RC & Brick work |  | 2d | 2010-07-31 | 2010-08-01 | A10750 | 34d | 0d |  | 01 | 11 | 10 |  |
| A10770 |  | backfilling for under ground |  | 4d | 2010-08-02 | 2010-08-05 | A10760 | 34d | 0d |  | 01 | 11 | 02 |  |
| A10780 |  | P.C slab on grade 10CM |  | 1d | 2010-09-05 | 2010-09-05 | A10930, A10870 | 43d | 0d |  | 01 | 11 | 03 | 03 |
| A10790 |  | moisture insulation with membrane sheets |  | 2d | 2010-09-06 | 2010-09-07 | A10780 | 43d | 0d |  | 01 | 11 | 10 |  |
| A10800 |  | R.C slab on grade |  | 2d | 2010-09-11 | 2010-09-12 | A10790 | 43d | 0d |  | 01 | 11 | 03 | 03 |

| ID | WBS | Activity | Duration | Start | Finish | Predecessors | Total float | Free float | Calendar | zone number | villa number | Work Category | concrete type |
| --- | --- | --- | --- | --- | --- | --- | --- | --- | --- | --- | --- | --- | --- |
|  | 4 | **skeleton & brick walls** |  | 2010-07-21 | 2010-10-17 |  |  |  |  |  |  |  |  |
| A10810 |  | columns for ground floor | 6d | 2010-07-21 | 2010-07-27 | A10740 | 34d | 0d |  | 01 | 11 | 03 | 04 |
| A10820 |  | slab for ground floor | 9d | 2010-08-07 | 2010-08-16 | A10810, A10770 | 34d | 0d |  | 01 | 11 | 03 | 05 |
| A10970 |  | pouring for ground floor's slab | 1d | 2010-08-17 | 2010-08-17 | A10820, A10880 FF+3d | 34d | 0d |  | 01 | 11 | 03 |  |
| A10830 |  | columns for 1st floor | 6d | 2010-08-18 | 2010-08-24 | A10970 | 36d | 0d |  | 01 | 11 | 03 | 04 |
| A11000 |  | Fence work | 50d | 2010-08-18 | 2010-10-17 | A10970, A11010 FS+10d | 34d | 2d |  | 01 | 11 | 06 |  |
| A10840 |  | slab for 1st floor | 9d | 2010-08-25 | 2010-09-04 | A10830 | 36d | 0d |  | 01 | 11 | 03 | 05 |
| A10870 |  | Brick works for ground floor | 5d | 2010-08-30 | 2010-09-04 | A10970 FS+10d | 43d | 0d |  | 01 | 11 | 09 |  |
| A10980 |  | pouring for 1st floor's slab | 1d | 2010-09-05 | 2010-09-05 | A10840, A10890 FF+3d | 36d | 0d |  | 01 | 11 | 03 |  |
| A10850 |  | columns for roof floor | 4d | 2010-09-11 | 2010-09-14 | A10980 FS+2d | 36d | 0d |  | 01 | 11 | 03 | 04 |
| A10860 |  | slab for roof floor | 6d | 2010-09-15 | 2010-09-21 | A10850 | 36d | 0d |  | 01 | 11 | 03 | 05 |
| A11040 |  | Brick works for 1st floor | 5d | 2010-09-20 | 2010-09-25 | A10980 FS+10d | 42d | 0d | jungle | 01 | 11 | 09 |  |
| A10990 |  | pouring for roof floor's slab | 1d | 2010-09-22 | 2010-09-22 | A10860, A10900 FF+2d | 36d | 0d |  | 01 | 11 | 03 |  |
| A11050 |  | Brick works for roof floor | 5d | 2010-10-03 | 2010-10-07 | A10990 FS+8d | 36d | 0d | jungle | 01 | 11 | 09 |  |
|  | 5 | **electro mechanical** |  | 2010-08-07 | 2010-10-10 |  |  |  |  |  |  |  |  |
| A10930 |  | plumbing connections under slab on grade | 2d | 2010-08-07 | 2010-08-08 | A10770 | 66d | 23d |  | 01 | 11 | 04 |  |
| A10880 |  | electrical conduits for ground floor's slab | 2d | 2010-08-11 | 2010-08-12 | A10820 SS+4d | 35d | 1d |  | 01 | 11 | 04 |  |
| A10890 |  | electrical conduits for 1st floor slab | 2d | 2010-08-30 | 2010-08-31 | A10840 SS+4d | 37d | 1d |  | 01 | 11 | 04 |  |
| A11080 |  | electrical conduits for ground floor walls | 2d | 2010-09-14 | 2010-09-15 | A10800 FS+1d | 43d | 0d | jungle | 01 | 11 | 04 |  |
| A10900 |  | electrical conduits for roof slab | 1d | 2010-09-19 | 2010-09-19 | A10860 SS+3d | 37d | 1d |  | 01 | 11 | 04 |  |
| A11090 |  | electrical conduits for 1st floor walls | 2d | 2010-09-26 | 2010-09-27 | A11040 | 42d | 0d | jungle | 01 | 11 | 04 |  |
| A11100 |  | electrical conduits for roof floor walls | 2d | 2010-10-09 | 2010-10-10 | A11050 | 39d | 0d | jungle | 01 | 11 | 04 |  |
|  | 6 | **finishing** |  | 2010-09-16 | 2010-10-19 |  |  |  |  |  |  |  |  |
| A10910 |  | Internal plastering for ground floor | 8d | 2010-09-16 | 2010-09-25 | A11080 | 43d | 2d |  | 01 | 11 | 05 |  |
| A11060 |  | Internal plastering for 1st floor | 8d | 2010-09-28 | 2010-10-06 | A10910, A11090 | 42d | 3d | jungle | 01 | 11 | 05 |  |
| A10920 |  | External plastering | 10d | 2010-10-09 | 2010-10-19 | A11050 | 32d | 0d |  | 01 | 11 | 05 |  |
| A11070 |  | Internal plastering for roof floor | 5d | 2010-10-11 | 2010-10-16 | A11060, A11100 | 39d | 3d | jungle | 01 | 11 | 05 |  |

| ID | WBS | Activity | Type | Duration | Start | Finish | Predecessors | Total float | Free float | Calendar | zone number | villa number | Work Category | concrete type |
| --- | --- | --- | --- | --- | --- | --- | --- | --- | --- | --- | --- | --- | --- | --- |
|  | villa 12 | **Villa Number B12** |  |  | 2010-06-21 | 2010-10-19 |  |  |  |  |  |  |  |  |
|  | 1 | **general dates** |  |  | 2010-06-21 | 2010-10-19 |  |  |  |  |  |  |  |  |
| A11340 |  | Start Villa construction | milestone | 0d | 2010-06-21 | 2010-06-21 | A11360 | 34d | 0d |  | 01 | 12 | 07 |  |
| A11360 |  | IFC drawings | milestone | 0d | 2010-06-21 | 2010-06-21 |  | 34d | 0d |  | 01 | 12 | 01 |  |
| A11410 |  | Fence Drawings IFC |  | 1d | 2010-06-21 | 2010-06-21 | A11340 | 73d | 39d |  | 01 | 12 | 01 |  |
| A11350 |  | finish Villa construction | milestone | 0d | 2010-10-19 | 2010-10-19 | A11320, A11470, A11400 | 32d |  |  | 01 | 12 | 08 |  |
|  | 2 | **earth works** |  |  | 2010-06-22 | 2010-07-05 |  |  |  |  |  |  |  |  |
| A11110 |  | excavation |  | 0d | 2010-06-22 | 2010-06-22 | A11340 FS+1d | 34d | 0d |  | 01 | 12 | 02 |  |
| A11120 |  | soil replacement |  | 12d | 2010-06-22 | 2010-07-05 | A11110 | 34d | 0d |  | 01 | 12 | 02 |  |
|  | 3 | **foundation level** |  |  | 2010-07-06 | 2010-09-12 |  |  |  |  |  |  |  |  |
| A11130 |  | Plain Concrete Foundation |  | 2d | 2010-07-06 | 2010-07-07 | A11120 | 34d | 0d |  | 01 | 12 | 03 | 01 |
| A11420 |  | backfilling between P.C Foundation |  | 2d | 2010-07-10 | 2010-07-11 | A11130 FS+1d | 34d | 0d | jungle | 01 | 12 | 02 |  |
| A11430 |  | P.C Under Smells |  | 1d | 2010-07-12 | 2010-07-12 | A11420 | 34d | 0d | jungle | 01 | 12 | 03 | 01 |
| A11140 |  | Reinforced Concrete Foundation |  | 7d | 2010-07-13 | 2010-07-20 | A11430 | 34d | 0d |  | 01 | 12 | 03 | 02 |
| A11150 |  | under ground brick works |  | 2d | 2010-07-28 | 2010-07-29 | A11210 | 34d | 0d |  | 01 | 12 | 09 |  |
| A11160 |  | under ground insulation for RC & Brick work |  | 2d | 2010-07-31 | 2010-08-01 | A11150 | 34d | 0d |  | 01 | 12 | 10 |  |
| A11170 |  | backfilling for under ground |  | 4d | 2010-08-02 | 2010-08-05 | A11160 | 34d | 0d |  | 01 | 12 | 02 |  |
| A11180 |  | P.C slab on grade 10CM |  | 1d | 2010-09-05 | 2010-09-05 | A11330, A11270 | 43d | 0d |  | 01 | 12 | 03 | 03 |
| A11190 |  | moisture insulation with membrane sheets |  | 2d | 2010-09-06 | 2010-09-07 | A11180 | 43d | 0d |  | 01 | 12 | 10 |  |
| A11200 |  | R.C slab on grade |  | 2d | 2010-09-11 | 2010-09-12 | A11190 | 43d | 0d |  | 01 | 12 | 03 | 03 |
|  | 4 | **skeleton & brick walls** |  |  | 2010-07-21 | 2010-10-17 |  |  |  |  |  |  |  |  |
| A11210 |  | columns for ground floor |  | 6d | 2010-07-21 | 2010-07-27 | A11140 | 34d | 0d |  | 01 | 12 | 03 | 04 |
| A11220 |  | slab for ground floor |  | 9d | 2010-08-07 | 2010-08-16 | A11210, A11170 | 34d | 0d |  | 01 | 12 | 03 | 05 |
| A11370 |  | pouring for ground floor's slab |  | 1d | 2010-08-17 | 2010-08-17 | A11220, A11280 FF+3d | 34d | 0d |  | 01 | 12 | 03 |  |
| A11230 |  | columns for 1st floor |  | 6d | 2010-08-18 | 2010-08-24 | A11370 | 36d | 0d |  | 01 | 12 | 03 | 04 |
| A11400 |  | Fence work |  | 50d | 2010-08-18 | 2010-10-17 | A11370, A11410 FS+10d | 34d | 2d |  | 01 | 12 | 06 |  |
| A11240 |  | slab for 1st floor |  | 9d | 2010-08-25 | 2010-09-04 | A11230 | 36d | 0d |  | 01 | 12 | 03 | 05 |
| A11270 |  | Brick works for ground floor |  | 5d | 2010-08-30 | 2010-09-04 | A11370 FS+10d | 43d | 0d |  | 01 | 12 | 09 |  |
| A11380 |  | pouring for 1st floor's slab |  | 1d | 2010-09-05 | 2010-09-05 | A11240, A11290 FF+3d | 36d | 0d |  | 01 | 12 | 03 |  |
| A11250 |  | columns for roof floor |  | 4d | 2010-09-11 | 2010-09-14 | A11380 FS+2d | 36d | 0d |  | 01 | 12 | 03 | 04 |
| A11260 |  | slab for roof floor |  | 6d | 2010-09-15 | 2010-09-21 | A11250 | 36d | 0d |  | 01 | 12 | 03 | 05 |
| A11440 |  | Brick works for 1st floor |  | 5d | 2010-09-20 | 2010-09-25 | A11380 FS+10d | 42d | 0d | jungle | 01 | 12 | 09 |  |
| A11390 |  | pouring for roof floor's slab |  | 1d | 2010-09-22 | 2010-09-22 | A11260, A11300 FF+2d | 36d | 0d |  | 01 | 12 | 03 |  |
| A11450 |  | Brick works for roof floor |  | 5d | 2010-10-03 | 2010-10-07 | A11390 FS+8d | 36d | 0d | jungle | 01 | 12 | 09 |  |

| ID | WBS | Activity | Type | Duration | Start | Finish | Predecessors | Total float | Free float | Calendar | zone number | villa number | Work Category | concrete type |
| --- | --- | --- | --- | --- | --- | --- | --- | --- | --- | --- | --- | --- | --- | --- |
|  | 5 | **electro mechanical** |  |  | 2010-08-07 | 2010-10-10 |  |  |  |  |  |  |  |  |
| A11330 |  | plumbing connections under slab on grade |  | 2d | 2010-08-07 | 2010-08-08 | A11170 | 66d | 23d |  | 01 | 12 | 04 |  |
| A11280 |  | electrical conduits for ground floor's slab |  | 2d | 2010-08-11 | 2010-08-12 | A11220 SS+4d | 35d | 1d |  | 01 | 12 | 04 |  |
| A11290 |  | electrical conduits for 1st floor slab |  | 2d | 2010-08-30 | 2010-08-31 | A11240 SS+4d | 37d | 1d |  | 01 | 12 | 04 |  |
| A11480 |  | electrical conduits for ground floor walls |  | 2d | 2010-09-14 | 2010-09-15 | A11200 FS+1d | 43d | 0d | jungle | 01 | 12 | 04 |  |
| A11300 |  | electrical conduits for roof slab |  | 1d | 2010-09-19 | 2010-09-19 | A11260 SS+3d | 37d | 1d |  | 01 | 12 | 04 |  |
| A11490 |  | electrical conduits for 1st floor walls |  | 2d | 2010-09-26 | 2010-09-27 | A11440 | 42d | 0d | jungle | 01 | 12 | 04 |  |
| A11500 |  | electrical conduits for roof floor walls |  | 2d | 2010-10-09 | 2010-10-10 | A11450 | 39d | 0d | jungle | 01 | 12 | 04 |  |
|  | 6 | **finishing** |  |  | 2010-09-16 | 2010-10-19 |  |  |  |  |  |  |  |  |
| A11310 |  | Internal plastering for ground floor |  | 8d | 2010-09-16 | 2010-09-25 | A11480 | 43d | 2d |  | 01 | 12 | 05 |  |
| A11460 |  | Internal plastering for 1st floor |  | 8d | 2010-09-28 | 2010-10-06 | A11310, A11490 | 42d | 3d | jungle | 01 | 12 | 05 |  |
| A11320 |  | External plastering |  | 10d | 2010-10-09 | 2010-10-19 | A11450 | 32d | 0d |  | 01 | 12 | 05 |  |
| A11470 |  | Internal plastering for roof floor |  | 5d | 2010-10-11 | 2010-10-16 | A11460, A11500 | 39d | 3d | jungle | 01 | 12 | 05 |  |
|  | villa 13 | **Villa Number B13** |  |  | 2010-06-21 | 2010-10-20 |  |  |  |  |  |  |  |  |
|  | 1 | **general dates** |  |  | 2010-06-21 | 2010-10-20 |  |  |  |  |  |  |  |  |
| A11740 |  | Start Villa construction | milestone | 0d | 2010-06-21 | 2010-06-21 | A11760 | 33d | 0d |  | 01 | 13 | 07 |  |
| A11760 |  | IFC drawings | milestone | 0d | 2010-06-21 | 2010-06-21 |  | 33d | 0d |  | 01 | 13 | 01 |  |
| A11810 |  | Fence Drawings IFC |  | 1d | 2010-06-21 | 2010-06-21 | A11740 | 73d | 40d |  | 01 | 13 | 01 |  |
| A11750 |  | finish Villa construction | milestone | 0d | 2010-10-20 | 2010-10-20 | A11720, A11870, A11800 | 31d |  |  | 01 | 13 | 08 |  |
|  | 2 | **earth works** |  |  | 2010-06-23 | 2010-07-06 |  |  |  |  |  |  |  |  |
| A11510 |  | excavation |  | 0d | 2010-06-23 | 2010-06-23 | A11740 FS+2d | 33d | 0d |  | 01 | 13 | 02 |  |
| A11520 |  | soil replacement |  | 12d | 2010-06-23 | 2010-07-06 | A11510 | 33d | 0d |  | 01 | 13 | 02 |  |
|  | 3 | **foundation level** |  |  | 2010-07-07 | 2010-09-13 |  |  |  |  |  |  |  |  |
| A11530 |  | Plain Concrete Foundation |  | 2d | 2010-07-07 | 2010-07-08 | A11520 | 33d | 0d |  | 01 | 13 | 03 | 01 |
| A11820 |  | backfilling between P.C Foundation |  | 2d | 2010-07-11 | 2010-07-12 | A11530 FS+1d | 33d | 0d | jungle | 01 | 13 | 02 |  |
| A11830 |  | P.C Under Smells |  | 1d | 2010-07-13 | 2010-07-13 | A11820 | 33d | 0d | jungle | 01 | 13 | 03 | 01 |
| A11540 |  | Reinforced Concrete Foundation |  | 7d | 2010-07-14 | 2010-07-21 | A11830 | 33d | 0d |  | 01 | 13 | 03 | 02 |
| A11550 |  | under ground brick works |  | 2d | 2010-07-29 | 2010-07-31 | A11610 | 33d | 0d |  | 01 | 13 | 09 |  |
| A11560 |  | under ground insulation for RC & Brick work |  | 2d | 2010-08-01 | 2010-08-02 | A11550 | 33d | 0d |  | 01 | 13 | 10 |  |
| A11570 |  | backfilling for under ground |  | 4d | 2010-08-03 | 2010-08-07 | A11560 | 33d | 0d |  | 01 | 13 | 02 |  |
| A11580 |  | P.C slab on grade 10CM |  | 1d | 2010-09-06 | 2010-09-06 | A11730, A11670 | 42d | 0d |  | 01 | 13 | 03 | 03 |
| A11590 |  | moisture insulation with membrane sheets |  | 2d | 2010-09-07 | 2010-09-11 | A11580 | 42d | 0d |  | 01 | 13 | 10 |  |
| A11600 |  | R.C slab on grade |  | 2d | 2010-09-12 | 2010-09-13 | A11590 | 42d | 0d |  | 01 | 13 | 03 | 03 |

| ID | WBS | Activity | Duration | Start | Finish | Predecessors | Total float | Free float | Calendar | zone number | villa number | Work Category | concrete type |
| --- | --- | --- | --- | --- | --- | --- | --- | --- | --- | --- | --- | --- | --- |
|  | 4 | **skeleton & brick walls** |  | 2010-07-22 | 2010-10-18 |  |  |  |  |  |  |  |  |
| A11610 |  | columns for ground floor | 6d | 2010-07-22 | 2010-07-28 | A11540 | 33d | 0d |  | 01 | 13 | 03 | 04 |
| A11620 |  | slab for ground floor | 9d | 2010-08-08 | 2010-08-17 | A11610, A11570 | 33d | 0d |  | 01 | 13 | 03 | 05 |
| A11770 |  | pouring for ground floor's slab | 1d | 2010-08-18 | 2010-08-18 | A11620, A11680 FF+3d | 33d | 0d |  | 01 | 13 | 03 |  |
| A11630 |  | columns for 1st floor | 6d | 2010-08-19 | 2010-08-25 | A11770 | 35d | 0d |  | 01 | 13 | 03 | 04 |
| A11800 |  | Fence work | 50d | 2010-08-19 | 2010-10-18 | A11770, A11810 FS+10d | 33d | 2d |  | 01 | 13 | 06 |  |
| A11640 |  | slab for 1st floor | 9d | 2010-08-26 | 2010-09-05 | A11630 | 35d | 0d |  | 01 | 13 | 03 | 05 |
| A11670 |  | Brick works for ground floor | 5d | 2010-08-31 | 2010-09-05 | A11770 FS+10d | 42d | 0d |  | 01 | 13 | 09 |  |
| A11780 |  | pouring for 1st floor's slab | 1d | 2010-09-06 | 2010-09-06 | A11640, A11690 FF+3d | 35d | 0d |  | 01 | 13 | 03 |  |
| A11650 |  | columns for roof floor | 4d | 2010-09-12 | 2010-09-15 | A11780 FS+2d | 35d | 0d |  | 01 | 13 | 03 | 04 |
| A11660 |  | slab for roof floor | 6d | 2010-09-16 | 2010-09-22 | A11650 | 35d | 0d |  | 01 | 13 | 03 | 05 |
| A11840 |  | Brick works for 1st floor | 5d | 2010-09-21 | 2010-09-26 | A11780 FS+10d | 41d | 0d | jungle | 01 | 13 | 09 |  |
| A11790 |  | pouring for roof floor's slab | 1d | 2010-09-23 | 2010-09-23 | A11660, A11700 FF+2d | 35d | 0d |  | 01 | 13 | 03 |  |
| A11850 |  | Brick works for roof floor | 5d | 2010-10-04 | 2010-10-09 | A11790 FS+8d | 35d | 0d | jungle | 01 | 13 | 09 |  |
|  | 5 | **electro mechanical** |  | 2010-08-08 | 2010-10-11 |  |  |  |  |  |  |  |  |
| A11730 |  | plumbing connections under slab on grade | 2d | 2010-08-08 | 2010-08-09 | A11570 | 65d | 23d |  | 01 | 13 | 04 |  |
| A11680 |  | electrical conduits for ground floor's slab | 2d | 2010-08-12 | 2010-08-14 | A11620 SS+4d | 34d | 1d |  | 01 | 13 | 04 |  |
| A11690 |  | electrical conduits for 1st floor slab | 2d | 2010-08-31 | 2010-09-01 | A11640 SS+4d | 36d | 1d |  | 01 | 13 | 04 |  |
| A11880 |  | electrical conduits for ground floor walls | 2d | 2010-09-15 | 2010-09-16 | A11600 FS+1d | 42d | 0d | jungle | 01 | 13 | 04 |  |
| A11700 |  | electrical conduits for roof slab | 1d | 2010-09-20 | 2010-09-20 | A11660 SS+3d | 36d | 1d |  | 01 | 13 | 04 |  |
| A11890 |  | electrical conduits for 1st floor walls | 2d | 2010-09-27 | 2010-09-28 | A11840 | 41d | 0d | jungle | 01 | 13 | 04 |  |
| A11900 |  | electrical conduits for roof floor walls | 2d | 2010-10-10 | 2010-10-11 | A11850 | 38d | 0d | jungle | 01 | 13 | 04 |  |
|  | 6 | **finishing** |  | 2010-09-18 | 2010-10-20 |  |  |  |  |  |  |  |  |
| A11710 |  | Internal plastering for ground floor | 8d | 2010-09-18 | 2010-09-26 | A11880 | 42d | 2d |  | 01 | 13 | 05 |  |
| A11860 |  | Internal plastering for 1st floor | 8d | 2010-09-29 | 2010-10-07 | A11710, A11890 | 41d | 3d | jungle | 01 | 13 | 05 |  |
| A11720 |  | External plastering | 10d | 2010-10-10 | 2010-10-20 | A11850 | 31d | 0d |  | 01 | 13 | 05 |  |
| A11870 |  | Internal plastering for roof floor | 5d | 2010-10-12 | 2010-10-17 | A11860, A11900 | 38d | 3d | jungle | 01 | 13 | 05 |  |

| ID | WBS | Activity | Type | Duration | Start | Finish | Predecessors | Total float | Free float | Calendar | zone number | villa number | Work Category | concrete type |
| --- | --- | --- | --- | --- | --- | --- | --- | --- | --- | --- | --- | --- | --- | --- |
|  | villa 14 | **Villa Number B14** |  |  | 2010-06-21 | 2010-10-20 |  |  |  |  |  |  |  |  |
|  | 1 | **general dates** |  |  | 2010-06-21 | 2010-10-20 |  |  |  |  |  |  |  |  |
| A12140 |  | Start Villa construction | milestone | 0d | 2010-06-21 | 2010-06-21 | A12160 | 33d | 0d |  | 01 | 14 | 07 |  |
| A12160 |  | IFC drawings | milestone | 0d | 2010-06-21 | 2010-06-21 |  | 33d | 0d |  | 01 | 14 | 01 |  |
| A12210 |  | Fence Drawings IFC |  | 1d | 2010-06-21 | 2010-06-21 | A12140 | 73d | 40d |  | 01 | 14 | 01 |  |
| A12150 |  | finish Villa construction | milestone | 0d | 2010-10-20 | 2010-10-20 | A12120, A12270, A12200 | 31d |  |  | 01 | 14 | 08 |  |
|  | 2 | **earth works** |  |  | 2010-06-23 | 2010-07-06 |  |  |  |  |  |  |  |  |
| A11910 |  | excavation |  | 0d | 2010-06-23 | 2010-06-23 | A12140 FS+2d | 33d | 0d |  | 01 | 14 | 02 |  |
| A11920 |  | soil replacement |  | 12d | 2010-06-23 | 2010-07-06 | A11910 | 33d | 0d |  | 01 | 14 | 02 |  |
|  | 3 | **foundation level** |  |  | 2010-07-07 | 2010-09-13 |  |  |  |  |  |  |  |  |
| A11930 |  | Plain Concrete Foundation |  | 2d | 2010-07-07 | 2010-07-08 | A11920 | 33d | 0d |  | 01 | 14 | 03 | 01 |
| A12220 |  | backfilling between P.C Foundation |  | 2d | 2010-07-11 | 2010-07-12 | A11930 FS+1d | 33d | 0d | jungle | 01 | 14 | 02 |  |
| A12230 |  | P.C Under Smells |  | 1d | 2010-07-13 | 2010-07-13 | A12220 | 33d | 0d | jungle | 01 | 14 | 03 | 01 |
| A11940 |  | Reinforced Concrete Foundation |  | 7d | 2010-07-14 | 2010-07-21 | A12230 | 33d | 0d |  | 01 | 14 | 03 | 02 |
| A11950 |  | under ground brick works |  | 2d | 2010-07-29 | 2010-07-31 | A12010 | 33d | 0d |  | 01 | 14 | 09 |  |
| A11960 |  | under ground insulation for RC & Brick work |  | 2d | 2010-08-01 | 2010-08-02 | A11950 | 33d | 0d |  | 01 | 14 | 10 |  |
| A11970 |  | backfilling for under ground |  | 4d | 2010-08-03 | 2010-08-07 | A11960 | 33d | 0d |  | 01 | 14 | 02 |  |
| A11980 |  | P.C slab on grade 10CM |  | 1d | 2010-09-06 | 2010-09-06 | A12130, A12070 | 42d | 0d |  | 01 | 14 | 03 | 03 |
| A11990 |  | moisture insulation with membrane sheets |  | 2d | 2010-09-07 | 2010-09-11 | A11980 | 42d | 0d |  | 01 | 14 | 10 |  |
| A12000 |  | R.C slab on grade |  | 2d | 2010-09-12 | 2010-09-13 | A11990 | 42d | 0d |  | 01 | 14 | 03 | 03 |
|  | 4 | **skeleton & brick walls** |  |  | 2010-07-22 | 2010-10-18 |  |  |  |  |  |  |  |  |
| A12010 |  | columns for ground floor |  | 6d | 2010-07-22 | 2010-07-28 | A11940 | 33d | 0d |  | 01 | 14 | 03 | 04 |
| A12020 |  | slab for ground floor |  | 9d | 2010-08-08 | 2010-08-17 | A12010, A11970 | 33d | 0d |  | 01 | 14 | 03 | 05 |
| A12170 |  | pouring for ground floor's slab |  | 1d | 2010-08-18 | 2010-08-18 | A12020, A12080 FF+3d | 33d | 0d |  | 01 | 14 | 03 |  |
| A12030 |  | columns for 1st floor |  | 6d | 2010-08-19 | 2010-08-25 | A12170 | 35d | 0d |  | 01 | 14 | 03 | 04 |
| A12200 |  | Fence work |  | 50d | 2010-08-19 | 2010-10-18 | A12170, A12210 FS+10d | 33d | 2d |  | 01 | 14 | 06 |  |
| A12040 |  | slab for 1st floor |  | 9d | 2010-08-26 | 2010-09-05 | A12030 | 35d | 0d |  | 01 | 14 | 03 | 05 |
| A12070 |  | Brick works for ground floor |  | 5d | 2010-08-31 | 2010-09-05 | A12170 FS+10d | 42d | 0d |  | 01 | 14 | 09 |  |
| A12180 |  | pouring for 1st floor's slab |  | 1d | 2010-09-06 | 2010-09-06 | A12040, A12090 FF+3d | 35d | 0d |  | 01 | 14 | 03 |  |
| A12050 |  | columns for roof floor |  | 4d | 2010-09-12 | 2010-09-15 | A12180 FS+2d | 35d | 0d |  | 01 | 14 | 03 | 04 |
| A12060 |  | slab for roof floor |  | 6d | 2010-09-16 | 2010-09-22 | A12050 | 35d | 0d |  | 01 | 14 | 03 | 05 |
| A12240 |  | Brick works for 1st floor |  | 5d | 2010-09-21 | 2010-09-26 | A12180 FS+10d | 41d | 0d | jungle | 01 | 14 | 09 |  |
| A12190 |  | pouring for roof floor's slab |  | 1d | 2010-09-23 | 2010-09-23 | A12060, A12100 FF+2d | 35d | 0d |  | 01 | 14 | 03 |  |
| A12250 |  | Brick works for roof floor |  | 5d | 2010-10-04 | 2010-10-09 | A12190 FS+8d | 35d | 0d | jungle | 01 | 14 | 09 |  |

| ID | WBS | Activity | Type | Duration | Start | Finish | Predecessors | Total float | Free float | Calendar | zone number | villa number | Work Category | concrete type |
| --- | --- | --- | --- | --- | --- | --- | --- | --- | --- | --- | --- | --- | --- | --- |
|  | 5 | **electro mechanical** |  |  | 2010-08-08 | 2010-10-11 |  |  |  |  |  |  |  |  |
| A12130 |  | plumbing connections under slab on grade |  | 2d | 2010-08-08 | 2010-08-09 | A11970 | 65d | 23d |  | 01 | 14 | 04 |  |
| A12080 |  | electrical conduits for ground floor's slab |  | 2d | 2010-08-12 | 2010-08-14 | A12020 SS+4d | 34d | 1d |  | 01 | 14 | 04 |  |
| A12090 |  | electrical conduits for 1st floor slab |  | 2d | 2010-08-31 | 2010-09-01 | A12040 SS+4d | 36d | 1d |  | 01 | 14 | 04 |  |
| A12280 |  | electrical conduits for ground floor walls |  | 2d | 2010-09-15 | 2010-09-16 | A12000 FS+1d | 42d | 0d | jungle | 01 | 14 | 04 |  |
| A12100 |  | electrical conduits for roof slab |  | 1d | 2010-09-20 | 2010-09-20 | A12060 SS+3d | 36d | 1d |  | 01 | 14 | 04 |  |
| A12290 |  | electrical conduits for 1st floor walls |  | 2d | 2010-09-27 | 2010-09-28 | A12240 | 41d | 0d | jungle | 01 | 14 | 04 |  |
| A12300 |  | electrical conduits for roof floor walls |  | 2d | 2010-10-10 | 2010-10-11 | A12250 | 38d | 0d | jungle | 01 | 14 | 04 |  |
|  | 6 | **finishing** |  |  | 2010-09-18 | 2010-10-20 |  |  |  |  |  |  |  |  |
| A12110 |  | Internal plastering for ground floor |  | 8d | 2010-09-18 | 2010-09-26 | A12280 | 42d | 2d |  | 01 | 14 | 05 |  |
| A12260 |  | Internal plastering for 1st floor |  | 8d | 2010-09-29 | 2010-10-07 | A12110, A12290 | 41d | 3d | jungle | 01 | 14 | 05 |  |
| A12120 |  | External plastering |  | 10d | 2010-10-10 | 2010-10-20 | A12250 | 31d | 0d |  | 01 | 14 | 05 |  |
| A12270 |  | Internal plastering for roof floor |  | 5d | 2010-10-12 | 2010-10-17 | A12260, A12300 | 38d | 3d | jungle | 01 | 14 | 05 |  |
|  | villa 102 | **Villa Number B102** |  |  | 2010-06-21 | 2010-10-23 |  |  |  |  |  |  |  |  |
|  | 1 | **general dates** |  |  | 2010-06-21 | 2010-10-23 |  |  |  |  |  |  |  |  |
| A12540 |  | Start Villa construction | milestone | 0d | 2010-06-21 | 2010-06-21 | A12560 | 31d | 0d |  | 01 | 102 | 07 |  |
| A12560 |  | IFC drawings | milestone | 0d | 2010-06-21 | 2010-06-21 |  | 31d | 0d |  | 01 | 102 | 01 |  |
| A12610 |  | Fence Drawings IFC |  | 1d | 2010-06-21 | 2010-06-21 | A12540 | 73d | 42d |  | 01 | 102 | 01 |  |
| A12550 |  | finish Villa construction | milestone | 0d | 2010-10-23 | 2010-10-23 | A12520, A12670, A12600 | 29d |  |  | 01 | 102 | 08 |  |
|  | 2 | **earth works** |  |  | 2010-06-23 | 2010-07-08 |  |  |  |  |  |  |  |  |
| A12310 |  | excavation |  | 2d | 2010-06-23 | 2010-06-24 | A12540 FS+2d | 31d | 0d |  | 01 | 102 | 02 |  |
| A12320 |  | soil replacement |  | 12d | 2010-06-26 | 2010-07-08 | A12310 | 31d | 0d |  | 01 | 102 | 02 |  |
|  | 3 | **foundation level** |  |  | 2010-07-10 | 2010-09-15 |  |  |  |  |  |  |  |  |
| A12330 |  | Plain Concrete Foundation |  | 2d | 2010-07-10 | 2010-07-11 | A12320 | 31d | 0d |  | 01 | 102 | 03 | 01 |
| A12620 |  | backfilling between P.C Foundation |  | 2d | 2010-07-13 | 2010-07-14 | A12330 FS+1d | 31d | 0d | jungle | 01 | 102 | 02 |  |
| A12630 |  | P.C Under Smells |  | 1d | 2010-07-15 | 2010-07-15 | A12620 | 31d | 0d | jungle | 01 | 102 | 03 | 01 |
| A12340 |  | Reinforced Concrete Foundation |  | 7d | 2010-07-17 | 2010-07-24 | A12630 | 31d | 0d |  | 01 | 102 | 03 | 02 |
| A12350 |  | under ground brick works |  | 2d | 2010-08-01 | 2010-08-02 | A12410 | 31d | 0d |  | 01 | 102 | 09 |  |
| A12360 |  | under ground insulation for RC & Brick work |  | 2d | 2010-08-03 | 2010-08-04 | A12350 | 31d | 0d |  | 01 | 102 | 10 |  |
| A12370 |  | backfilling for under ground |  | 4d | 2010-08-05 | 2010-08-09 | A12360 | 31d | 0d |  | 01 | 102 | 02 |  |
| A12380 |  | P.C slab on grade 10CM |  | 1d | 2010-09-11 | 2010-09-11 | A12530, A12470 | 40d | 0d |  | 01 | 102 | 03 | 03 |
| A12390 |  | moisture insulation with membrane sheets |  | 2d | 2010-09-12 | 2010-09-13 | A12380 | 40d | 0d |  | 01 | 102 | 10 |  |
| A12400 |  | R.C slab on grade |  | 2d | 2010-09-14 | 2010-09-15 | A12390 | 40d | 0d |  | 01 | 102 | 03 | 03 |

| ID | WBS | Activity | Duration | Start | Finish | Predecessors | Total float | Free float | Calendar | zone number | villa number | Work Category | concrete type |
| --- | --- | --- | --- | --- | --- | --- | --- | --- | --- | --- | --- | --- | --- |
|  | 4 | **skeleton & brick walls** |  | 2010-07-25 | 2010-10-20 |  |  |  |  |  |  |  |  |
| A12410 |  | columns for ground floor | 6d | 2010-07-25 | 2010-07-31 | A12340 | 31d | 0d |  | 01 | 102 | 03 | 04 |
| A12420 |  | slab for ground floor | 9d | 2010-08-10 | 2010-08-19 | A12410, A12370 | 31d | 0d |  | 01 | 102 | 03 | 05 |
| A12570 |  | pouring for ground floor's slab | 1d | 2010-08-21 | 2010-08-21 | A12420, A12480 FF+3d | 31d | 0d |  | 01 | 102 | 03 |  |
| A12430 |  | columns for 1st floor | 6d | 2010-08-22 | 2010-08-28 | A12570 | 33d | 0d |  | 01 | 102 | 03 | 04 |
| A12600 |  | Fence work | 50d | 2010-08-22 | 2010-10-20 | A12570, A12610 FS+10d | 31d | 2d |  | 01 | 102 | 06 |  |
| A12440 |  | slab for 1st floor | 9d | 2010-08-29 | 2010-09-07 | A12430 | 33d | 0d |  | 01 | 102 | 03 | 05 |
| A12470 |  | Brick works for ground floor | 5d | 2010-09-02 | 2010-09-07 | A12570 FS+10d | 40d | 0d |  | 01 | 102 | 09 |  |
| A12580 |  | pouring for 1st floor's slab | 1d | 2010-09-11 | 2010-09-11 | A12440, A12490 FF+3d | 33d | 0d |  | 01 | 102 | 03 |  |
| A12450 |  | columns for roof floor | 4d | 2010-09-14 | 2010-09-18 | A12580 FS+2d | 33d | 0d |  | 01 | 102 | 03 | 04 |
| A12460 |  | slab for roof floor | 6d | 2010-09-19 | 2010-09-25 | A12450 | 33d | 0d |  | 01 | 102 | 03 | 05 |
| A12640 |  | Brick works for 1st floor | 5d | 2010-09-23 | 2010-09-28 | A12580 FS+10d | 39d | 0d | jungle | 01 | 102 | 09 |  |
| A12590 |  | pouring for roof floor's slab | 1d | 2010-09-26 | 2010-09-26 | A12460, A12500 FF+2d | 33d | 0d |  | 01 | 102 | 03 |  |
| A12650 |  | Brick works for roof floor | 5d | 2010-10-06 | 2010-10-11 | A12590 FS+8d | 33d | 0d | jungle | 01 | 102 | 09 |  |
|  | 5 | **electro mechanical** |  | 2010-08-10 | 2010-10-13 |  |  |  |  |  |  |  |  |
| A12530 |  | plumbing connections under slab on grade | 2d | 2010-08-10 | 2010-08-11 | A12370 | 63d | 23d |  | 01 | 102 | 04 |  |
| A12480 |  | electrical conduits for ground floor's slab | 2d | 2010-08-15 | 2010-08-16 | A12420 SS+4d | 32d | 1d |  | 01 | 102 | 04 |  |
| A12490 |  | electrical conduits for 1st floor slab | 2d | 2010-09-02 | 2010-09-04 | A12440 SS+4d | 34d | 1d |  | 01 | 102 | 04 |  |
| A12680 |  | electrical conduits for ground floor walls | 2d | 2010-09-18 | 2010-09-19 | A12400 FS+1d | 40d | 0d | jungle | 01 | 102 | 04 |  |
| A12500 |  | electrical conduits for roof slab | 1d | 2010-09-22 | 2010-09-22 | A12460 SS+3d | 34d | 1d |  | 01 | 102 | 04 |  |
| A12690 |  | electrical conduits for 1st floor walls | 2d | 2010-09-29 | 2010-09-30 | A12640 | 39d | 0d | jungle | 01 | 102 | 04 |  |
| A12700 |  | electrical conduits for roof floor walls | 2d | 2010-10-12 | 2010-10-13 | A12650 | 36d | 0d | jungle | 01 | 102 | 04 |  |
|  | 6 | **finishing** |  | 2010-09-20 | 2010-10-23 |  |  |  |  |  |  |  |  |
| A12510 |  | Internal plastering for ground floor | 8d | 2010-09-20 | 2010-09-28 | A12680 | 40d | 2d |  | 01 | 102 | 05 |  |
| A12660 |  | Internal plastering for 1st floor | 8d | 2010-10-02 | 2010-10-10 | A12510, A12690 | 39d | 3d | jungle | 01 | 102 | 05 |  |
| A12520 |  | External plastering | 10d | 2010-10-12 | 2010-10-23 | A12650 | 29d | 0d |  | 01 | 102 | 05 |  |
| A12670 |  | Internal plastering for roof floor | 5d | 2010-10-14 | 2010-10-19 | A12660, A12700 | 36d | 3d | jungle | 01 | 102 | 05 |  |

| ID | WBS | Activity | Type | Duration | Start | Finish | Predecessors | Total float | Free float | Calendar | zone number | villa number | Work Category | concrete type |
| --- | --- | --- | --- | --- | --- | --- | --- | --- | --- | --- | --- | --- | --- | --- |
|  | villa 107 | **Villa Number B107** |  |  | 2010-06-21 | 2010-10-23 |  |  |  |  |  |  |  |  |
|  | 1 | **general dates** |  |  | 2010-06-21 | 2010-10-23 |  |  |  |  |  |  |  |  |
| A12940 |  | Start Villa construction | milestone | 0d | 2010-06-21 | 2010-06-21 | A12960 | 31d | 0d |  | 01 | 107 | 07 |  |
| A12960 |  | IFC drawings | milestone | 0d | 2010-06-21 | 2010-06-21 |  | 31d | 0d |  | 01 | 107 | 01 |  |
| A13010 |  | Fence Drawings IFC |  | 1d | 2010-06-21 | 2010-06-21 | A12940 | 73d | 42d |  | 01 | 107 | 01 |  |
| A12950 |  | finish Villa construction | milestone | 0d | 2010-10-23 | 2010-10-23 | A12920, A13070, A13000 | 29d |  |  | 01 | 107 | 08 |  |
|  | 2 | **earth works** |  |  | 2010-06-23 | 2010-07-08 |  |  |  |  |  |  |  |  |
| A12710 |  | excavation |  | 2d | 2010-06-23 | 2010-06-24 | A12940 FS+2d | 31d | 0d |  | 01 | 107 | 02 |  |
| A12720 |  | soil replacement |  | 12d | 2010-06-26 | 2010-07-08 | A12710 | 31d | 0d |  | 01 | 107 | 02 |  |
|  | 3 | **foundation level** |  |  | 2010-07-10 | 2010-09-15 |  |  |  |  |  |  |  |  |
| A12730 |  | Plain Concrete Foundation |  | 2d | 2010-07-10 | 2010-07-11 | A12720 | 31d | 0d |  | 01 | 107 | 03 | 01 |
| A13020 |  | backfilling between P.C Foundation |  | 2d | 2010-07-13 | 2010-07-14 | A12730 FS+1d | 31d | 0d | jungle | 01 | 107 | 02 |  |
| A13030 |  | P.C Under Smells |  | 1d | 2010-07-15 | 2010-07-15 | A13020 | 31d | 0d | jungle | 01 | 107 | 03 | 01 |
| A12740 |  | Reinforced Concrete Foundation |  | 7d | 2010-07-17 | 2010-07-24 | A13030 | 31d | 0d |  | 01 | 107 | 03 | 02 |
| A12750 |  | under ground brick works |  | 2d | 2010-08-01 | 2010-08-02 | A12810 | 31d | 0d |  | 01 | 107 | 09 |  |
| A12760 |  | under ground insulation for RC & Brick work |  | 2d | 2010-08-03 | 2010-08-04 | A12750 | 31d | 0d |  | 01 | 107 | 10 |  |
| A12770 |  | backfilling for under ground |  | 4d | 2010-08-05 | 2010-08-09 | A12760 | 31d | 0d |  | 01 | 107 | 02 |  |
| A12780 |  | P.C slab on grade 10CM |  | 1d | 2010-09-11 | 2010-09-11 | A12930, A12870 | 40d | 0d |  | 01 | 107 | 03 | 03 |
| A12790 |  | moisture insulation with membrane sheets |  | 2d | 2010-09-12 | 2010-09-13 | A12780 | 40d | 0d |  | 01 | 107 | 10 |  |
| A12800 |  | R.C slab on grade |  | 2d | 2010-09-14 | 2010-09-15 | A12790 | 40d | 0d |  | 01 | 107 | 03 | 03 |
|  | 4 | **skeleton & brick walls** |  |  | 2010-07-25 | 2010-10-20 |  |  |  |  |  |  |  |  |
| A12810 |  | columns for ground floor |  | 6d | 2010-07-25 | 2010-07-31 | A12740 | 31d | 0d |  | 01 | 107 | 03 | 04 |
| A12820 |  | slab for ground floor |  | 9d | 2010-08-10 | 2010-08-19 | A12810, A12770 | 31d | 0d |  | 01 | 107 | 03 | 05 |
| A12970 |  | pouring for ground floor's slab |  | 1d | 2010-08-21 | 2010-08-21 | A12820, A12880 FF+3d | 31d | 0d |  | 01 | 107 | 03 |  |
| A12830 |  | columns for 1st floor |  | 6d | 2010-08-22 | 2010-08-28 | A12970 | 33d | 0d |  | 01 | 107 | 03 | 04 |
| A13000 |  | Fence work |  | 50d | 2010-08-22 | 2010-10-20 | A12970, A13010 FS+10d | 31d | 2d |  | 01 | 107 | 06 |  |
| A12840 |  | slab for 1st floor |  | 9d | 2010-08-29 | 2010-09-07 | A12830 | 33d | 0d |  | 01 | 107 | 03 | 05 |
| A12870 |  | Brick works for ground floor |  | 5d | 2010-09-02 | 2010-09-07 | A12970 FS+10d | 40d | 0d |  | 01 | 107 | 09 |  |
| A12980 |  | pouring for 1st floor's slab |  | 1d | 2010-09-11 | 2010-09-11 | A12840, A12890 FF+3d | 33d | 0d |  | 01 | 107 | 03 |  |
| A12850 |  | columns for roof floor |  | 4d | 2010-09-14 | 2010-09-18 | A12980 FS+2d | 33d | 0d |  | 01 | 107 | 03 | 04 |
| A12860 |  | slab for roof floor |  | 6d | 2010-09-19 | 2010-09-25 | A12850 | 33d | 0d |  | 01 | 107 | 03 | 05 |
| A13040 |  | Brick works for 1st floor |  | 5d | 2010-09-23 | 2010-09-28 | A12980 FS+10d | 39d | 0d | jungle | 01 | 107 | 09 |  |
| A12990 |  | pouring for roof floor's slab |  | 1d | 2010-09-26 | 2010-09-26 | A12860, A12900 FF+2d | 33d | 0d |  | 01 | 107 | 03 |  |
| A13050 |  | Brick works for roof floor |  | 5d | 2010-10-06 | 2010-10-11 | A12990 FS+8d | 33d | 0d | jungle | 01 | 107 | 09 |  |

| ID | WBS | Activity | Type | Duration | Start | Finish | Predecessors | Total float | Free float | Calendar | zone number | villa number | Work Category | concrete type |
| --- | --- | --- | --- | --- | --- | --- | --- | --- | --- | --- | --- | --- | --- | --- |
|  | 5 | **electro mechanical** |  |  | 2010-08-10 | 2010-10-13 |  |  |  |  |  |  |  |  |
| A12930 |  | plumbing connections under slab on grade |  | 2d | 2010-08-10 | 2010-08-11 | A12770 | 63d | 23d |  | 01 | 107 | 04 |  |
| A12880 |  | electrical conduits for ground floor's slab |  | 2d | 2010-08-15 | 2010-08-16 | A12820 SS+4d | 32d | 1d |  | 01 | 107 | 04 |  |
| A12890 |  | electrical conduits for 1st floor slab |  | 2d | 2010-09-02 | 2010-09-04 | A12840 SS+4d | 34d | 1d |  | 01 | 107 | 04 |  |
| A13080 |  | electrical conduits for ground floor walls |  | 2d | 2010-09-18 | 2010-09-19 | A12800 FS+1d | 40d | 0d | jungle | 01 | 107 | 04 |  |
| A12900 |  | electrical conduits for roof slab |  | 1d | 2010-09-22 | 2010-09-22 | A12860 SS+3d | 34d | 1d |  | 01 | 107 | 04 |  |
| A13090 |  | electrical conduits for 1st floor walls |  | 2d | 2010-09-29 | 2010-09-30 | A13040 | 39d | 0d | jungle | 01 | 107 | 04 |  |
| A13100 |  | electrical conduits for roof floor walls |  | 2d | 2010-10-12 | 2010-10-13 | A13050 | 36d | 0d | jungle | 01 | 107 | 04 |  |
|  | 6 | **finishing** |  |  | 2010-09-20 | 2010-10-23 |  |  |  |  |  |  |  |  |
| A12910 |  | Internal plastering for ground floor |  | 8d | 2010-09-20 | 2010-09-28 | A13080 | 40d | 2d |  | 01 | 107 | 05 |  |
| A13060 |  | Internal plastering for 1st floor |  | 8d | 2010-10-02 | 2010-10-10 | A12910, A13090 | 39d | 3d | jungle | 01 | 107 | 05 |  |
| A12920 |  | External plastering |  | 10d | 2010-10-12 | 2010-10-23 | A13050 | 29d | 0d |  | 01 | 107 | 05 |  |
| A13070 |  | Internal plastering for roof floor |  | 5d | 2010-10-14 | 2010-10-19 | A13060, A13100 | 36d | 3d | jungle | 01 | 107 | 05 |  |
|  | zone 2 | **Zone.No 2** |  |  | 2010-06-21 | 2010-11-13 |  |  |  |  |  |  |  |  |
|  | villa 89 | **Villa Number D89** |  |  | 2010-06-21 | 2010-11-06 |  |  |  |  |  |  |  |  |
|  | 1 | **general dates** |  |  | 2010-06-21 | 2010-11-06 |  |  |  |  |  |  |  |  |
| A13340 |  | Start Villa construction | milestone | 0d | 2010-06-21 | 2010-06-21 | A13360 | 19d | 0d |  | 02 | 89 | 07 |  |
| A13360 |  | IFC drawings | milestone | 0d | 2010-06-21 | 2010-06-21 |  | 19d | 0d |  | 02 | 89 | 01 |  |
| A13410 |  | Fence Drawings IFC |  | 1d | 2010-06-21 | 2010-06-21 | A13340 | 73d | 54d |  | 02 | 89 | 01 |  |
| A13350 |  | finish Villa construction | milestone | 0d | 2010-11-06 | 2010-11-06 | A13320, A13470, A13400 | 17d |  |  | 02 | 89 | 08 |  |
|  | 2 | **earth works** |  |  | 2010-07-07 | 2010-07-22 |  |  |  |  |  |  |  |  |
| A13110 |  | excavation |  | 2d | 2010-07-07 | 2010-07-08 | A13340 FS+14d | 19d | 0d |  | 02 | 89 | 02 |  |
| A13120 |  | soil replacement |  | 12d | 2010-07-10 | 2010-07-22 | A13110 | 19d | 0d |  | 02 | 89 | 02 |  |
|  | 3 | **foundation level** |  |  | 2010-07-24 | 2010-09-29 |  |  |  |  |  |  |  |  |
| A13130 |  | Plain Concrete Foundation |  | 2d | 2010-07-24 | 2010-07-25 | A13120 | 19d | 0d |  | 02 | 89 | 03 | 01 |
| A13420 |  | backfilling between P.C Foundation |  | 2d | 2010-07-27 | 2010-07-28 | A13130 FS+1d | 19d | 0d | jungle | 02 | 89 | 02 |  |
| A13430 |  | P.C Under Smells |  | 1d | 2010-07-29 | 2010-07-29 | A13420 | 19d | 0d | jungle | 02 | 89 | 03 | 01 |
| A13140 |  | Reinforced Concrete Foundation |  | 7d | 2010-07-31 | 2010-08-07 | A13430 | 19d | 0d |  | 02 | 89 | 03 | 02 |
| A13150 |  | under ground brick works |  | 2d | 2010-08-15 | 2010-08-16 | A13210 | 19d | 0d |  | 02 | 89 | 09 |  |
| A13160 |  | under ground insulation for RC & Brick work |  | 2d | 2010-08-17 | 2010-08-18 | A13150 | 19d | 0d |  | 02 | 89 | 10 |  |
| A13170 |  | backfilling for under ground |  | 4d | 2010-08-19 | 2010-08-23 | A13160 | 19d | 0d |  | 02 | 89 | 02 |  |
| A13180 |  | P.C slab on grade 10CM |  | 1d | 2010-09-25 | 2010-09-25 | A13330, A13270 | 28d | 0d |  | 02 | 89 | 03 | 03 |
| A13190 |  | moisture insulation with membrane sheets |  | 2d | 2010-09-26 | 2010-09-27 | A13180 | 28d | 0d |  | 02 | 89 | 10 |  |
| A13200 |  | R.C slab on grade |  | 2d | 2010-09-28 | 2010-09-29 | A13190 | 28d | 0d |  | 02 | 89 | 03 | 03 |

| ID | WBS | Activity | Duration | Start | Finish | Predecessors | Total float | Free float | Calendar | zone number | villa number | Work Category | concrete type |
| --- | --- | --- | --- | --- | --- | --- | --- | --- | --- | --- | --- | --- | --- |
|  | 4 | **skeleton & brick walls** |  | 2010-08-08 | 2010-11-03 |  |  |  |  |  |  |  |  |
| A13210 |  | columns for ground floor | 6d | 2010-08-08 | 2010-08-14 | A13140 | 19d | 0d |  | 02 | 89 | 03 | 04 |
| A13220 |  | slab for ground floor | 9d | 2010-08-24 | 2010-09-02 | A13210, A13170 | 19d | 0d |  | 02 | 89 | 03 | 05 |
| A13370 |  | pouring for ground floor's slab | 1d | 2010-09-04 | 2010-09-04 | A13220, A13280 FF+3d | 19d | 0d |  | 02 | 89 | 03 |  |
| A13230 |  | columns for 1st floor | 6d | 2010-09-05 | 2010-09-13 | A13370 | 21d | 0d |  | 02 | 89 | 03 | 04 |
| A13400 |  | Fence work | 50d | 2010-09-05 | 2010-11-03 | A13370, A13410 FS+10d | 19d | 2d |  | 02 | 89 | 06 |  |
| A13240 |  | slab for 1st floor | 9d | 2010-09-14 | 2010-09-23 | A13230 | 21d | 0d |  | 02 | 89 | 03 | 05 |
| A13270 |  | Brick works for ground floor | 5d | 2010-09-19 | 2010-09-23 | A13370 FS+10d | 28d | 0d |  | 02 | 89 | 09 |  |
| A13380 |  | pouring for 1st floor's slab | 1d | 2010-09-25 | 2010-09-25 | A13240, A13290 FF+3d | 21d | 0d |  | 02 | 89 | 03 |  |
| A13250 |  | columns for roof floor | 4d | 2010-09-28 | 2010-10-02 | A13380 FS+2d | 21d | 0d |  | 02 | 89 | 03 | 04 |
| A13260 |  | slab for roof floor | 6d | 2010-10-03 | 2010-10-09 | A13250 | 21d | 0d |  | 02 | 89 | 03 | 05 |
| A13440 |  | Brick works for 1st floor | 5d | 2010-10-07 | 2010-10-12 | A13380 FS+10d | 27d | 0d | jungle | 02 | 89 | 09 |  |
| A13390 |  | pouring for roof floor's slab | 1d | 2010-10-10 | 2010-10-10 | A13260, A13300 FF+2d | 21d | 0d |  | 02 | 89 | 03 |  |
| A13450 |  | Brick works for roof floor | 5d | 2010-10-20 | 2010-10-25 | A13390 FS+8d | 21d | 0d | jungle | 02 | 89 | 09 |  |
|  | 5 | **electro mechanical** |  | 2010-08-24 | 2010-10-27 |  |  |  |  |  |  |  |  |
| A13330 |  | plumbing connections under slab on grade | 2d | 2010-08-24 | 2010-08-25 | A13170 | 51d | 23d |  | 02 | 89 | 04 |  |
| A13280 |  | electrical conduits for ground floor's slab | 2d | 2010-08-29 | 2010-08-30 | A13220 SS+4d | 20d | 1d |  | 02 | 89 | 04 |  |
| A13290 |  | electrical conduits for 1st floor slab | 2d | 2010-09-19 | 2010-09-20 | A13240 SS+4d | 22d | 1d |  | 02 | 89 | 04 |  |
| A13480 |  | electrical conduits for ground floor walls | 2d | 2010-10-02 | 2010-10-03 | A13200 FS+1d | 28d | 0d | jungle | 02 | 89 | 04 |  |
| A13300 |  | electrical conduits for roof slab | 1d | 2010-10-06 | 2010-10-06 | A13260 SS+3d | 22d | 1d |  | 02 | 89 | 04 |  |
| A13490 |  | electrical conduits for 1st floor walls | 2d | 2010-10-13 | 2010-10-14 | A13440 | 27d | 0d | jungle | 02 | 89 | 04 |  |
| A13500 |  | electrical conduits for roof floor walls | 2d | 2010-10-26 | 2010-10-27 | A13450 | 24d | 0d | jungle | 02 | 89 | 04 |  |
|  | 6 | **finishing** |  | 2010-10-04 | 2010-11-06 |  |  |  |  |  |  |  |  |
| A13310 |  | Internal plastering for ground floor | 8d | 2010-10-04 | 2010-10-12 | A13480 | 28d | 2d |  | 02 | 89 | 05 |  |
| A13460 |  | Internal plastering for 1st floor | 8d | 2010-10-16 | 2010-10-24 | A13310, A13490 | 27d | 3d | jungle | 02 | 89 | 05 |  |
| A13320 |  | External plastering | 10d | 2010-10-26 | 2010-11-06 | A13450 | 17d | 0d |  | 02 | 89 | 05 |  |
| A13470 |  | Internal plastering for roof floor | 5d | 2010-10-28 | 2010-11-02 | A13460, A13500 | 24d | 3d | jungle | 02 | 89 | 05 |  |

| ID | WBS | Activity | Type | Duration | Start | Finish | Predecessors | Total float | Free float | Calendar | zone number | villa number | Work Category | concrete type |
| --- | --- | --- | --- | --- | --- | --- | --- | --- | --- | --- | --- | --- | --- | --- |
|  | villa 90 | **Villa Number D90** |  |  | 2010-06-21 | 2010-11-07 |  |  |  |  |  |  |  |  |
|  | 1 | **general dates** |  |  | 2010-06-21 | 2010-11-07 |  |  |  |  |  |  |  |  |
| A13740 |  | Start Villa construction | milestone | 0d | 2010-06-21 | 2010-06-21 | A13760 | 18d | 0d |  | 02 | 90 | 07 |  |
| A13760 |  | IFC drawings | milestone | 0d | 2010-06-21 | 2010-06-21 |  | 18d | 0d |  | 02 | 90 | 01 |  |
| A13810 |  | Fence Drawings IFC |  | 1d | 2010-06-21 | 2010-06-21 | A13740 | 73d | 55d |  | 02 | 90 | 01 |  |
| A13750 |  | finish Villa construction | milestone | 0d | 2010-11-07 | 2010-11-07 | A13720, A13870, A13800 | 16d |  |  | 02 | 90 | 08 |  |
|  | 2 | **earth works** |  |  | 2010-07-08 | 2010-07-24 |  |  |  |  |  |  |  |  |
| A13510 |  | excavation |  | 0d | 2010-07-08 | 2010-07-08 | A13740 FS+15d | 18d | 0d |  | 02 | 90 | 02 |  |
| A13520 |  | soil replacement |  | 14d | 2010-07-08 | 2010-07-24 | A13510 | 18d | 0d |  | 02 | 90 | 02 |  |
|  | 3 | **foundation level** |  |  | 2010-07-25 | 2010-09-30 |  |  |  |  |  |  |  |  |
| A13530 |  | Plain Concrete Foundation |  | 2d | 2010-07-25 | 2010-07-26 | A13520 | 18d | 0d |  | 02 | 90 | 03 | 01 |
| A13820 |  | backfilling between P.C Foundation |  | 2d | 2010-07-28 | 2010-07-29 | A13530 FS+1d | 18d | 0d | jungle | 02 | 90 | 02 |  |
| A13830 |  | P.C Under Smells |  | 1d | 2010-07-31 | 2010-07-31 | A13820 | 18d | 0d | jungle | 02 | 90 | 03 | 01 |
| A13540 |  | Reinforced Concrete Foundation |  | 7d | 2010-08-01 | 2010-08-08 | A13830 | 18d | 0d |  | 02 | 90 | 03 | 02 |
| A13550 |  | under ground brick works |  | 2d | 2010-08-16 | 2010-08-17 | A13610 | 18d | 0d |  | 02 | 90 | 09 |  |
| A13560 |  | under ground insulation for RC & Brick work |  | 2d | 2010-08-18 | 2010-08-19 | A13550 | 18d | 0d |  | 02 | 90 | 10 |  |
| A13570 |  | backfilling for under ground |  | 4d | 2010-08-21 | 2010-08-24 | A13560 | 18d | 0d |  | 02 | 90 | 02 |  |
| A13580 |  | P.C slab on grade 10CM |  | 1d | 2010-09-26 | 2010-09-26 | A13730, A13670 | 27d | 0d |  | 02 | 90 | 03 | 03 |
| A13590 |  | moisture insulation with membrane sheets |  | 2d | 2010-09-27 | 2010-09-28 | A13580 | 27d | 0d |  | 02 | 90 | 10 |  |
| A13600 |  | R.C slab on grade |  | 2d | 2010-09-29 | 2010-09-30 | A13590 | 27d | 0d |  | 02 | 90 | 03 | 03 |
|  | 4 | **skeleton & brick walls** |  |  | 2010-08-09 | 2010-11-04 |  |  |  |  |  |  |  |  |
| A13610 |  | columns for ground floor |  | 6d | 2010-08-09 | 2010-08-15 | A13540 | 18d | 0d |  | 02 | 90 | 03 | 04 |
| A13620 |  | slab for ground floor |  | 9d | 2010-08-25 | 2010-09-04 | A13610, A13570 | 18d | 0d |  | 02 | 90 | 03 | 05 |
| A13770 |  | pouring for ground floor's slab |  | 1d | 2010-09-05 | 2010-09-05 | A13620, A13680 FF+3d | 18d | 0d |  | 02 | 90 | 03 |  |
| A13630 |  | columns for 1st floor |  | 6d | 2010-09-06 | 2010-09-14 | A13770 | 20d | 0d |  | 02 | 90 | 03 | 04 |
| A13800 |  | Fence work |  | 50d | 2010-09-06 | 2010-11-04 | A13770, A13810 FS+10d | 18d | 2d |  | 02 | 90 | 06 |  |
| A13640 |  | slab for 1st floor |  | 9d | 2010-09-15 | 2010-09-25 | A13630 | 20d | 0d |  | 02 | 90 | 03 | 05 |
| A13670 |  | Brick works for ground floor |  | 5d | 2010-09-20 | 2010-09-25 | A13770 FS+10d | 27d | 0d |  | 02 | 90 | 09 |  |
| A13780 |  | pouring for 1st floor's slab |  | 1d | 2010-09-26 | 2010-09-26 | A13640, A13690 FF+3d | 20d | 0d |  | 02 | 90 | 03 |  |
| A13650 |  | columns for roof floor |  | 4d | 2010-09-29 | 2010-10-03 | A13780 FS+2d | 20d | 0d |  | 02 | 90 | 03 | 04 |
| A13660 |  | slab for roof floor |  | 6d | 2010-10-04 | 2010-10-10 | A13650 | 20d | 0d |  | 02 | 90 | 03 | 05 |
| A13840 |  | Brick works for 1st floor |  | 5d | 2010-10-09 | 2010-10-13 | A13780 FS+10d | 26d | 0d | jungle | 02 | 90 | 09 |  |
| A13790 |  | pouring for roof floor's slab |  | 1d | 2010-10-11 | 2010-10-11 | A13660, A13700 FF+2d | 20d | 0d |  | 02 | 90 | 03 |  |
| A13850 |  | Brick works for roof floor |  | 5d | 2010-10-21 | 2010-10-26 | A13790 FS+8d | 20d | 0d | jungle | 02 | 90 | 09 |  |

| ID | WBS | Activity | Type | Duration | Start | Finish | Predecessors | Total float | Free float | Calendar | zone number | villa number | Work Category | concrete type |
| --- | --- | --- | --- | --- | --- | --- | --- | --- | --- | --- | --- | --- | --- | --- |
|  | 5 | **electro mechanical** |  |  | 2010-08-25 | 2010-10-28 |  |  |  |  |  |  |  |  |
| A13730 |  | plumbing connections under slab on grade |  | 2d | 2010-08-25 | 2010-08-26 | A13570 | 50d | 23d |  | 02 | 90 | 04 |  |
| A13680 |  | electrical conduits for ground floor's slab |  | 2d | 2010-08-30 | 2010-08-31 | A13620 SS+4d | 19d | 1d |  | 02 | 90 | 04 |  |
| A13690 |  | electrical conduits for 1st floor slab |  | 2d | 2010-09-20 | 2010-09-21 | A13640 SS+4d | 21d | 1d |  | 02 | 90 | 04 |  |
| A13880 |  | electrical conduits for ground floor walls |  | 2d | 2010-10-03 | 2010-10-04 | A13600 FS+1d | 27d | 0d | jungle | 02 | 90 | 04 |  |
| A13700 |  | electrical conduits for roof slab |  | 1d | 2010-10-07 | 2010-10-07 | A13660 SS+3d | 21d | 1d |  | 02 | 90 | 04 |  |
| A13890 |  | electrical conduits for 1st floor walls |  | 2d | 2010-10-14 | 2010-10-16 | A13840 | 26d | 0d | jungle | 02 | 90 | 04 |  |
| A13900 |  | electrical conduits for roof floor walls |  | 2d | 2010-10-27 | 2010-10-28 | A13850 | 23d | 0d | jungle | 02 | 90 | 04 |  |
|  | 6 | **finishing** |  |  | 2010-10-05 | 2010-11-07 |  |  |  |  |  |  |  |  |
| A13710 |  | Internal plastering for ground floor |  | 8d | 2010-10-05 | 2010-10-13 | A13880 | 27d | 2d |  | 02 | 90 | 05 |  |
| A13860 |  | Internal plastering for 1st floor |  | 8d | 2010-10-17 | 2010-10-25 | A13710, A13890 | 26d | 3d | jungle | 02 | 90 | 05 |  |
| A13720 |  | External plastering |  | 10d | 2010-10-27 | 2010-11-07 | A13850 | 16d | 0d |  | 02 | 90 | 05 |  |
| A13870 |  | Internal plastering for roof floor |  | 5d | 2010-10-30 | 2010-11-03 | A13860, A13900 | 23d | 3d | jungle | 02 | 90 | 05 |  |
|  | villa 91 | **Villa Number D91** |  |  | 2010-06-21 | 2010-11-08 |  |  |  |  |  |  |  |  |
|  | 1 | **general dates** |  |  | 2010-06-21 | 2010-11-08 |  |  |  |  |  |  |  |  |
| A14140 |  | Start Villa construction | milestone | 0d | 2010-06-21 | 2010-06-21 | A14160 | 17d | 0d |  | 02 | 91 | 07 |  |
| A14160 |  | IFC drawings | milestone | 0d | 2010-06-21 | 2010-06-21 |  | 17d | 0d |  | 02 | 91 | 01 |  |
| A14210 |  | Fence Drawings IFC |  | 1d | 2010-06-21 | 2010-06-21 | A14140 | 73d | 56d |  | 02 | 91 | 01 |  |
| A14150 |  | finish Villa construction | milestone | 0d | 2010-11-08 | 2010-11-08 | A14120, A14270, A14200 | 15d |  |  | 02 | 91 | 08 |  |
|  | 2 | **earth works** |  |  | 2010-07-10 | 2010-07-25 |  |  |  |  |  |  |  |  |
| A13910 |  | excavation |  | 2d | 2010-07-10 | 2010-07-11 | A14140 FS+16d | 17d | 0d |  | 02 | 91 | 02 |  |
| A13920 |  | soil replacement |  | 12d | 2010-07-12 | 2010-07-25 | A13910 | 17d | 0d |  | 02 | 91 | 02 |  |
|  | 3 | **foundation level** |  |  | 2010-07-26 | 2010-10-02 |  |  |  |  |  |  |  |  |
| A13930 |  | Plain Concrete Foundation |  | 2d | 2010-07-26 | 2010-07-27 | A13920 | 17d | 0d |  | 02 | 91 | 03 | 01 |
| A14220 |  | backfilling between P.C Foundation |  | 2d | 2010-07-29 | 2010-07-31 | A13930 FS+1d | 17d | 0d | jungle | 02 | 91 | 02 |  |
| A14230 |  | P.C Under Smells |  | 1d | 2010-08-01 | 2010-08-01 | A14220 | 17d | 0d | jungle | 02 | 91 | 03 | 01 |
| A13940 |  | Reinforced Concrete Foundation |  | 7d | 2010-08-02 | 2010-08-09 | A14230 | 17d | 0d |  | 02 | 91 | 03 | 02 |
| A13950 |  | under ground brick works |  | 2d | 2010-08-17 | 2010-08-18 | A14010 | 17d | 0d |  | 02 | 91 | 09 |  |
| A13960 |  | under ground insulation for RC & Brick work |  | 2d | 2010-08-19 | 2010-08-21 | A13950 | 17d | 0d |  | 02 | 91 | 10 |  |
| A13970 |  | backfilling for under ground |  | 4d | 2010-08-22 | 2010-08-25 | A13960 | 17d | 0d |  | 02 | 91 | 02 |  |
| A13980 |  | P.C slab on grade 10CM |  | 1d | 2010-09-27 | 2010-09-27 | A14130, A14070 | 26d | 0d |  | 02 | 91 | 03 | 03 |
| A13990 |  | moisture insulation with membrane sheets |  | 2d | 2010-09-28 | 2010-09-29 | A13980 | 26d | 0d |  | 02 | 91 | 10 |  |
| A14000 |  | R.C slab on grade |  | 2d | 2010-09-30 | 2010-10-02 | A13990 | 26d | 0d |  | 02 | 91 | 03 | 03 |

| ID | WBS | Activity | Duration | Start | Finish | Predecessors | Total float | Free float | Calendar | zone number | villa number | Work Category | concrete type |
| --- | --- | --- | --- | --- | --- | --- | --- | --- | --- | --- | --- | --- | --- |
|  | 4 | **skeleton & brick walls** |  | 2010-08-10 | 2010-11-06 |  |  |  |  |  |  |  |  |
| A14010 |  | columns for ground floor | 6d | 2010-08-10 | 2010-08-16 | A13940 | 17d | 0d |  | 02 | 91 | 03 | 04 |
| A14020 |  | slab for ground floor | 9d | 2010-08-26 | 2010-09-05 | A14010, A13970 | 17d | 0d |  | 02 | 91 | 03 | 05 |
| A14170 |  | pouring for ground floor's slab | 1d | 2010-09-06 | 2010-09-06 | A14020, A14080 FF+3d | 17d | 0d |  | 02 | 91 | 03 |  |
| A14030 |  | columns for 1st floor | 6d | 2010-09-07 | 2010-09-15 | A14170 | 19d | 0d |  | 02 | 91 | 03 | 04 |
| A14200 |  | Fence work | 50d | 2010-09-07 | 2010-11-06 | A14170, A14210 FS+10d | 17d | 2d |  | 02 | 91 | 06 |  |
| A14040 |  | slab for 1st floor | 9d | 2010-09-16 | 2010-09-26 | A14030 | 19d | 0d |  | 02 | 91 | 03 | 05 |
| A14070 |  | Brick works for ground floor | 5d | 2010-09-21 | 2010-09-26 | A14170 FS+10d | 26d | 0d |  | 02 | 91 | 09 |  |
| A14180 |  | pouring for 1st floor's slab | 1d | 2010-09-27 | 2010-09-27 | A14040, A14090 FF+3d | 19d | 0d |  | 02 | 91 | 03 |  |
| A14050 |  | columns for roof floor | 4d | 2010-09-30 | 2010-10-04 | A14180 FS+2d | 19d | 0d |  | 02 | 91 | 03 | 04 |
| A14060 |  | slab for roof floor | 6d | 2010-10-05 | 2010-10-11 | A14050 | 19d | 0d |  | 02 | 91 | 03 | 05 |
| A14240 |  | Brick works for 1st floor | 5d | 2010-10-10 | 2010-10-14 | A14180 FS+10d | 25d | 0d | jungle | 02 | 91 | 09 |  |
| A14190 |  | pouring for roof floor's slab | 1d | 2010-10-12 | 2010-10-12 | A14060, A14100 FF+2d | 19d | 0d |  | 02 | 91 | 03 |  |
| A14250 |  | Brick works for roof floor | 5d | 2010-10-23 | 2010-10-27 | A14190 FS+8d | 19d | 0d | jungle | 02 | 91 | 09 |  |
|  | 5 | **electro mechanical** |  | 2010-08-26 | 2010-10-30 |  |  |  |  |  |  |  |  |
| A14130 |  | plumbing connections under slab on grade | 2d | 2010-08-26 | 2010-08-28 | A13970 | 49d | 23d |  | 02 | 91 | 04 |  |
| A14080 |  | electrical conduits for ground floor's slab | 2d | 2010-08-31 | 2010-09-01 | A14020 SS+4d | 18d | 1d |  | 02 | 91 | 04 |  |
| A14090 |  | electrical conduits for 1st floor slab | 2d | 2010-09-21 | 2010-09-22 | A14040 SS+4d | 20d | 1d |  | 02 | 91 | 04 |  |
| A14280 |  | electrical conduits for ground floor walls | 2d | 2010-10-04 | 2010-10-05 | A14000 FS+1d | 26d | 0d | jungle | 02 | 91 | 04 |  |
| A14100 |  | electrical conduits for roof slab | 1d | 2010-10-09 | 2010-10-09 | A14060 SS+3d | 20d | 1d |  | 02 | 91 | 04 |  |
| A14290 |  | electrical conduits for 1st floor walls | 2d | 2010-10-16 | 2010-10-17 | A14240 | 25d | 0d | jungle | 02 | 91 | 04 |  |
| A14300 |  | electrical conduits for roof floor walls | 2d | 2010-10-28 | 2010-10-30 | A14250 | 22d | 0d | jungle | 02 | 91 | 04 |  |
|  | 6 | **finishing** |  | 2010-10-06 | 2010-11-08 |  |  |  |  |  |  |  |  |
| A14110 |  | Internal plastering for ground floor | 8d | 2010-10-06 | 2010-10-14 | A14280 | 26d | 2d |  | 02 | 91 | 05 |  |
| A14260 |  | Internal plastering for 1st floor | 8d | 2010-10-18 | 2010-10-26 | A14110, A14290 | 25d | 3d | jungle | 02 | 91 | 05 |  |
| A14120 |  | External plastering | 10d | 2010-10-28 | 2010-11-08 | A14250 | 15d | 0d |  | 02 | 91 | 05 |  |
| A14270 |  | Internal plastering for roof floor | 5d | 2010-10-31 | 2010-11-04 | A14260, A14300 | 22d | 3d | jungle | 02 | 91 | 05 |  |

| ID | WBS | Activity | Type | Duration | Start | Finish | Predecessors | Total float | Free float | Calendar | zone number | villa number | Work Category | concrete type |
| --- | --- | --- | --- | --- | --- | --- | --- | --- | --- | --- | --- | --- | --- | --- |
|  | villa 92 | **Villa Number A92** |  |  | 2010-06-21 | 2010-11-09 |  |  |  |  |  |  |  |  |
|  | 1 | **general dates** |  |  | 2010-06-21 | 2010-11-09 |  |  |  |  |  |  |  |  |
| A14540 |  | Start Villa construction | milestone | 0d | 2010-06-21 | 2010-06-21 | A14560 | 16d | 0d |  | 02 | 92 | 07 |  |
| A14560 |  | IFC drawings | milestone | 0d | 2010-06-21 | 2010-06-21 |  | 16d | 0d |  | 02 | 92 | 01 |  |
| A14610 |  | Fence Drawings IFC |  | 1d | 2010-06-21 | 2010-06-21 | A14540 | 73d | 57d |  | 02 | 92 | 01 |  |
| A14550 |  | finish Villa construction | milestone | 0d | 2010-11-09 | 2010-11-09 | A14520, A14670, A14600 | 14d |  |  | 02 | 92 | 08 |  |
|  | 2 | **earth works** |  |  | 2010-07-11 | 2010-07-26 |  |  |  |  |  |  |  |  |
| A14310 |  | excavation |  | 2d | 2010-07-11 | 2010-07-12 | A14540 FS+17d | 16d | 0d |  | 02 | 92 | 02 |  |
| A14320 |  | soil replacement |  | 12d | 2010-07-13 | 2010-07-26 | A14310 | 16d | 0d |  | 02 | 92 | 02 |  |
|  | 3 | **foundation level** |  |  | 2010-07-27 | 2010-10-03 |  |  |  |  |  |  |  |  |
| A14330 |  | Plain Concrete Foundation |  | 2d | 2010-07-27 | 2010-07-28 | A14320 | 16d | 0d |  | 02 | 92 | 03 | 01 |
| A14620 |  | backfilling between P.C Foundation |  | 2d | 2010-07-31 | 2010-08-01 | A14330 FS+1d | 16d | 0d | jungle | 02 | 92 | 02 |  |
| A14630 |  | P.C Under Smells |  | 1d | 2010-08-02 | 2010-08-02 | A14620 | 16d | 0d | jungle | 02 | 92 | 03 | 01 |
| A14340 |  | Reinforced Concrete Foundation |  | 7d | 2010-08-03 | 2010-08-10 | A14630 | 16d | 0d |  | 02 | 92 | 03 | 02 |
| A14350 |  | under ground brick works |  | 2d | 2010-08-18 | 2010-08-19 | A14410 | 16d | 0d |  | 02 | 92 | 09 |  |
| A14360 |  | under ground insulation for RC & Brick work |  | 2d | 2010-08-21 | 2010-08-22 | A14350 | 16d | 0d |  | 02 | 92 | 10 |  |
| A14370 |  | backfilling for under ground |  | 4d | 2010-08-23 | 2010-08-26 | A14360 | 16d | 0d |  | 02 | 92 | 02 |  |
| A14380 |  | P.C slab on grade 10CM |  | 1d | 2010-09-28 | 2010-09-28 | A14530, A14470 | 25d | 0d |  | 02 | 92 | 03 | 03 |
| A14390 |  | moisture insulation with membrane sheets |  | 2d | 2010-09-29 | 2010-09-30 | A14380 | 25d | 0d |  | 02 | 92 | 10 |  |
| A14400 |  | R.C slab on grade |  | 2d | 2010-10-02 | 2010-10-03 | A14390 | 25d | 0d |  | 02 | 92 | 03 | 03 |
|  | 4 | **skeleton & brick walls** |  |  | 2010-08-11 | 2010-11-07 |  |  |  |  |  |  |  |  |
| A14410 |  | columns for ground floor |  | 6d | 2010-08-11 | 2010-08-17 | A14340 | 16d | 0d |  | 02 | 92 | 03 | 04 |
| A14420 |  | slab for ground floor |  | 9d | 2010-08-28 | 2010-09-06 | A14410, A14370 | 16d | 0d |  | 02 | 92 | 03 | 05 |
| A14570 |  | pouring for ground floor's slab |  | 1d | 2010-09-07 | 2010-09-07 | A14420, A14480 FF+3d | 16d | 0d |  | 02 | 92 | 03 |  |
| A14430 |  | columns for 1st floor |  | 6d | 2010-09-11 | 2010-09-16 | A14570 | 18d | 0d |  | 02 | 92 | 03 | 04 |
| A14600 |  | Fence work |  | 50d | 2010-09-11 | 2010-11-07 | A14570, A14610 FS+10d | 16d | 2d |  | 02 | 92 | 06 |  |
| A14440 |  | slab for 1st floor |  | 9d | 2010-09-18 | 2010-09-27 | A14430 | 18d | 0d |  | 02 | 92 | 03 | 05 |
| A14470 |  | Brick works for ground floor |  | 5d | 2010-09-22 | 2010-09-27 | A14570 FS+10d | 25d | 0d |  | 02 | 92 | 09 |  |
| A14580 |  | pouring for 1st floor's slab |  | 1d | 2010-09-28 | 2010-09-28 | A14440, A14490 FF+3d | 18d | 0d |  | 02 | 92 | 03 |  |
| A14450 |  | columns for roof floor |  | 4d | 2010-10-02 | 2010-10-05 | A14580 FS+2d | 18d | 0d |  | 02 | 92 | 03 | 04 |
| A14460 |  | slab for roof floor |  | 6d | 2010-10-06 | 2010-10-12 | A14450 | 18d | 0d |  | 02 | 92 | 03 | 05 |
| A14640 |  | Brick works for 1st floor |  | 5d | 2010-10-11 | 2010-10-16 | A14580 FS+10d | 24d | 0d | jungle | 02 | 92 | 09 |  |
| A14590 |  | pouring for roof floor's slab |  | 1d | 2010-10-13 | 2010-10-13 | A14460, A14500 FF+2d | 18d | 0d |  | 02 | 92 | 03 |  |
| A14650 |  | Brick works for roof floor |  | 5d | 2010-10-24 | 2010-10-28 | A14590 FS+8d | 18d | 0d | jungle | 02 | 92 | 09 |  |

| ID | WBS | Activity | Type | Duration | Start | Finish | Predecessors | Total float | Free float | Calendar | zone number | villa number | Work Category | concrete type |
| --- | --- | --- | --- | --- | --- | --- | --- | --- | --- | --- | --- | --- | --- | --- |
|  | 5 | **electro mechanical** |  |  | 2010-08-28 | 2010-10-31 |  |  |  |  |  |  |  |  |
| A14530 |  | plumbing connections under slab on grade |  | 2d | 2010-08-28 | 2010-08-29 | A14370 | 48d | 23d |  | 02 | 92 | 04 |  |
| A14480 |  | electrical conduits for ground floor's slab |  | 2d | 2010-09-01 | 2010-09-02 | A14420 SS+4d | 17d | 1d |  | 02 | 92 | 04 |  |
| A14490 |  | electrical conduits for 1st floor slab |  | 2d | 2010-09-22 | 2010-09-23 | A14440 SS+4d | 19d | 1d |  | 02 | 92 | 04 |  |
| A14680 |  | electrical conduits for ground floor walls |  | 2d | 2010-10-05 | 2010-10-06 | A14400 FS+1d | 25d | 0d | jungle | 02 | 92 | 04 |  |
| A14500 |  | electrical conduits for roof slab |  | 1d | 2010-10-10 | 2010-10-10 | A14460 SS+3d | 19d | 1d |  | 02 | 92 | 04 |  |
| A14690 |  | electrical conduits for 1st floor walls |  | 2d | 2010-10-17 | 2010-10-18 | A14640 | 24d | 0d | jungle | 02 | 92 | 04 |  |
| A14700 |  | electrical conduits for roof floor walls |  | 2d | 2010-10-30 | 2010-10-31 | A14650 | 21d | 0d | jungle | 02 | 92 | 04 |  |
|  | 6 | **finishing** |  |  | 2010-10-07 | 2010-11-09 |  |  |  |  |  |  |  |  |
| A14510 |  | Internal plastering for ground floor |  | 8d | 2010-10-07 | 2010-10-16 | A14680 | 25d | 2d |  | 02 | 92 | 05 |  |
| A14660 |  | Internal plastering for 1st floor |  | 8d | 2010-10-19 | 2010-10-27 | A14510, A14690 | 24d | 3d | jungle | 02 | 92 | 05 |  |
| A14520 |  | External plastering |  | 10d | 2010-10-30 | 2010-11-09 | A14650 | 14d | 0d |  | 02 | 92 | 05 |  |
| A14670 |  | Internal plastering for roof floor |  | 5d | 2010-11-01 | 2010-11-06 | A14660, A14700 | 21d | 3d | jungle | 02 | 92 | 05 |  |
|  | villa 93 | **Villa Number F93** |  |  | 2010-06-21 | 2010-11-10 |  |  |  |  |  |  |  |  |
|  | 1 | **general dates** |  |  | 2010-06-21 | 2010-11-10 |  |  |  |  |  |  |  |  |
| A14940 |  | Start Villa construction | milestone | 0d | 2010-06-21 | 2010-06-21 | A14960 | 15d | 0d |  | 02 | 93 | 07 |  |
| A14960 |  | IFC drawings | milestone | 0d | 2010-06-21 | 2010-06-21 |  | 15d | 0d |  | 02 | 93 | 01 |  |
| A15010 |  | Fence Drawings IFC |  | 1d | 2010-06-21 | 2010-06-21 | A14940 | 73d | 58d |  | 02 | 93 | 01 |  |
| A14950 |  | finish Villa construction | milestone | 0d | 2010-11-10 | 2010-11-10 | A14920, A15070, A15000 | 13d |  |  | 02 | 93 | 08 |  |
|  | 2 | **earth works** |  |  | 2010-07-12 | 2010-07-27 |  |  |  |  |  |  |  |  |
| A14710 |  | excavation |  | 0d | 2010-07-12 | 2010-07-12 | A14940 FS+18d | 15d | 0d |  | 02 | 93 | 02 |  |
| A14720 |  | soil replacement |  | 14d | 2010-07-12 | 2010-07-27 | A14710 | 15d | 0d |  | 02 | 93 | 02 |  |
|  | 3 | **foundation level** |  |  | 2010-07-28 | 2010-10-04 |  |  |  |  |  |  |  |  |
| A14730 |  | Plain Concrete Foundation |  | 2d | 2010-07-28 | 2010-07-29 | A14720 | 15d | 0d |  | 02 | 93 | 03 | 01 |
| A15020 |  | backfilling between P.C Foundation |  | 2d | 2010-08-01 | 2010-08-02 | A14730 FS+1d | 15d | 0d | jungle | 02 | 93 | 02 |  |
| A15030 |  | P.C Under Smells |  | 1d | 2010-08-03 | 2010-08-03 | A15020 | 15d | 0d | jungle | 02 | 93 | 03 | 01 |
| A14740 |  | Reinforced Concrete Foundation |  | 7d | 2010-08-04 | 2010-08-11 | A15030 | 15d | 0d |  | 02 | 93 | 03 | 02 |
| A14750 |  | under ground brick works |  | 2d | 2010-08-19 | 2010-08-21 | A14810 | 15d | 0d |  | 02 | 93 | 09 |  |
| A14760 |  | under ground insulation for RC & Brick work |  | 2d | 2010-08-22 | 2010-08-23 | A14750 | 15d | 0d |  | 02 | 93 | 10 |  |
| A14770 |  | backfilling for under ground |  | 4d | 2010-08-24 | 2010-08-28 | A14760 | 15d | 0d |  | 02 | 93 | 02 |  |
| A14780 |  | P.C slab on grade 10CM |  | 1d | 2010-09-29 | 2010-09-29 | A14930, A14870 | 24d | 0d |  | 02 | 93 | 03 | 03 |
| A14790 |  | moisture insulation with membrane sheets |  | 2d | 2010-09-30 | 2010-10-02 | A14780 | 24d | 0d |  | 02 | 93 | 10 |  |
| A14800 |  | R.C slab on grade |  | 2d | 2010-10-03 | 2010-10-04 | A14790 | 24d | 0d |  | 02 | 93 | 03 | 03 |

| ID | WBS | Activity | Duration | Start | Finish | Predecessors | Total float | Free float | Calendar | zone number | villa number | Work Category | concrete type |
| --- | --- | --- | --- | --- | --- | --- | --- | --- | --- | --- | --- | --- | --- |
|  | 4 | **skeleton & brick walls** |  | 2010-08-12 | 2010-11-08 |  |  |  |  |  |  |  |  |
| A14810 |  | columns for ground floor | 6d | 2010-08-12 | 2010-08-18 | A14740 | 15d | 0d |  | 02 | 93 | 03 | 04 |
| A14820 |  | slab for ground floor | 9d | 2010-08-29 | 2010-09-07 | A14810, A14770 | 15d | 0d |  | 02 | 93 | 03 | 05 |
| A14970 |  | pouring for ground floor's slab | 1d | 2010-09-11 | 2010-09-11 | A14820, A14880 FF+3d | 15d | 0d |  | 02 | 93 | 03 |  |
| A14830 |  | columns for 1st floor | 6d | 2010-09-12 | 2010-09-18 | A14970 | 17d | 0d |  | 02 | 93 | 03 | 04 |
| A15000 |  | Fence work | 50d | 2010-09-12 | 2010-11-08 | A14970, A15010 FS+10d | 15d | 2d |  | 02 | 93 | 06 |  |
| A14840 |  | slab for 1st floor | 9d | 2010-09-19 | 2010-09-28 | A14830 | 17d | 0d |  | 02 | 93 | 03 | 05 |
| A14870 |  | Brick works for ground floor | 5d | 2010-09-23 | 2010-09-28 | A14970 FS+10d | 24d | 0d |  | 02 | 93 | 09 |  |
| A14980 |  | pouring for 1st floor's slab | 1d | 2010-09-29 | 2010-09-29 | A14840, A14890 FF+3d | 17d | 0d |  | 02 | 93 | 03 |  |
| A14850 |  | columns for roof floor | 4d | 2010-10-03 | 2010-10-06 | A14980 FS+2d | 17d | 0d |  | 02 | 93 | 03 | 04 |
| A14860 |  | slab for roof floor | 6d | 2010-10-07 | 2010-10-13 | A14850 | 17d | 0d |  | 02 | 93 | 03 | 05 |
| A15040 |  | Brick works for 1st floor | 5d | 2010-10-12 | 2010-10-17 | A14980 FS+10d | 23d | 0d | jungle | 02 | 93 | 09 |  |
| A14990 |  | pouring for roof floor's slab | 1d | 2010-10-14 | 2010-10-14 | A14860, A14900 FF+2d | 17d | 0d |  | 02 | 93 | 03 |  |
| A15050 |  | Brick works for roof floor | 5d | 2010-10-25 | 2010-10-30 | A14990 FS+8d | 17d | 0d | jungle | 02 | 93 | 09 |  |
|  | 5 | **electro mechanical** |  | 2010-08-29 | 2010-11-01 |  |  |  |  |  |  |  |  |
| A14930 |  | plumbing connections under slab on grade | 2d | 2010-08-29 | 2010-08-30 | A14770 | 47d | 23d |  | 02 | 93 | 04 |  |
| A14880 |  | electrical conduits for ground floor's slab | 2d | 2010-09-02 | 2010-09-04 | A14820 SS+4d | 16d | 1d |  | 02 | 93 | 04 |  |
| A14890 |  | electrical conduits for 1st floor slab | 2d | 2010-09-23 | 2010-09-25 | A14840 SS+4d | 18d | 1d |  | 02 | 93 | 04 |  |
| A15080 |  | electrical conduits for ground floor walls | 2d | 2010-10-06 | 2010-10-07 | A14800 FS+1d | 24d | 0d | jungle | 02 | 93 | 04 |  |
| A14900 |  | electrical conduits for roof slab | 1d | 2010-10-11 | 2010-10-11 | A14860 SS+3d | 18d | 1d |  | 02 | 93 | 04 |  |
| A15090 |  | electrical conduits for 1st floor walls | 2d | 2010-10-18 | 2010-10-19 | A15040 | 23d | 0d | jungle | 02 | 93 | 04 |  |
| A15100 |  | electrical conduits for roof floor walls | 2d | 2010-10-31 | 2010-11-01 | A15050 | 20d | 0d | jungle | 02 | 93 | 04 |  |
|  | 6 | **finishing** |  | 2010-10-09 | 2010-11-10 |  |  |  |  |  |  |  |  |
| A14910 |  | Internal plastering for ground floor | 8d | 2010-10-09 | 2010-10-17 | A15080 | 24d | 2d |  | 02 | 93 | 05 |  |
| A15060 |  | Internal plastering for 1st floor | 8d | 2010-10-20 | 2010-10-28 | A14910, A15090 | 23d | 3d | jungle | 02 | 93 | 05 |  |
| A14920 |  | External plastering | 10d | 2010-10-31 | 2010-11-10 | A15050 | 13d | 0d |  | 02 | 93 | 05 |  |
| A15070 |  | Internal plastering for roof floor | 5d | 2010-11-02 | 2010-11-07 | A15060, A15100 | 20d | 3d | jungle | 02 | 93 | 05 |  |

| ID | WBS | Activity | Type | Duration | Start | Finish | Predecessors | Total float | Free float | Calendar | zone number | villa number | Work Category | concrete type |
| --- | --- | --- | --- | --- | --- | --- | --- | --- | --- | --- | --- | --- | --- | --- |
|  | villa 94 | **Villa Number F94** |  |  | 2010-06-21 | 2010-11-11 |  |  |  |  |  |  |  |  |
|  | 1 | **general dates** |  |  | 2010-06-21 | 2010-11-11 |  |  |  |  |  |  |  |  |
| A15340 |  | Start Villa construction | milestone | 0d | 2010-06-21 | 2010-06-21 | A15360 | 14d | 0d |  | 02 | 94 | 07 |  |
| A15360 |  | IFC drawings | milestone | 0d | 2010-06-21 | 2010-06-21 |  | 14d | 0d |  | 02 | 94 | 01 |  |
| A15410 |  | Fence Drawings IFC |  | 1d | 2010-06-21 | 2010-06-21 | A15340 | 73d | 59d |  | 02 | 94 | 01 |  |
| A15350 |  | finish Villa construction | milestone | 0d | 2010-11-11 | 2010-11-11 | A15320, A15470, A15400 | 12d |  |  | 02 | 94 | 08 |  |
|  | 2 | **earth works** |  |  | 2010-07-13 | 2010-07-28 |  |  |  |  |  |  |  |  |
| A15110 |  | excavation |  | 0d | 2010-07-13 | 2010-07-13 | A15340 FS+19d | 14d | 0d |  | 02 | 94 | 02 |  |
| A15120 |  | soil replacement |  | 14d | 2010-07-13 | 2010-07-28 | A15110 | 14d | 0d |  | 02 | 94 | 02 |  |
|  | 3 | **foundation level** |  |  | 2010-07-29 | 2010-10-05 |  |  |  |  |  |  |  |  |
| A15130 |  | Plain Concrete Foundation |  | 2d | 2010-07-29 | 2010-07-31 | A15120 | 14d | 0d |  | 02 | 94 | 03 | 01 |
| A15420 |  | backfilling between P.C Foundation |  | 2d | 2010-08-02 | 2010-08-03 | A15130 FS+1d | 14d | 0d | jungle | 02 | 94 | 02 |  |
| A15430 |  | P.C Under Smells |  | 1d | 2010-08-04 | 2010-08-04 | A15420 | 14d | 0d | jungle | 02 | 94 | 03 | 01 |
| A15140 |  | Reinforced Concrete Foundation |  | 7d | 2010-08-05 | 2010-08-12 | A15430 | 14d | 0d |  | 02 | 94 | 03 | 02 |
| A15150 |  | under ground brick works |  | 2d | 2010-08-21 | 2010-08-22 | A15210 | 14d | 0d |  | 02 | 94 | 09 |  |
| A15160 |  | under ground insulation for RC & Brick work |  | 2d | 2010-08-23 | 2010-08-24 | A15150 | 14d | 0d |  | 02 | 94 | 10 |  |
| A15170 |  | backfilling for under ground |  | 4d | 2010-08-25 | 2010-08-29 | A15160 | 14d | 0d |  | 02 | 94 | 02 |  |
| A15180 |  | P.C slab on grade 10CM |  | 1d | 2010-09-30 | 2010-09-30 | A15330, A15270 | 23d | 0d |  | 02 | 94 | 03 | 03 |
| A15190 |  | moisture insulation with membrane sheets |  | 2d | 2010-10-02 | 2010-10-03 | A15180 | 23d | 0d |  | 02 | 94 | 10 |  |
| A15200 |  | R.C slab on grade |  | 2d | 2010-10-04 | 2010-10-05 | A15190 | 23d | 0d |  | 02 | 94 | 03 | 03 |
|  | 4 | **skeleton & brick walls** |  |  | 2010-08-14 | 2010-11-09 |  |  |  |  |  |  |  |  |
| A15210 |  | columns for ground floor |  | 6d | 2010-08-14 | 2010-08-19 | A15140 | 14d | 0d |  | 02 | 94 | 03 | 04 |
| A15220 |  | slab for ground floor |  | 9d | 2010-08-30 | 2010-09-11 | A15210, A15170 | 14d | 0d |  | 02 | 94 | 03 | 05 |
| A15370 |  | pouring for ground floor's slab |  | 1d | 2010-09-12 | 2010-09-12 | A15220, A15280 FF+3d | 14d | 0d |  | 02 | 94 | 03 |  |
| A15230 |  | columns for 1st floor |  | 6d | 2010-09-13 | 2010-09-19 | A15370 | 16d | 0d |  | 02 | 94 | 03 | 04 |
| A15400 |  | Fence work |  | 50d | 2010-09-13 | 2010-11-09 | A15370, A15410 FS+10d | 14d | 2d |  | 02 | 94 | 06 |  |
| A15240 |  | slab for 1st floor |  | 9d | 2010-09-20 | 2010-09-29 | A15230 | 16d | 0d |  | 02 | 94 | 03 | 05 |
| A15270 |  | Brick works for ground floor |  | 5d | 2010-09-25 | 2010-09-29 | A15370 FS+10d | 23d | 0d |  | 02 | 94 | 09 |  |
| A15380 |  | pouring for 1st floor's slab |  | 1d | 2010-09-30 | 2010-09-30 | A15240, A15290 FF+3d | 16d | 0d |  | 02 | 94 | 03 |  |
| A15250 |  | columns for roof floor |  | 4d | 2010-10-04 | 2010-10-07 | A15380 FS+2d | 16d | 0d |  | 02 | 94 | 03 | 04 |
| A15260 |  | slab for roof floor |  | 6d | 2010-10-09 | 2010-10-14 | A15250 | 16d | 0d |  | 02 | 94 | 03 | 05 |
| A15440 |  | Brick works for 1st floor |  | 5d | 2010-10-13 | 2010-10-18 | A15380 FS+10d | 22d | 0d | jungle | 02 | 94 | 09 |  |
| A15390 |  | pouring for roof floor's slab |  | 1d | 2010-10-16 | 2010-10-16 | A15260, A15300 FF+2d | 16d | 0d |  | 02 | 94 | 03 |  |
| A15450 |  | Brick works for roof floor |  | 5d | 2010-10-26 | 2010-10-31 | A15390 FS+8d | 16d | 0d | jungle | 02 | 94 | 09 |  |

| ID | WBS | Activity | Type | Duration | Start | Finish | Predecessors | Total float | Free float | Calendar | zone number | villa number | Work Category | concrete type |
| --- | --- | --- | --- | --- | --- | --- | --- | --- | --- | --- | --- | --- | --- | --- |
|  | 5 | **electro mechanical** |  |  | 2010-08-30 | 2010-11-02 |  |  |  |  |  |  |  |  |
| A15330 |  | plumbing connections under slab on grade |  | 2d | 2010-08-30 | 2010-08-31 | A15170 | 46d | 23d |  | 02 | 94 | 04 |  |
| A15280 |  | electrical conduits for ground floor's slab |  | 2d | 2010-09-04 | 2010-09-05 | A15220 SS+4d | 15d | 1d |  | 02 | 94 | 04 |  |
| A15290 |  | electrical conduits for 1st floor slab |  | 2d | 2010-09-25 | 2010-09-26 | A15240 SS+4d | 17d | 1d |  | 02 | 94 | 04 |  |
| A15480 |  | electrical conduits for ground floor walls |  | 2d | 2010-10-07 | 2010-10-09 | A15200 FS+1d | 23d | 0d | jungle | 02 | 94 | 04 |  |
| A15300 |  | electrical conduits for roof slab |  | 1d | 2010-10-12 | 2010-10-12 | A15260 SS+3d | 17d | 1d |  | 02 | 94 | 04 |  |
| A15490 |  | electrical conduits for 1st floor walls |  | 2d | 2010-10-19 | 2010-10-20 | A15440 | 22d | 0d | jungle | 02 | 94 | 04 |  |
| A15500 |  | electrical conduits for roof floor walls |  | 2d | 2010-11-01 | 2010-11-02 | A15450 | 19d | 0d | jungle | 02 | 94 | 04 |  |
|  | 6 | **finishing** |  |  | 2010-10-10 | 2010-11-11 |  |  |  |  |  |  |  |  |
| A15310 |  | Internal plastering for ground floor |  | 8d | 2010-10-10 | 2010-10-18 | A15480 | 23d | 2d |  | 02 | 94 | 05 |  |
| A15460 |  | Internal plastering for 1st floor |  | 8d | 2010-10-21 | 2010-10-30 | A15310, A15490 | 22d | 3d | jungle | 02 | 94 | 05 |  |
| A15320 |  | External plastering |  | 10d | 2010-11-01 | 2010-11-11 | A15450 | 12d | 0d |  | 02 | 94 | 05 |  |
| A15470 |  | Internal plastering for roof floor |  | 5d | 2010-11-03 | 2010-11-08 | A15460, A15500 | 19d | 3d | jungle | 02 | 94 | 05 |  |
|  | villa 95 | **Villa Number A95** |  |  | 2010-06-21 | 2010-11-10 |  |  |  |  |  |  |  |  |
|  | 1 | **general dates** |  |  | 2010-06-21 | 2010-11-10 |  |  |  |  |  |  |  |  |
| A15740 |  | Start Villa construction | milestone | 0d | 2010-06-21 | 2010-06-21 | A15760 | 15d | 0d |  | 02 | 95 | 07 |  |
| A15760 |  | IFC drawings | milestone | 0d | 2010-06-21 | 2010-06-21 |  | 15d | 0d |  | 02 | 95 | 01 |  |
| A15810 |  | Fence Drawings IFC |  | 1d | 2010-06-21 | 2010-06-21 | A15740 | 73d | 58d |  | 02 | 95 | 01 |  |
| A15750 |  | finish Villa construction | milestone | 0d | 2010-11-10 | 2010-11-10 | A15720, A15870, A15800 | 13d |  |  | 02 | 95 | 08 |  |
|  | 2 | **earth works** |  |  | 2010-07-12 | 2010-07-27 |  |  |  |  |  |  |  |  |
| A15510 |  | excavation |  | 2d | 2010-07-12 | 2010-07-13 | A15740 FS+18d | 15d | 0d |  | 02 | 95 | 02 |  |
| A15520 |  | soil replacement |  | 12d | 2010-07-14 | 2010-07-27 | A15510 | 15d | 0d |  | 02 | 95 | 02 |  |
|  | 3 | **foundation level** |  |  | 2010-07-28 | 2010-10-04 |  |  |  |  |  |  |  |  |
| A15530 |  | Plain Concrete Foundation |  | 2d | 2010-07-28 | 2010-07-29 | A15520 | 15d | 0d |  | 02 | 95 | 03 | 01 |
| A15820 |  | backfilling between P.C Foundation |  | 2d | 2010-08-01 | 2010-08-02 | A15530 FS+1d | 15d | 0d | jungle | 02 | 95 | 02 |  |
| A15830 |  | P.C Under Smells |  | 1d | 2010-08-03 | 2010-08-03 | A15820 | 15d | 0d | jungle | 02 | 95 | 03 | 01 |
| A15540 |  | Reinforced Concrete Foundation |  | 7d | 2010-08-04 | 2010-08-11 | A15830 | 15d | 0d |  | 02 | 95 | 03 | 02 |
| A15550 |  | under ground brick works |  | 2d | 2010-08-19 | 2010-08-21 | A15610 | 15d | 0d |  | 02 | 95 | 09 |  |
| A15560 |  | under ground insulation for RC & Brick work |  | 2d | 2010-08-22 | 2010-08-23 | A15550 | 15d | 0d |  | 02 | 95 | 10 |  |
| A15570 |  | backfilling for under ground |  | 4d | 2010-08-24 | 2010-08-28 | A15560 | 15d | 0d |  | 02 | 95 | 02 |  |
| A15580 |  | P.C slab on grade 10CM |  | 1d | 2010-09-29 | 2010-09-29 | A15730, A15670 | 24d | 0d |  | 02 | 95 | 03 | 03 |
| A15590 |  | moisture insulation with membrane sheets |  | 2d | 2010-09-30 | 2010-10-02 | A15580 | 24d | 0d |  | 02 | 95 | 10 |  |
| A15600 |  | R.C slab on grade |  | 2d | 2010-10-03 | 2010-10-04 | A15590 | 24d | 0d |  | 02 | 95 | 03 | 03 |

| ID | WBS | Activity | Duration | Start | Finish | Predecessors | Total float | Free float | Calendar | zone number | villa number | Work Category | concrete type |
| --- | --- | --- | --- | --- | --- | --- | --- | --- | --- | --- | --- | --- | --- |
|  | 4 | **skeleton & brick walls** |  | 2010-08-12 | 2010-11-08 |  |  |  |  |  |  |  |  |
| A15610 |  | columns for ground floor | 6d | 2010-08-12 | 2010-08-18 | A15540 | 15d | 0d |  | 02 | 95 | 03 | 04 |
| A15620 |  | slab for ground floor | 9d | 2010-08-29 | 2010-09-07 | A15610, A15570 | 15d | 0d |  | 02 | 95 | 03 | 05 |
| A15770 |  | pouring for ground floor's slab | 1d | 2010-09-11 | 2010-09-11 | A15620, A15680 FF+3d | 15d | 0d |  | 02 | 95 | 03 |  |
| A15630 |  | columns for 1st floor | 6d | 2010-09-12 | 2010-09-18 | A15770 | 17d | 0d |  | 02 | 95 | 03 | 04 |
| A15800 |  | Fence work | 50d | 2010-09-12 | 2010-11-08 | A15770, A15810 FS+10d | 15d | 2d |  | 02 | 95 | 06 |  |
| A15640 |  | slab for 1st floor | 9d | 2010-09-19 | 2010-09-28 | A15630 | 17d | 0d |  | 02 | 95 | 03 | 05 |
| A15670 |  | Brick works for ground floor | 5d | 2010-09-23 | 2010-09-28 | A15770 FS+10d | 24d | 0d |  | 02 | 95 | 09 |  |
| A15780 |  | pouring for 1st floor's slab | 1d | 2010-09-29 | 2010-09-29 | A15640, A15690 FF+3d | 17d | 0d |  | 02 | 95 | 03 |  |
| A15650 |  | columns for roof floor | 4d | 2010-10-03 | 2010-10-06 | A15780 FS+2d | 17d | 0d |  | 02 | 95 | 03 | 04 |
| A15660 |  | slab for roof floor | 6d | 2010-10-07 | 2010-10-13 | A15650 | 17d | 0d |  | 02 | 95 | 03 | 05 |
| A15840 |  | Brick works for 1st floor | 5d | 2010-10-12 | 2010-10-17 | A15780 FS+10d | 23d | 0d | jungle | 02 | 95 | 09 |  |
| A15790 |  | pouring for roof floor's slab | 1d | 2010-10-14 | 2010-10-14 | A15660, A15700 FF+2d | 17d | 0d |  | 02 | 95 | 03 |  |
| A15850 |  | Brick works for roof floor | 5d | 2010-10-25 | 2010-10-30 | A15790 FS+8d | 17d | 0d | jungle | 02 | 95 | 09 |  |
|  | 5 | **electro mechanical** |  | 2010-08-29 | 2010-11-01 |  |  |  |  |  |  |  |  |
| A15730 |  | plumbing connections under slab on grade | 2d | 2010-08-29 | 2010-08-30 | A15570 | 47d | 23d |  | 02 | 95 | 04 |  |
| A15680 |  | electrical conduits for ground floor's slab | 2d | 2010-09-02 | 2010-09-04 | A15620 SS+4d | 16d | 1d |  | 02 | 95 | 04 |  |
| A15690 |  | electrical conduits for 1st floor slab | 2d | 2010-09-23 | 2010-09-25 | A15640 SS+4d | 18d | 1d |  | 02 | 95 | 04 |  |
| A15880 |  | electrical conduits for ground floor walls | 2d | 2010-10-06 | 2010-10-07 | A15600 FS+1d | 24d | 0d | jungle | 02 | 95 | 04 |  |
| A15700 |  | electrical conduits for roof slab | 1d | 2010-10-11 | 2010-10-11 | A15660 SS+3d | 18d | 1d |  | 02 | 95 | 04 |  |
| A15890 |  | electrical conduits for 1st floor walls | 2d | 2010-10-18 | 2010-10-19 | A15840 | 23d | 0d | jungle | 02 | 95 | 04 |  |
| A15900 |  | electrical conduits for roof floor walls | 2d | 2010-10-31 | 2010-11-01 | A15850 | 20d | 0d | jungle | 02 | 95 | 04 |  |
|  | 6 | **finishing** |  | 2010-10-09 | 2010-11-10 |  |  |  |  |  |  |  |  |
| A15710 |  | Internal plastering for ground floor | 8d | 2010-10-09 | 2010-10-17 | A15880 | 24d | 2d |  | 02 | 95 | 05 |  |
| A15860 |  | Internal plastering for 1st floor | 8d | 2010-10-20 | 2010-10-28 | A15710, A15890 | 23d | 3d | jungle | 02 | 95 | 05 |  |
| A15720 |  | External plastering | 10d | 2010-10-31 | 2010-11-10 | A15850 | 13d | 0d |  | 02 | 95 | 05 |  |
| A15870 |  | Internal plastering for roof floor | 5d | 2010-11-02 | 2010-11-07 | A15860, A15900 | 20d | 3d | jungle | 02 | 95 | 05 |  |

| ID | WBS | Activity | Type | Duration | Start | Finish | Predecessors | Total float | Free float | Calendar | zone number | villa number | Work Category | concrete type |
| --- | --- | --- | --- | --- | --- | --- | --- | --- | --- | --- | --- | --- | --- | --- |
|  | villa 96 | **Villa Number A96** |  |  | 2010-06-21 | 2010-11-11 |  |  |  |  |  |  |  |  |
|  | 1 | **general dates** |  |  | 2010-06-21 | 2010-11-11 |  |  |  |  |  |  |  |  |
| A16140 |  | Start Villa construction | milestone | 0d | 2010-06-21 | 2010-06-21 | A16160 | 14d | 0d |  | 02 | 96 | 07 |  |
| A16160 |  | IFC drawings | milestone | 0d | 2010-06-21 | 2010-06-21 |  | 14d | 0d |  | 02 | 96 | 01 |  |
| A16210 |  | Fence Drawings IFC |  | 1d | 2010-06-21 | 2010-06-21 | A16140 | 73d | 59d |  | 02 | 96 | 01 |  |
| A16150 |  | finish Villa construction | milestone | 0d | 2010-11-11 | 2010-11-11 | A16120, A16270, A16200 | 12d |  |  | 02 | 96 | 08 |  |
|  | 2 | **earth works** |  |  | 2010-07-13 | 2010-07-28 |  |  |  |  |  |  |  |  |
| A15910 |  | excavation |  | 2d | 2010-07-13 | 2010-07-14 | A16140 FS+19d | 14d | 0d |  | 02 | 96 | 02 |  |
| A15920 |  | soil replacement |  | 12d | 2010-07-15 | 2010-07-28 | A15910 | 14d | 0d |  | 02 | 96 | 02 |  |
|  | 3 | **foundation level** |  |  | 2010-07-29 | 2010-10-05 |  |  |  |  |  |  |  |  |
| A15930 |  | Plain Concrete Foundation |  | 2d | 2010-07-29 | 2010-07-31 | A15920 | 14d | 0d |  | 02 | 96 | 03 | 01 |
| A16220 |  | backfilling between P.C Foundation |  | 2d | 2010-08-02 | 2010-08-03 | A15930 FS+1d | 14d | 0d | jungle | 02 | 96 | 02 |  |
| A16230 |  | P.C Under Smells |  | 1d | 2010-08-04 | 2010-08-04 | A16220 | 14d | 0d | jungle | 02 | 96 | 03 | 01 |
| A15940 |  | Reinforced Concrete Foundation |  | 7d | 2010-08-05 | 2010-08-12 | A16230 | 14d | 0d |  | 02 | 96 | 03 | 02 |
| A15950 |  | under ground brick works |  | 2d | 2010-08-21 | 2010-08-22 | A16010 | 14d | 0d |  | 02 | 96 | 09 |  |
| A15960 |  | under ground insulation for RC & Brick work |  | 2d | 2010-08-23 | 2010-08-24 | A15950 | 14d | 0d |  | 02 | 96 | 10 |  |
| A15970 |  | backfilling for under ground |  | 4d | 2010-08-25 | 2010-08-29 | A15960 | 14d | 0d |  | 02 | 96 | 02 |  |
| A15980 |  | P.C slab on grade 10CM |  | 1d | 2010-09-30 | 2010-09-30 | A16130, A16070 | 23d | 0d |  | 02 | 96 | 03 | 03 |
| A15990 |  | moisture insulation with membrane sheets |  | 2d | 2010-10-02 | 2010-10-03 | A15980 | 23d | 0d |  | 02 | 96 | 10 |  |
| A16000 |  | R.C slab on grade |  | 2d | 2010-10-04 | 2010-10-05 | A15990 | 23d | 0d |  | 02 | 96 | 03 | 03 |
|  | 4 | **skeleton & brick walls** |  |  | 2010-08-14 | 2010-11-09 |  |  |  |  |  |  |  |  |
| A16010 |  | columns for ground floor |  | 6d | 2010-08-14 | 2010-08-19 | A15940 | 14d | 0d |  | 02 | 96 | 03 | 04 |
| A16020 |  | slab for ground floor |  | 9d | 2010-08-30 | 2010-09-11 | A16010, A15970 | 14d | 0d |  | 02 | 96 | 03 | 05 |
| A16170 |  | pouring for ground floor's slab |  | 1d | 2010-09-12 | 2010-09-12 | A16020, A16080 FF+3d | 14d | 0d |  | 02 | 96 | 03 |  |
| A16030 |  | columns for 1st floor |  | 6d | 2010-09-13 | 2010-09-19 | A16170 | 16d | 0d |  | 02 | 96 | 03 | 04 |
| A16200 |  | Fence work |  | 50d | 2010-09-13 | 2010-11-09 | A16170, A16210 FS+10d | 14d | 2d |  | 02 | 96 | 06 |  |
| A16040 |  | slab for 1st floor |  | 9d | 2010-09-20 | 2010-09-29 | A16030 | 16d | 0d |  | 02 | 96 | 03 | 05 |
| A16070 |  | Brick works for ground floor |  | 5d | 2010-09-25 | 2010-09-29 | A16170 FS+10d | 23d | 0d |  | 02 | 96 | 09 |  |
| A16180 |  | pouring for 1st floor's slab |  | 1d | 2010-09-30 | 2010-09-30 | A16040, A16090 FF+3d | 16d | 0d |  | 02 | 96 | 03 |  |
| A16050 |  | columns for roof floor |  | 4d | 2010-10-04 | 2010-10-07 | A16180 FS+2d | 16d | 0d |  | 02 | 96 | 03 | 04 |
| A16060 |  | slab for roof floor |  | 6d | 2010-10-09 | 2010-10-14 | A16050 | 16d | 0d |  | 02 | 96 | 03 | 05 |
| A16240 |  | Brick works for 1st floor |  | 5d | 2010-10-13 | 2010-10-18 | A16180 FS+10d | 22d | 0d | jungle | 02 | 96 | 09 |  |
| A16190 |  | pouring for roof floor's slab |  | 1d | 2010-10-16 | 2010-10-16 | A16060, A16100 FF+2d | 16d | 0d |  | 02 | 96 | 03 |  |
| A16250 |  | Brick works for roof floor |  | 5d | 2010-10-26 | 2010-10-31 | A16190 FS+8d | 16d | 0d | jungle | 02 | 96 | 09 |  |

| ID | WBS | Activity | Type | Duration | Start | Finish | Predecessors | Total float | Free float | Calendar | zone number | villa number | Work Category | concrete type |
| --- | --- | --- | --- | --- | --- | --- | --- | --- | --- | --- | --- | --- | --- | --- |
|  | 5 | **electro mechanical** |  |  | 2010-08-30 | 2010-11-02 |  |  |  |  |  |  |  |  |
| A16130 |  | plumbing connections under slab on grade |  | 2d | 2010-08-30 | 2010-08-31 | A15970 | 46d | 23d |  | 02 | 96 | 04 |  |
| A16080 |  | electrical conduits for ground floor's slab |  | 2d | 2010-09-04 | 2010-09-05 | A16020 SS+4d | 15d | 1d |  | 02 | 96 | 04 |  |
| A16090 |  | electrical conduits for 1st floor slab |  | 2d | 2010-09-25 | 2010-09-26 | A16040 SS+4d | 17d | 1d |  | 02 | 96 | 04 |  |
| A16280 |  | electrical conduits for ground floor walls |  | 2d | 2010-10-07 | 2010-10-09 | A16000 FS+1d | 23d | 0d | jungle | 02 | 96 | 04 |  |
| A16100 |  | electrical conduits for roof slab |  | 1d | 2010-10-12 | 2010-10-12 | A16060 SS+3d | 17d | 1d |  | 02 | 96 | 04 |  |
| A16290 |  | electrical conduits for 1st floor walls |  | 2d | 2010-10-19 | 2010-10-20 | A16240 | 22d | 0d | jungle | 02 | 96 | 04 |  |
| A16300 |  | electrical conduits for roof floor walls |  | 2d | 2010-11-01 | 2010-11-02 | A16250 | 19d | 0d | jungle | 02 | 96 | 04 |  |
|  | 6 | **finishing** |  |  | 2010-10-10 | 2010-11-11 |  |  |  |  |  |  |  |  |
| A16110 |  | Internal plastering for ground floor |  | 8d | 2010-10-10 | 2010-10-18 | A16280 | 23d | 2d |  | 02 | 96 | 05 |  |
| A16260 |  | Internal plastering for 1st floor |  | 8d | 2010-10-21 | 2010-10-30 | A16110, A16290 | 22d | 3d | jungle | 02 | 96 | 05 |  |
| A16120 |  | External plastering |  | 10d | 2010-11-01 | 2010-11-11 | A16250 | 12d | 0d |  | 02 | 96 | 05 |  |
| A16270 |  | Internal plastering for roof floor |  | 5d | 2010-11-03 | 2010-11-08 | A16260, A16300 | 19d | 3d | jungle | 02 | 96 | 05 |  |
|  | villa 97 | **Villa Number A97** |  |  | 2010-06-21 | 2010-11-13 |  |  |  |  |  |  |  |  |
|  | 1 | **general dates** |  |  | 2010-06-21 | 2010-11-13 |  |  |  |  |  |  |  |  |
| A16540 |  | Start Villa construction | milestone | 0d | 2010-06-21 | 2010-06-21 | A16560 | 13d | 0d |  | 02 | 97 | 07 |  |
| A16560 |  | IFC drawings | milestone | 0d | 2010-06-21 | 2010-06-21 |  | 13d | 0d |  | 02 | 97 | 01 |  |
| A16610 |  | Fence Drawings IFC |  | 1d | 2010-06-21 | 2010-06-21 | A16540 | 73d | 60d |  | 02 | 97 | 01 |  |
| A16550 |  | finish Villa construction | milestone | 0d | 2010-11-13 | 2010-11-13 | A16520, A16670, A16600 | 11d |  |  | 02 | 97 | 08 |  |
|  | 2 | **earth works** |  |  | 2010-07-14 | 2010-07-29 |  |  |  |  |  |  |  |  |
| A16310 |  | excavation |  | 2d | 2010-07-14 | 2010-07-15 | A16540 FS+20d | 13d | 0d |  | 02 | 97 | 02 |  |
| A16320 |  | soil replacement |  | 12d | 2010-07-17 | 2010-07-29 | A16310 | 13d | 0d |  | 02 | 97 | 02 |  |
|  | 3 | **foundation level** |  |  | 2010-07-31 | 2010-10-06 |  |  |  |  |  |  |  |  |
| A16330 |  | Plain Concrete Foundation |  | 2d | 2010-07-31 | 2010-08-01 | A16320 | 13d | 0d |  | 02 | 97 | 03 | 01 |
| A16620 |  | backfilling between P.C Foundation |  | 2d | 2010-08-03 | 2010-08-04 | A16330 FS+1d | 13d | 0d | jungle | 02 | 97 | 02 |  |
| A16630 |  | P.C Under Smells |  | 1d | 2010-08-05 | 2010-08-05 | A16620 | 13d | 0d | jungle | 02 | 97 | 03 | 01 |
| A16340 |  | Reinforced Concrete Foundation |  | 7d | 2010-08-07 | 2010-08-14 | A16630 | 13d | 0d |  | 02 | 97 | 03 | 02 |
| A16350 |  | under ground brick works |  | 2d | 2010-08-22 | 2010-08-23 | A16410 | 13d | 0d |  | 02 | 97 | 09 |  |
| A16360 |  | under ground insulation for RC & Brick work |  | 2d | 2010-08-24 | 2010-08-25 | A16350 | 13d | 0d |  | 02 | 97 | 10 |  |
| A16370 |  | backfilling for under ground |  | 4d | 2010-08-26 | 2010-08-30 | A16360 | 13d | 0d |  | 02 | 97 | 02 |  |
| A16380 |  | P.C slab on grade 10CM |  | 1d | 2010-10-02 | 2010-10-02 | A16530, A16470 | 22d | 0d |  | 02 | 97 | 03 | 03 |
| A16390 |  | moisture insulation with membrane sheets |  | 2d | 2010-10-03 | 2010-10-04 | A16380 | 22d | 0d |  | 02 | 97 | 10 |  |
| A16400 |  | R.C slab on grade |  | 2d | 2010-10-05 | 2010-10-06 | A16390 | 22d | 0d |  | 02 | 97 | 03 | 03 |

| ID | WBS | Activity | Duration | Start | Finish | Predecessors | Total float | Free float | Calendar | zone number | villa number | Work Category | concrete type |
| --- | --- | --- | --- | --- | --- | --- | --- | --- | --- | --- | --- | --- | --- |
|  | 4 | **skeleton & brick walls** |  | 2010-08-15 | 2010-11-10 |  |  |  |  |  |  |  |  |
| A16410 |  | columns for ground floor | 6d | 2010-08-15 | 2010-08-21 | A16340 | 13d | 0d |  | 02 | 97 | 03 | 04 |
| A16420 |  | slab for ground floor | 9d | 2010-08-31 | 2010-09-12 | A16410, A16370 | 13d | 0d |  | 02 | 97 | 03 | 05 |
| A16570 |  | pouring for ground floor's slab | 1d | 2010-09-13 | 2010-09-13 | A16420, A16480 FF+3d | 13d | 0d |  | 02 | 97 | 03 |  |
| A16430 |  | columns for 1st floor | 6d | 2010-09-14 | 2010-09-20 | A16570 | 15d | 0d |  | 02 | 97 | 03 | 04 |
| A16600 |  | Fence work | 50d | 2010-09-14 | 2010-11-10 | A16570, A16610 FS+10d | 13d | 2d |  | 02 | 97 | 06 |  |
| A16440 |  | slab for 1st floor | 9d | 2010-09-21 | 2010-09-30 | A16430 | 15d | 0d |  | 02 | 97 | 03 | 05 |
| A16470 |  | Brick works for ground floor | 5d | 2010-09-26 | 2010-09-30 | A16570 FS+10d | 22d | 0d |  | 02 | 97 | 09 |  |
| A16580 |  | pouring for 1st floor's slab | 1d | 2010-10-02 | 2010-10-02 | A16440, A16490 FF+3d | 15d | 0d |  | 02 | 97 | 03 |  |
| A16450 |  | columns for roof floor | 4d | 2010-10-05 | 2010-10-09 | A16580 FS+2d | 15d | 0d |  | 02 | 97 | 03 | 04 |
| A16460 |  | slab for roof floor | 6d | 2010-10-10 | 2010-10-16 | A16450 | 15d | 0d |  | 02 | 97 | 03 | 05 |
| A16640 |  | Brick works for 1st floor | 5d | 2010-10-14 | 2010-10-19 | A16580 FS+10d | 21d | 0d | jungle | 02 | 97 | 09 |  |
| A16590 |  | pouring for roof floor's slab | 1d | 2010-10-17 | 2010-10-17 | A16460, A16500 FF+2d | 15d | 0d |  | 02 | 97 | 03 |  |
| A16650 |  | Brick works for roof floor | 5d | 2010-10-27 | 2010-11-01 | A16590 FS+8d | 15d | 0d | jungle | 02 | 97 | 09 |  |
|  | 5 | **electro mechanical** |  | 2010-08-31 | 2010-11-03 |  |  |  |  |  |  |  |  |
| A16530 |  | plumbing connections under slab on grade | 2d | 2010-08-31 | 2010-09-01 | A16370 | 45d | 23d |  | 02 | 97 | 04 |  |
| A16480 |  | electrical conduits for ground floor's slab | 2d | 2010-09-05 | 2010-09-06 | A16420 SS+4d | 14d | 1d |  | 02 | 97 | 04 |  |
| A16490 |  | electrical conduits for 1st floor slab | 2d | 2010-09-26 | 2010-09-27 | A16440 SS+4d | 16d | 1d |  | 02 | 97 | 04 |  |
| A16680 |  | electrical conduits for ground floor walls | 2d | 2010-10-09 | 2010-10-10 | A16400 FS+1d | 22d | 0d | jungle | 02 | 97 | 04 |  |
| A16500 |  | electrical conduits for roof slab | 1d | 2010-10-13 | 2010-10-13 | A16460 SS+3d | 16d | 1d |  | 02 | 97 | 04 |  |
| A16690 |  | electrical conduits for 1st floor walls | 2d | 2010-10-20 | 2010-10-21 | A16640 | 21d | 0d | jungle | 02 | 97 | 04 |  |
| A16700 |  | electrical conduits for roof floor walls | 2d | 2010-11-02 | 2010-11-03 | A16650 | 18d | 0d | jungle | 02 | 97 | 04 |  |
|  | 6 | **finishing** |  | 2010-10-11 | 2010-11-13 |  |  |  |  |  |  |  |  |
| A16510 |  | Internal plastering for ground floor | 8d | 2010-10-11 | 2010-10-19 | A16680 | 22d | 2d |  | 02 | 97 | 05 |  |
| A16660 |  | Internal plastering for 1st floor | 8d | 2010-10-23 | 2010-10-31 | A16510, A16690 | 21d | 3d | jungle | 02 | 97 | 05 |  |
| A16520 |  | External plastering | 10d | 2010-11-02 | 2010-11-13 | A16650 | 11d | 0d |  | 02 | 97 | 05 |  |
| A16670 |  | Internal plastering for roof floor | 5d | 2010-11-04 | 2010-11-09 | A16660, A16700 | 18d | 3d | jungle | 02 | 97 | 05 |  |

| ID | WBS | Activity | Type | Duration | Start | Finish | Predecessors | Total float | Free float | Calendar | zone number | villa number | Work Category | concrete type |
| --- | --- | --- | --- | --- | --- | --- | --- | --- | --- | --- | --- | --- | --- | --- |
|  | zone 3 | **Zone.No 3** |  |  | 2010-06-21 | 2010-11-30 |  |  |  |  |  |  |  |  |
|  | villa 52 | **Villa Number E08** |  |  | 2010-06-21 | 2010-11-22 |  |  |  |  |  |  |  |  |
|  | 1 | **general dates** |  |  | 2010-06-21 | 2010-11-22 |  |  |  |  |  |  |  |  |
| A16940 |  | Start Villa construction | milestone | 0d | 2010-06-21 | 2010-06-21 | A16960 | 9d | 0d |  | 03 | 52 | 07 |  |
| A16960 |  | IFC drawings | milestone | 0d | 2010-06-21 | 2010-06-21 |  | 9d | 0d |  | 03 | 52 | 01 |  |
| A17010 |  | Fence Drawings IFC |  | 1d | 2010-06-21 | 2010-06-21 | A16940 | 73d | 64d |  | 03 | 52 | 01 |  |
| A16950 |  | finish Villa construction | milestone | 0d | 2010-11-22 | 2010-11-22 | A16920, A17070, A17000 | 7d |  |  | 03 | 52 | 08 |  |
|  | 2 | **earth works** |  |  | 2010-07-19 | 2010-08-03 |  |  |  |  |  |  |  |  |
| A16710 |  | excavation |  | 2d | 2010-07-19 | 2010-07-20 | A16940 FS+24d | 9d | 0d |  | 03 | 52 | 02 |  |
| A16720 |  | soil replacement |  | 12d | 2010-07-21 | 2010-08-03 | A16710 | 9d | 0d |  | 03 | 52 | 02 |  |
|  | 3 | **foundation level** |  |  | 2010-08-04 | 2010-10-11 |  |  |  |  |  |  |  |  |
| A16730 |  | Plain Concrete Foundation |  | 2d | 2010-08-04 | 2010-08-05 | A16720 | 9d | 0d |  | 03 | 52 | 03 | 01 |
| A17020 |  | backfilling between P.C Foundation |  | 2d | 2010-08-08 | 2010-08-09 | A16730 FS+1d | 9d | 0d | jungle | 03 | 52 | 02 |  |
| A17030 |  | P.C Under Smells |  | 1d | 2010-08-10 | 2010-08-10 | A17020 | 9d | 0d | jungle | 03 | 52 | 03 | 01 |
| A16740 |  | Reinforced Concrete Foundation |  | 7d | 2010-08-11 | 2010-08-18 | A17030 | 9d | 0d |  | 03 | 52 | 03 | 02 |
| A16750 |  | under ground brick works |  | 2d | 2010-08-26 | 2010-08-28 | A16810 | 9d | 0d |  | 03 | 52 | 09 |  |
| A16760 |  | under ground insulation for RC & Brick work |  | 2d | 2010-08-29 | 2010-08-30 | A16750 | 9d | 0d |  | 03 | 52 | 10 |  |
| A16770 |  | backfilling for under ground |  | 4d | 2010-08-31 | 2010-09-04 | A16760 | 9d | 0d |  | 03 | 52 | 02 |  |
| A16780 |  | P.C slab on grade 10CM |  | 1d | 2010-10-06 | 2010-10-06 | A16930, A16870 | 18d | 0d |  | 03 | 52 | 03 | 03 |
| A16790 |  | moisture insulation with membrane sheets |  | 2d | 2010-10-07 | 2010-10-09 | A16780 | 18d | 0d |  | 03 | 52 | 10 |  |
| A16800 |  | R.C slab on grade |  | 2d | 2010-10-10 | 2010-10-11 | A16790 | 18d | 0d |  | 03 | 52 | 03 | 03 |
|  | 4 | **skeleton & brick walls** |  |  | 2010-08-19 | 2010-11-20 |  |  |  |  |  |  |  |  |
| A16810 |  | columns for ground floor |  | 6d | 2010-08-19 | 2010-08-25 | A16740 | 9d | 0d |  | 03 | 52 | 03 | 04 |
| A16820 |  | slab for ground floor |  | 9d | 2010-09-05 | 2010-09-16 | A16810, A16770 | 9d | 0d |  | 03 | 52 | 03 | 05 |
| A16970 |  | pouring for ground floor's slab |  | 1d | 2010-09-18 | 2010-09-18 | A16820, A16880 FF+3d | 9d | 0d |  | 03 | 52 | 03 |  |
| A16830 |  | columns for 1st floor |  | 6d | 2010-09-19 | 2010-09-25 | A16970 | 11d | 0d |  | 03 | 52 | 03 | 04 |
| A17000 |  | Fence work |  | 50d | 2010-09-19 | 2010-11-20 | A16970, A17010 FS+10d | 9d | 2d |  | 03 | 52 | 06 |  |
| A16840 |  | slab for 1st floor |  | 9d | 2010-09-26 | 2010-10-05 | A16830 | 11d | 0d |  | 03 | 52 | 03 | 05 |
| A16870 |  | Brick works for ground floor |  | 5d | 2010-09-30 | 2010-10-05 | A16970 FS+10d | 18d | 0d |  | 03 | 52 | 09 |  |
| A16980 |  | pouring for 1st floor's slab |  | 1d | 2010-10-06 | 2010-10-06 | A16840, A16890 FF+3d | 11d | 0d |  | 03 | 52 | 03 |  |
| A16850 |  | columns for roof floor |  | 4d | 2010-10-10 | 2010-10-13 | A16980 FS+2d | 11d | 0d |  | 03 | 52 | 03 | 04 |
| A16860 |  | slab for roof floor |  | 6d | 2010-10-14 | 2010-10-20 | A16850 | 11d | 0d |  | 03 | 52 | 03 | 05 |
| A17040 |  | Brick works for 1st floor |  | 5d | 2010-10-19 | 2010-10-24 | A16980 FS+10d | 17d | 0d | jungle | 03 | 52 | 09 |  |
| A16990 |  | pouring for roof floor's slab |  | 1d | 2010-10-21 | 2010-10-21 | A16860, A16900 FF+2d | 11d | 0d |  | 03 | 52 | 03 |  |
| A17050 |  | Brick works for roof floor |  | 5d | 2010-11-01 | 2010-11-06 | A16990 FS+8d | 11d | 0d | jungle | 03 | 52 | 09 |  |

| ID | WBS | Activity | Type | Duration | Start | Finish | Predecessors | Total float | Free float | Calendar | zone number | villa number | Work Category | concrete type |
| --- | --- | --- | --- | --- | --- | --- | --- | --- | --- | --- | --- | --- | --- | --- |
|  | 5 | **electro mechanical** |  |  | 2010-09-05 | 2010-11-08 |  |  |  |  |  |  |  |  |
| A16930 |  | plumbing connections under slab on grade |  | 2d | 2010-09-05 | 2010-09-06 | A16770 | 41d | 23d |  | 03 | 52 | 04 |  |
| A16880 |  | electrical conduits for ground floor's slab |  | 2d | 2010-09-12 | 2010-09-13 | A16820 SS+4d | 10d | 1d |  | 03 | 52 | 04 |  |
| A16890 |  | electrical conduits for 1st floor slab |  | 2d | 2010-09-30 | 2010-10-02 | A16840 SS+4d | 12d | 1d |  | 03 | 52 | 04 |  |
| A17080 |  | electrical conduits for ground floor walls |  | 2d | 2010-10-13 | 2010-10-14 | A16800 FS+1d | 18d | 0d | jungle | 03 | 52 | 04 |  |
| A16900 |  | electrical conduits for roof slab |  | 1d | 2010-10-18 | 2010-10-18 | A16860 SS+3d | 12d | 1d |  | 03 | 52 | 04 |  |
| A17090 |  | electrical conduits for 1st floor walls |  | 2d | 2010-10-25 | 2010-10-26 | A17040 | 17d | 0d | jungle | 03 | 52 | 04 |  |
| A17100 |  | electrical conduits for roof floor walls |  | 2d | 2010-11-07 | 2010-11-08 | A17050 | 14d | 0d | jungle | 03 | 52 | 04 |  |
|  | 6 | **finishing** |  |  | 2010-10-16 | 2010-11-22 |  |  |  |  |  |  |  |  |
| A16910 |  | Internal plastering for ground floor |  | 8d | 2010-10-16 | 2010-10-24 | A17080 | 18d | 2d |  | 03 | 52 | 05 |  |
| A17060 |  | Internal plastering for 1st floor |  | 8d | 2010-10-27 | 2010-11-04 | A16910, A17090 | 17d | 3d | jungle | 03 | 52 | 05 |  |
| A16920 |  | External plastering |  | 10d | 2010-11-07 | 2010-11-22 | A17050 | 7d | 0d |  | 03 | 52 | 05 |  |
| A17070 |  | Internal plastering for roof floor |  | 5d | 2010-11-09 | 2010-11-14 | A17060, A17100 | 14d | 7d | jungle | 03 | 52 | 05 |  |
|  | villa 55 | **Villa Number A55** |  |  | 2010-06-21 | 2010-11-30 |  |  |  |  |  |  |  |  |
|  | 1 | **general dates** |  |  | 2010-06-21 | 2010-11-30 |  |  |  |  |  |  |  |  |
| A17340 |  | Start Villa construction | milestone | 0d | 2010-06-21 | 2010-06-21 | A17360 | 0d |  |  | 03 | 55 | 07 |  |
| A17360 |  | IFC drawings | milestone | 0d | 2010-06-21 | 2010-06-21 |  | 0d |  |  | 03 | 55 | 01 |  |
| A17410 |  | Fence Drawings IFC |  | 1d | 2010-06-21 | 2010-06-21 | A17340 | 73d |  |  | 03 | 55 | 01 |  |
| A17350 |  | finish Villa construction | milestone | 0d | 2010-11-30 | 2010-11-30 | A17320, A17470, A17400 | 0d |  |  | 03 | 55 | 08 |  |
|  | 2 | **earth works** |  |  | 2010-07-20 | 2010-08-14 |  |  |  |  |  |  |  |  |
| A17110 |  | excavation |  | 10d | 2010-07-20 | 2010-07-31 | A17340 FS+25d | 0d |  |  | 03 | 55 | 02 |  |
| A17120 |  | soil replacement |  | 12d | 2010-08-01 | 2010-08-14 | A17110 | 0d |  |  | 03 | 55 | 02 |  |
|  | 3 | **foundation level** |  |  | 2010-08-15 | 2010-10-21 |  |  |  |  |  |  |  |  |
| A17130 |  | Plain Concrete Foundation |  | 2d | 2010-08-15 | 2010-08-16 | A17120 | 0d |  |  | 03 | 55 | 03 | 01 |
| A17420 |  | backfilling between P.C Foundation |  | 2d | 2010-08-18 | 2010-08-19 | A17130 FS+1d | 0d |  | jungle | 03 | 55 | 02 |  |
| A17430 |  | P.C Under Smells |  | 1d | 2010-08-21 | 2010-08-21 | A17420 | 0d |  | jungle | 03 | 55 | 03 | 01 |
| A17140 |  | Reinforced Concrete Foundation |  | 7d | 2010-08-22 | 2010-08-29 | A17430 | 0d |  |  | 03 | 55 | 03 | 02 |
| A17150 |  | under ground brick works |  | 2d | 2010-09-06 | 2010-09-07 | A17210 | 0d |  |  | 03 | 55 | 09 |  |
| A17160 |  | under ground insulation for RC & Brick work |  | 2d | 2010-09-11 | 2010-09-12 | A17150 | 0d |  |  | 03 | 55 | 10 |  |
| A17170 |  | backfilling for under ground |  | 4d | 2010-09-13 | 2010-09-16 | A17160 | 0d |  |  | 03 | 55 | 02 |  |
| A17180 |  | P.C slab on grade 10CM |  | 1d | 2010-10-17 | 2010-10-17 | A17330, A17270 | 9d | 0d |  | 03 | 55 | 03 | 03 |
| A17190 |  | moisture insulation with membrane sheets |  | 2d | 2010-10-18 | 2010-10-19 | A17180 | 9d | 0d |  | 03 | 55 | 10 |  |
| A17200 |  | R.C slab on grade |  | 2d | 2010-10-20 | 2010-10-21 | A17190 | 9d | 0d |  | 03 | 55 | 03 | 03 |

| ID | WBS | Activity | Duration | Start | Finish | Predecessors | Total float | Free float | Calendar | zone number | villa number | Work Category | concrete type |
| --- | --- | --- | --- | --- | --- | --- | --- | --- | --- | --- | --- | --- | --- |
|  | 4 | **skeleton & brick walls** |  | 2010-08-30 | 2010-11-30 |  |  |  |  |  |  |  |  |
| A17210 |  | columns for ground floor | 6d | 2010-08-30 | 2010-09-05 | A17140 | 0d |  |  | 03 | 55 | 03 | 04 |
| A17220 |  | slab for ground floor | 9d | 2010-09-18 | 2010-09-27 | A17210, A17170 | 0d |  |  | 03 | 55 | 03 | 05 |
| A17370 |  | pouring for ground floor's slab | 1d | 2010-09-28 | 2010-09-28 | A17220, A17280 FF+3d | 0d |  |  | 03 | 55 | 03 |  |
| A17230 |  | columns for 1st floor | 6d | 2010-09-29 | 2010-10-05 | A17370 | 2d | 0d |  | 03 | 55 | 03 | 04 |
| A17400 |  | Fence work | 50d | 2010-09-29 | 2010-11-30 | A17370, A17410 FS+10d | 0d |  |  | 03 | 55 | 06 |  |
| A17240 |  | slab for 1st floor | 9d | 2010-10-06 | 2010-10-16 | A17230 | 2d | 0d |  | 03 | 55 | 03 | 05 |
| A17270 |  | Brick works for ground floor | 5d | 2010-10-11 | 2010-10-16 | A17370 FS+10d | 9d | 0d |  | 03 | 55 | 09 |  |
| A17380 |  | pouring for 1st floor's slab | 1d | 2010-10-17 | 2010-10-17 | A17240, A17290 FF+3d | 2d | 0d |  | 03 | 55 | 03 |  |
| A17250 |  | columns for roof floor | 4d | 2010-10-20 | 2010-10-24 | A17380 FS+2d | 2d | 0d |  | 03 | 55 | 03 | 04 |
| A17260 |  | slab for roof floor | 6d | 2010-10-25 | 2010-10-31 | A17250 | 2d | 0d |  | 03 | 55 | 03 | 05 |
| A17440 |  | Brick works for 1st floor | 5d | 2010-10-30 | 2010-11-03 | A17380 FS+10d | 8d | 0d | jungle | 03 | 55 | 09 |  |
| A17390 |  | pouring for roof floor's slab | 1d | 2010-11-01 | 2010-11-01 | A17260, A17300 FF+2d | 2d | 0d |  | 03 | 55 | 03 |  |
| A17450 |  | Brick works for roof floor | 5d | 2010-11-11 | 2010-11-16 | A17390 FS+8d | 2d | 0d | jungle | 03 | 55 | 09 |  |
|  | 5 | **electro mechanical** |  | 2010-09-18 | 2010-11-18 |  |  |  |  |  |  |  |  |
| A17330 |  | plumbing connections under slab on grade | 2d | 2010-09-18 | 2010-09-19 | A17170 | 32d | 23d |  | 03 | 55 | 04 |  |
| A17280 |  | electrical conduits for ground floor's slab | 2d | 2010-09-22 | 2010-09-23 | A17220 SS+4d | 1d |  |  | 03 | 55 | 04 |  |
| A17290 |  | electrical conduits for 1st floor slab | 2d | 2010-10-11 | 2010-10-12 | A17240 SS+4d | 3d | 1d |  | 03 | 55 | 04 |  |
| A17480 |  | electrical conduits for ground floor walls | 2d | 2010-10-24 | 2010-10-25 | A17200 FS+1d | 9d | 0d | jungle | 03 | 55 | 04 |  |
| A17300 |  | electrical conduits for roof slab | 1d | 2010-10-28 | 2010-10-28 | A17260 SS+3d | 3d | 1d |  | 03 | 55 | 04 |  |
| A17490 |  | electrical conduits for 1st floor walls | 2d | 2010-11-04 | 2010-11-06 | A17440 | 8d | 0d | jungle | 03 | 55 | 04 |  |
| A17500 |  | electrical conduits for roof floor walls | 2d | 2010-11-17 | 2010-11-18 | A17450 | 5d | 0d | jungle | 03 | 55 | 04 |  |
|  | 6 | **finishing** |  | 2010-10-26 | 2010-11-30 |  |  |  |  |  |  |  |  |
| A17310 |  | Internal plastering for ground floor | 8d | 2010-10-26 | 2010-11-03 | A17480 | 9d | 2d |  | 03 | 55 | 05 |  |
| A17460 |  | Internal plastering for 1st floor | 8d | 2010-11-07 | 2010-11-15 | A17310, A17490 | 8d | 3d | jungle | 03 | 55 | 05 |  |
| A17320 |  | External plastering | 10d | 2010-11-20 | 2010-11-30 | A17450 | 0d |  |  | 03 | 55 | 05 |  |
| A17470 |  | Internal plastering for roof floor | 5d | 2010-11-20 | 2010-11-24 | A17460, A17500 | 5d |  | jungle | 03 | 55 | 05 |  |

| ID | WBS | Activity | Type | Duration | Start | Finish | Predecessors | Total float | Free float | Calendar | zone number | villa number | Work Category | concrete type |
| --- | --- | --- | --- | --- | --- | --- | --- | --- | --- | --- | --- | --- | --- | --- |
|  | villa 86 | **Villa Number A86** |  |  | 2010-06-21 | 2010-11-30 |  |  |  |  |  |  |  |  |
|  | 1 | **general dates** |  |  | 2010-06-21 | 2010-11-30 |  |  |  |  |  |  |  |  |
| A17740 |  | Start Villa construction | milestone | 0d | 2010-06-21 | 2010-06-21 | A17760 | 2d | 0d |  | 03 | 86 | 07 |  |
| A17760 |  | IFC drawings | milestone | 0d | 2010-06-21 | 2010-06-21 |  | 2d | 0d |  | 03 | 86 | 01 |  |
| A17810 |  | Fence Drawings IFC |  | 1d | 2010-06-21 | 2010-06-21 | A17740 | 73d | 71d |  | 03 | 86 | 01 |  |
| A17750 |  | finish Villa construction | milestone | 0d | 2010-11-30 | 2010-11-30 | A17720, A17870, A17800 | 0d |  |  | 03 | 86 | 08 |  |
|  | 2 | **earth works** |  |  | 2010-07-18 | 2010-08-11 |  |  |  |  |  |  |  |  |
| A17510 |  | excavation |  | 10d | 2010-07-18 | 2010-07-28 | A17740 FS+23d | 2d | 0d |  | 03 | 86 | 02 |  |
| A17520 |  | soil replacement |  | 12d | 2010-07-29 | 2010-08-11 | A17510 | 2d | 0d |  | 03 | 86 | 02 |  |
|  | 3 | **foundation level** |  |  | 2010-08-12 | 2010-10-19 |  |  |  |  |  |  |  |  |
| A17530 |  | Plain Concrete Foundation |  | 2d | 2010-08-12 | 2010-08-14 | A17520 | 2d | 0d |  | 03 | 86 | 03 | 01 |
| A17820 |  | backfilling between P.C Foundation |  | 2d | 2010-08-16 | 2010-08-17 | A17530 FS+1d | 2d | 0d | jungle | 03 | 86 | 02 |  |
| A17830 |  | P.C Under Smells |  | 1d | 2010-08-18 | 2010-08-18 | A17820 | 2d | 0d | jungle | 03 | 86 | 03 | 01 |
| A17540 |  | Reinforced Concrete Foundation |  | 7d | 2010-08-19 | 2010-08-26 | A17830 | 2d | 0d |  | 03 | 86 | 03 | 02 |
| A17550 |  | under ground brick works |  | 2d | 2010-09-04 | 2010-09-05 | A17610 | 2d | 0d |  | 03 | 86 | 09 |  |
| A17560 |  | under ground insulation for RC & Brick work |  | 2d | 2010-09-06 | 2010-09-07 | A17550 | 2d | 0d |  | 03 | 86 | 10 |  |
| A17570 |  | backfilling for under ground |  | 4d | 2010-09-11 | 2010-09-14 | A17560 | 2d | 0d |  | 03 | 86 | 02 |  |
| A17580 |  | P.C slab on grade 10CM |  | 1d | 2010-10-14 | 2010-10-14 | A17730, A17670 | 11d | 0d |  | 03 | 86 | 03 | 03 |
| A17590 |  | moisture insulation with membrane sheets |  | 2d | 2010-10-16 | 2010-10-17 | A17580 | 11d | 0d |  | 03 | 86 | 10 |  |
| A17600 |  | R.C slab on grade |  | 2d | 2010-10-18 | 2010-10-19 | A17590 | 11d | 0d |  | 03 | 86 | 03 | 03 |
|  | 4 | **skeleton & brick walls** |  |  | 2010-08-28 | 2010-11-28 |  |  |  |  |  |  |  |  |
| A17610 |  | columns for ground floor |  | 6d | 2010-08-28 | 2010-09-02 | A17540 | 2d | 0d |  | 03 | 86 | 03 | 04 |
| A17620 |  | slab for ground floor |  | 9d | 2010-09-15 | 2010-09-25 | A17610, A17570 | 2d | 0d |  | 03 | 86 | 03 | 05 |
| A17770 |  | pouring for ground floor's slab |  | 1d | 2010-09-26 | 2010-09-26 | A17620, A17680 FF+3d | 2d | 0d |  | 03 | 86 | 03 |  |
| A17630 |  | columns for 1st floor |  | 6d | 2010-09-27 | 2010-10-03 | A17770 | 4d | 0d |  | 03 | 86 | 03 | 04 |
| A17800 |  | Fence work |  | 50d | 2010-09-27 | 2010-11-28 | A17770, A17810 FS+10d | 2d |  |  | 03 | 86 | 06 |  |
| A17640 |  | slab for 1st floor |  | 9d | 2010-10-04 | 2010-10-13 | A17630 | 4d | 0d |  | 03 | 86 | 03 | 05 |
| A17670 |  | Brick works for ground floor |  | 5d | 2010-10-09 | 2010-10-13 | A17770 FS+10d | 11d | 0d |  | 03 | 86 | 09 |  |
| A17780 |  | pouring for 1st floor's slab |  | 1d | 2010-10-14 | 2010-10-14 | A17640, A17690 FF+3d | 4d | 0d |  | 03 | 86 | 03 |  |
| A17650 |  | columns for roof floor |  | 4d | 2010-10-18 | 2010-10-21 | A17780 FS+2d | 4d | 0d |  | 03 | 86 | 03 | 04 |
| A17660 |  | slab for roof floor |  | 6d | 2010-10-23 | 2010-10-28 | A17650 | 4d | 0d |  | 03 | 86 | 03 | 05 |
| A17840 |  | Brick works for 1st floor |  | 5d | 2010-10-27 | 2010-11-01 | A17780 FS+10d | 10d | 0d | jungle | 03 | 86 | 09 |  |
| A17790 |  | pouring for roof floor's slab |  | 1d | 2010-10-30 | 2010-10-30 | A17660, A17700 FF+2d | 4d | 0d |  | 03 | 86 | 03 |  |
| A17850 |  | Brick works for roof floor |  | 5d | 2010-11-09 | 2010-11-14 | A17790 FS+8d | 4d | 0d | jungle | 03 | 86 | 09 |  |

| ID | WBS | Activity | Type | Duration | Start | Finish | Predecessors | Total float | Free float | Calendar | zone number | villa number | Work Category | concrete type |
| --- | --- | --- | --- | --- | --- | --- | --- | --- | --- | --- | --- | --- | --- | --- |
|  | 5 | **electro mechanical** |  |  | 2010-09-15 | 2010-11-16 |  |  |  |  |  |  |  |  |
| A17730 |  | plumbing connections under slab on grade |  | 2d | 2010-09-15 | 2010-09-16 | A17570 | 34d | 23d |  | 03 | 86 | 04 |  |
| A17680 |  | electrical conduits for ground floor's slab |  | 2d | 2010-09-20 | 2010-09-21 | A17620 SS+4d | 3d | 1d |  | 03 | 86 | 04 |  |
| A17690 |  | electrical conduits for 1st floor slab |  | 2d | 2010-10-09 | 2010-10-10 | A17640 SS+4d | 5d | 1d |  | 03 | 86 | 04 |  |
| A17880 |  | electrical conduits for ground floor walls |  | 2d | 2010-10-21 | 2010-10-23 | A17600 FS+1d | 11d | 0d | jungle | 03 | 86 | 04 |  |
| A17700 |  | electrical conduits for roof slab |  | 1d | 2010-10-26 | 2010-10-26 | A17660 SS+3d | 5d | 1d |  | 03 | 86 | 04 |  |
| A17890 |  | electrical conduits for 1st floor walls |  | 2d | 2010-11-02 | 2010-11-03 | A17840 | 10d | 0d | jungle | 03 | 86 | 04 |  |
| A17900 |  | electrical conduits for roof floor walls |  | 2d | 2010-11-15 | 2010-11-16 | A17850 | 7d | 0d | jungle | 03 | 86 | 04 |  |
|  | 6 | **finishing** |  |  | 2010-10-24 | 2010-11-30 |  |  |  |  |  |  |  |  |
| A17710 |  | Internal plastering for ground floor |  | 8d | 2010-10-24 | 2010-11-01 | A17880 | 11d | 2d |  | 03 | 86 | 05 |  |
| A17860 |  | Internal plastering for 1st floor |  | 8d | 2010-11-04 | 2010-11-13 | A17710, A17890 | 10d | 3d | jungle | 03 | 86 | 05 |  |
| A17870 |  | Internal plastering for roof floor |  | 5d | 2010-11-17 | 2010-11-22 | A17860, A17900 | 7d |  | jungle | 03 | 86 | 05 |  |
| A17720 |  | External plastering |  | 10d | 2010-11-20 | 2010-11-30 | A17850 | 0d |  |  | 03 | 86 | 05 |  |
|  | villa 87 | **Villa Number A87** |  |  | 2010-06-21 | 2010-11-27 |  |  |  |  |  |  |  |  |
|  | 1 | **general dates** |  |  | 2010-06-21 | 2010-11-27 |  |  |  |  |  |  |  |  |
| A18140 |  | Start Villa construction | milestone | 0d | 2010-06-21 | 2010-06-21 | A18160 | 5d | 0d |  | 03 | 87 | 07 |  |
| A18160 |  | IFC drawings | milestone | 0d | 2010-06-21 | 2010-06-21 |  | 5d | 0d |  | 03 | 87 | 01 |  |
| A18210 |  | Fence Drawings IFC |  | 1d | 2010-06-21 | 2010-06-21 | A18140 | 73d | 68d |  | 03 | 87 | 01 |  |
| A18150 |  | finish Villa construction | milestone | 0d | 2010-11-27 | 2010-11-27 | A18120, A18270, A18200 | 3d |  |  | 03 | 87 | 08 |  |
|  | 2 | **earth works** |  |  | 2010-07-14 | 2010-08-08 |  |  |  |  |  |  |  |  |
| A17910 |  | excavation |  | 10d | 2010-07-14 | 2010-07-25 | A18140 FS+20d | 5d | 0d |  | 03 | 87 | 02 |  |
| A17920 |  | soil replacement |  | 12d | 2010-07-26 | 2010-08-08 | A17910 | 5d | 0d |  | 03 | 87 | 02 |  |
|  | 3 | **foundation level** |  |  | 2010-08-09 | 2010-10-16 |  |  |  |  |  |  |  |  |
| A17930 |  | Plain Concrete Foundation |  | 2d | 2010-08-09 | 2010-08-10 | A17920 | 5d | 0d |  | 03 | 87 | 03 | 01 |
| A18220 |  | backfilling between P.C Foundation |  | 2d | 2010-08-12 | 2010-08-14 | A17930 FS+1d | 5d | 0d | jungle | 03 | 87 | 02 |  |
| A18230 |  | P.C Under Smells |  | 1d | 2010-08-15 | 2010-08-15 | A18220 | 5d | 0d | jungle | 03 | 87 | 03 | 01 |
| A17940 |  | Reinforced Concrete Foundation |  | 7d | 2010-08-16 | 2010-08-23 | A18230 | 5d | 0d |  | 03 | 87 | 03 | 02 |
| A17950 |  | under ground brick works |  | 2d | 2010-08-31 | 2010-09-01 | A18010 | 5d | 0d |  | 03 | 87 | 09 |  |
| A17960 |  | under ground insulation for RC & Brick work |  | 2d | 2010-09-02 | 2010-09-04 | A17950 | 5d | 0d |  | 03 | 87 | 10 |  |
| A17970 |  | backfilling for under ground |  | 4d | 2010-09-05 | 2010-09-11 | A17960 | 5d | 0d |  | 03 | 87 | 02 |  |
| A17980 |  | P.C slab on grade 10CM |  | 1d | 2010-10-11 | 2010-10-11 | A18130, A18070 | 14d | 0d |  | 03 | 87 | 03 | 03 |
| A17990 |  | moisture insulation with membrane sheets |  | 2d | 2010-10-12 | 2010-10-13 | A17980 | 14d | 0d |  | 03 | 87 | 10 |  |
| A18000 |  | R.C slab on grade |  | 2d | 2010-10-14 | 2010-10-16 | A17990 | 14d | 0d |  | 03 | 87 | 03 | 03 |

| ID | WBS | Activity | Duration | Start | Finish | Predecessors | Total float | Free float | Calendar | zone number | villa number | Work Category | concrete type |
| --- | --- | --- | --- | --- | --- | --- | --- | --- | --- | --- | --- | --- | --- |
|  | 4 | **skeleton & brick walls** |  | 2010-08-24 | 2010-11-24 |  |  |  |  |  |  |  |  |
| A18010 |  | columns for ground floor | 6d | 2010-08-24 | 2010-08-30 | A17940 | 5d | 0d |  | 03 | 87 | 03 | 04 |
| A18020 |  | slab for ground floor | 9d | 2010-09-12 | 2010-09-21 | A18010, A17970 | 5d | 0d |  | 03 | 87 | 03 | 05 |
| A18170 |  | pouring for ground floor's slab | 1d | 2010-09-22 | 2010-09-22 | A18020, A18080 FF+3d | 5d | 0d |  | 03 | 87 | 03 |  |
| A18030 |  | columns for 1st floor | 6d | 2010-09-23 | 2010-09-29 | A18170 | 7d | 0d |  | 03 | 87 | 03 | 04 |
| A18200 |  | Fence work | 50d | 2010-09-23 | 2010-11-24 | A18170, A18210 FS+10d | 5d | 2d |  | 03 | 87 | 06 |  |
| A18040 |  | slab for 1st floor | 9d | 2010-09-30 | 2010-10-10 | A18030 | 7d | 0d |  | 03 | 87 | 03 | 05 |
| A18070 |  | Brick works for ground floor | 5d | 2010-10-05 | 2010-10-10 | A18170 FS+10d | 14d | 0d |  | 03 | 87 | 09 |  |
| A18180 |  | pouring for 1st floor's slab | 1d | 2010-10-11 | 2010-10-11 | A18040, A18090 FF+3d | 7d | 0d |  | 03 | 87 | 03 |  |
| A18050 |  | columns for roof floor | 4d | 2010-10-14 | 2010-10-18 | A18180 FS+2d | 7d | 0d |  | 03 | 87 | 03 | 04 |
| A18060 |  | slab for roof floor | 6d | 2010-10-19 | 2010-10-25 | A18050 | 7d | 0d |  | 03 | 87 | 03 | 05 |
| A18240 |  | Brick works for 1st floor | 5d | 2010-10-24 | 2010-10-28 | A18180 FS+10d | 13d | 0d | jungle | 03 | 87 | 09 |  |
| A18190 |  | pouring for roof floor's slab | 1d | 2010-10-26 | 2010-10-26 | A18060, A18100 FF+2d | 7d | 0d |  | 03 | 87 | 03 |  |
| A18250 |  | Brick works for roof floor | 5d | 2010-11-06 | 2010-11-10 | A18190 FS+8d | 7d | 0d | jungle | 03 | 87 | 09 |  |
|  | 5 | **electro mechanical** |  | 2010-09-12 | 2010-11-13 |  |  |  |  |  |  |  |  |
| A18130 |  | plumbing connections under slab on grade | 2d | 2010-09-12 | 2010-09-13 | A17970 | 37d | 23d |  | 03 | 87 | 04 |  |
| A18080 |  | electrical conduits for ground floor's slab | 2d | 2010-09-16 | 2010-09-18 | A18020 SS+4d | 6d | 1d |  | 03 | 87 | 04 |  |
| A18090 |  | electrical conduits for 1st floor slab | 2d | 2010-10-05 | 2010-10-06 | A18040 SS+4d | 8d | 1d |  | 03 | 87 | 04 |  |
| A18280 |  | electrical conduits for ground floor walls | 2d | 2010-10-18 | 2010-10-19 | A18000 FS+1d | 14d | 0d | jungle | 03 | 87 | 04 |  |
| A18100 |  | electrical conduits for roof slab | 1d | 2010-10-23 | 2010-10-23 | A18060 SS+3d | 8d | 1d |  | 03 | 87 | 04 |  |
| A18290 |  | electrical conduits for 1st floor walls | 2d | 2010-10-30 | 2010-10-31 | A18240 | 13d | 0d | jungle | 03 | 87 | 04 |  |
| A18300 |  | electrical conduits for roof floor walls | 2d | 2010-11-11 | 2010-11-13 | A18250 | 10d | 0d | jungle | 03 | 87 | 04 |  |
|  | 6 | **finishing** |  | 2010-10-20 | 2010-11-27 |  |  |  |  |  |  |  |  |
| A18110 |  | Internal plastering for ground floor | 8d | 2010-10-20 | 2010-10-28 | A18280 | 14d | 2d |  | 03 | 87 | 05 |  |
| A18260 |  | Internal plastering for 1st floor | 8d | 2010-11-01 | 2010-11-09 | A18110, A18290 | 13d | 3d | jungle | 03 | 87 | 05 |  |
| A18120 |  | External plastering | 10d | 2010-11-11 | 2010-11-27 | A18250 | 3d | 0d |  | 03 | 87 | 05 |  |
| A18270 |  | Internal plastering for roof floor | 5d | 2010-11-14 | 2010-11-18 | A18260, A18300 | 10d | 7d | jungle | 03 | 87 | 05 |  |

| ID | WBS | Activity | Type | Duration | Start | Finish | Predecessors | Total float | Free float | Calendar | zone number | villa number | Work Category | concrete type |
| --- | --- | --- | --- | --- | --- | --- | --- | --- | --- | --- | --- | --- | --- | --- |
|  | villa 111 | **Villa Number B106** |  |  | 2010-06-21 | 2010-11-23 |  |  |  |  |  |  |  |  |
|  | 1 | **general dates** |  |  | 2010-06-21 | 2010-11-23 |  |  |  |  |  |  |  |  |
| A18540 |  | Start Villa construction | milestone | 0d | 2010-06-21 | 2010-06-21 | A18560 | 8d | 0d |  | 03 | 111 | 07 |  |
| A18560 |  | IFC drawings | milestone | 0d | 2010-06-21 | 2010-06-21 |  | 8d | 0d |  | 03 | 111 | 01 |  |
| A18610 |  | Fence Drawings IFC |  | 1d | 2010-06-21 | 2010-06-21 | A18540 | 73d | 65d |  | 03 | 111 | 01 |  |
| A18550 |  | finish Villa construction | milestone | 0d | 2010-11-23 | 2010-11-23 | A18520, A18670, A18600 | 6d |  |  | 03 | 111 | 08 |  |
|  | 2 | **earth works** |  |  | 2010-07-20 | 2010-08-04 |  |  |  |  |  |  |  |  |
| A18310 |  | excavation |  | 2d | 2010-07-20 | 2010-07-21 | A18540 FS+25d | 8d | 0d |  | 03 | 111 | 02 |  |
| A18320 |  | soil replacement |  | 12d | 2010-07-22 | 2010-08-04 | A18310 | 8d | 0d |  | 03 | 111 | 02 |  |
|  | 3 | **foundation level** |  |  | 2010-08-05 | 2010-10-12 |  |  |  |  |  |  |  |  |
| A18330 |  | Plain Concrete Foundation |  | 2d | 2010-08-05 | 2010-08-07 | A18320 | 8d | 0d |  | 03 | 111 | 03 | 01 |
| A18620 |  | backfilling between P.C Foundation |  | 2d | 2010-08-09 | 2010-08-10 | A18330 FS+1d | 8d | 0d | jungle | 03 | 111 | 02 |  |
| A18630 |  | P.C Under Smells |  | 1d | 2010-08-11 | 2010-08-11 | A18620 | 8d | 0d | jungle | 03 | 111 | 03 | 01 |
| A18340 |  | Reinforced Concrete Foundation |  | 7d | 2010-08-12 | 2010-08-19 | A18630 | 8d | 0d |  | 03 | 111 | 03 | 02 |
| A18350 |  | under ground brick works |  | 2d | 2010-08-28 | 2010-08-29 | A18410 | 8d | 0d |  | 03 | 111 | 09 |  |
| A18360 |  | under ground insulation for RC & Brick work |  | 2d | 2010-08-30 | 2010-08-31 | A18350 | 8d | 0d |  | 03 | 111 | 10 |  |
| A18370 |  | backfilling for under ground |  | 4d | 2010-09-01 | 2010-09-05 | A18360 | 8d | 0d |  | 03 | 111 | 02 |  |
| A18380 |  | P.C slab on grade 10CM |  | 1d | 2010-10-07 | 2010-10-07 | A18530, A18470 | 17d | 0d |  | 03 | 111 | 03 | 03 |
| A18390 |  | moisture insulation with membrane sheets |  | 2d | 2010-10-09 | 2010-10-10 | A18380 | 17d | 0d |  | 03 | 111 | 10 |  |
| A18400 |  | R.C slab on grade |  | 2d | 2010-10-11 | 2010-10-12 | A18390 | 17d | 0d |  | 03 | 111 | 03 | 03 |
|  | 4 | **skeleton & brick walls** |  |  | 2010-08-21 | 2010-11-21 |  |  |  |  |  |  |  |  |
| A18410 |  | columns for ground floor |  | 6d | 2010-08-21 | 2010-08-26 | A18340 | 8d | 0d |  | 03 | 111 | 03 | 04 |
| A18420 |  | slab for ground floor |  | 9d | 2010-09-06 | 2010-09-18 | A18410, A18370 | 8d | 0d |  | 03 | 111 | 03 | 05 |
| A18570 |  | pouring for ground floor's slab |  | 1d | 2010-09-19 | 2010-09-19 | A18420, A18480 FF+3d | 8d | 0d |  | 03 | 111 | 03 |  |
| A18430 |  | columns for 1st floor |  | 6d | 2010-09-20 | 2010-09-26 | A18570 | 10d | 0d |  | 03 | 111 | 03 | 04 |
| A18600 |  | Fence work |  | 50d | 2010-09-20 | 2010-11-21 | A18570, A18610 FS+10d | 8d | 2d |  | 03 | 111 | 06 |  |
| A18440 |  | slab for 1st floor |  | 9d | 2010-09-27 | 2010-10-06 | A18430 | 10d | 0d |  | 03 | 111 | 03 | 05 |
| A18470 |  | Brick works for ground floor |  | 5d | 2010-10-02 | 2010-10-06 | A18570 FS+10d | 17d | 0d |  | 03 | 111 | 09 |  |
| A18580 |  | pouring for 1st floor's slab |  | 1d | 2010-10-07 | 2010-10-07 | A18440, A18490 FF+3d | 10d | 0d |  | 03 | 111 | 03 |  |
| A18450 |  | columns for roof floor |  | 4d | 2010-10-11 | 2010-10-14 | A18580 FS+2d | 10d | 0d |  | 03 | 111 | 03 | 04 |
| A18460 |  | slab for roof floor |  | 6d | 2010-10-16 | 2010-10-21 | A18450 | 10d | 0d |  | 03 | 111 | 03 | 05 |
| A18640 |  | Brick works for 1st floor |  | 5d | 2010-10-20 | 2010-10-25 | A18580 FS+10d | 16d | 0d | jungle | 03 | 111 | 09 |  |
| A18590 |  | pouring for roof floor's slab |  | 1d | 2010-10-23 | 2010-10-23 | A18460, A18500 FF+2d | 10d | 0d |  | 03 | 111 | 03 |  |
| A18650 |  | Brick works for roof floor |  | 5d | 2010-11-02 | 2010-11-07 | A18590 FS+8d | 10d | 0d | jungle | 03 | 111 | 09 |  |

| ID | WBS | Activity | Type | Duration | Start | Finish | Predecessors | Total float | Free float | Calendar | zone number | villa number | Work Category | concrete type |
| --- | --- | --- | --- | --- | --- | --- | --- | --- | --- | --- | --- | --- | --- | --- |
|  | 5 | **electro mechanical** |  |  | 2010-09-06 | 2010-11-09 |  |  |  |  |  |  |  |  |
| A18530 |  | plumbing connections under slab on grade |  | 2d | 2010-09-06 | 2010-09-07 | A18370 | 40d | 23d |  | 03 | 111 | 04 |  |
| A18480 |  | electrical conduits for ground floor's slab |  | 2d | 2010-09-13 | 2010-09-14 | A18420 SS+4d | 9d | 1d |  | 03 | 111 | 04 |  |
| A18490 |  | electrical conduits for 1st floor slab |  | 2d | 2010-10-02 | 2010-10-03 | A18440 SS+4d | 11d | 1d |  | 03 | 111 | 04 |  |
| A18680 |  | electrical conduits for ground floor walls |  | 2d | 2010-10-14 | 2010-10-16 | A18400 FS+1d | 17d | 0d | jungle | 03 | 111 | 04 |  |
| A18500 |  | electrical conduits for roof slab |  | 1d | 2010-10-19 | 2010-10-19 | A18460 SS+3d | 11d | 1d |  | 03 | 111 | 04 |  |
| A18690 |  | electrical conduits for 1st floor walls |  | 2d | 2010-10-26 | 2010-10-27 | A18640 | 16d | 0d | jungle | 03 | 111 | 04 |  |
| A18700 |  | electrical conduits for roof floor walls |  | 2d | 2010-11-08 | 2010-11-09 | A18650 | 13d | 0d | jungle | 03 | 111 | 04 |  |
|  | 6 | **finishing** |  |  | 2010-10-17 | 2010-11-23 |  |  |  |  |  |  |  |  |
| A18510 |  | Internal plastering for ground floor |  | 8d | 2010-10-17 | 2010-10-25 | A18680 | 17d | 2d |  | 03 | 111 | 05 |  |
| A18660 |  | Internal plastering for 1st floor |  | 8d | 2010-10-28 | 2010-11-06 | A18510, A18690 | 16d | 3d | jungle | 03 | 111 | 05 |  |
| A18520 |  | External plastering |  | 10d | 2010-11-08 | 2010-11-23 | A18650 | 6d | 0d |  | 03 | 111 | 05 |  |
| A18670 |  | Internal plastering for roof floor |  | 5d | 2010-11-10 | 2010-11-15 | A18660, A18700 | 13d | 7d | jungle | 03 | 111 | 05 |  |
|  | villa 112 | **Villa Number B105** |  |  | 2010-06-21 | 2010-11-23 |  |  |  |  |  |  |  |  |
|  | 1 | **general dates** |  |  | 2010-06-21 | 2010-11-23 |  |  |  |  |  |  |  |  |
| A18940 |  | Start Villa construction | milestone | 0d | 2010-06-21 | 2010-06-21 | A18960 | 8d | 0d |  | 03 | 112 | 07 |  |
| A18960 |  | IFC drawings | milestone | 0d | 2010-06-21 | 2010-06-21 |  | 8d | 0d |  | 03 | 112 | 01 |  |
| A19010 |  | Fence Drawings IFC |  | 1d | 2010-06-21 | 2010-06-21 | A18940 | 73d | 65d |  | 03 | 112 | 01 |  |
| A18950 |  | finish Villa construction | milestone | 0d | 2010-11-23 | 2010-11-23 | A18920, A19070, A19000 | 6d |  |  | 03 | 112 | 08 |  |
|  | 2 | **earth works** |  |  | 2010-07-20 | 2010-08-04 |  |  |  |  |  |  |  |  |
| A18710 |  | excavation |  | 2d | 2010-07-20 | 2010-07-21 | A18940 FS+25d | 8d | 0d |  | 03 | 112 | 02 |  |
| A18720 |  | soil replacement |  | 12d | 2010-07-22 | 2010-08-04 | A18710 | 8d | 0d |  | 03 | 112 | 02 |  |
|  | 3 | **foundation level** |  |  | 2010-08-05 | 2010-10-12 |  |  |  |  |  |  |  |  |
| A18730 |  | Plain Concrete Foundation |  | 2d | 2010-08-05 | 2010-08-07 | A18720 | 8d | 0d |  | 03 | 112 | 03 | 01 |
| A19020 |  | backfilling between P.C Foundation |  | 2d | 2010-08-09 | 2010-08-10 | A18730 FS+1d | 8d | 0d | jungle | 03 | 112 | 02 |  |
| A19030 |  | P.C Under Smells |  | 1d | 2010-08-11 | 2010-08-11 | A19020 | 8d | 0d | jungle | 03 | 112 | 03 | 01 |
| A18740 |  | Reinforced Concrete Foundation |  | 7d | 2010-08-12 | 2010-08-19 | A19030 | 8d | 0d |  | 03 | 112 | 03 | 02 |
| A18750 |  | under ground brick works |  | 2d | 2010-08-28 | 2010-08-29 | A18810 | 8d | 0d |  | 03 | 112 | 09 |  |
| A18760 |  | under ground insulation for RC & Brick work |  | 2d | 2010-08-30 | 2010-08-31 | A18750 | 8d | 0d |  | 03 | 112 | 10 |  |
| A18770 |  | backfilling for under ground |  | 4d | 2010-09-01 | 2010-09-05 | A18760 | 8d | 0d |  | 03 | 112 | 02 |  |
| A18780 |  | P.C slab on grade 10CM |  | 1d | 2010-10-07 | 2010-10-07 | A18930, A18870 | 17d | 0d |  | 03 | 112 | 03 | 03 |
| A18790 |  | moisture insulation with membrane sheets |  | 2d | 2010-10-09 | 2010-10-10 | A18780 | 17d | 0d |  | 03 | 112 | 10 |  |
| A18800 |  | R.C slab on grade |  | 2d | 2010-10-11 | 2010-10-12 | A18790 | 17d | 0d |  | 03 | 112 | 03 | 03 |

| ID | WBS | Activity | Duration | Start | Finish | Predecessors | Total float | Free float | Calendar | zone number | villa number | Work Category | concrete type |
| --- | --- | --- | --- | --- | --- | --- | --- | --- | --- | --- | --- | --- | --- |
|  | 4 | **skeleton & brick walls** |  | 2010-08-21 | 2010-11-21 |  |  |  |  |  |  |  |  |
| A18810 |  | columns for ground floor | 6d | 2010-08-21 | 2010-08-26 | A18740 | 8d | 0d |  | 03 | 112 | 03 | 04 |
| A18820 |  | slab for ground floor | 9d | 2010-09-06 | 2010-09-18 | A18810, A18770 | 8d | 0d |  | 03 | 112 | 03 | 05 |
| A18970 |  | pouring for ground floor's slab | 1d | 2010-09-19 | 2010-09-19 | A18820, A18880 FF+3d | 8d | 0d |  | 03 | 112 | 03 |  |
| A18830 |  | columns for 1st floor | 6d | 2010-09-20 | 2010-09-26 | A18970 | 10d | 0d |  | 03 | 112 | 03 | 04 |
| A19000 |  | Fence work | 50d | 2010-09-20 | 2010-11-21 | A18970, A19010 FS+10d | 8d | 2d |  | 03 | 112 | 06 |  |
| A18840 |  | slab for 1st floor | 9d | 2010-09-27 | 2010-10-06 | A18830 | 10d | 0d |  | 03 | 112 | 03 | 05 |
| A18870 |  | Brick works for ground floor | 5d | 2010-10-02 | 2010-10-06 | A18970 FS+10d | 17d | 0d |  | 03 | 112 | 09 |  |
| A18980 |  | pouring for 1st floor's slab | 1d | 2010-10-07 | 2010-10-07 | A18840, A18890 FF+3d | 10d | 0d |  | 03 | 112 | 03 |  |
| A18850 |  | columns for roof floor | 4d | 2010-10-11 | 2010-10-14 | A18980 FS+2d | 10d | 0d |  | 03 | 112 | 03 | 04 |
| A18860 |  | slab for roof floor | 6d | 2010-10-16 | 2010-10-21 | A18850 | 10d | 0d |  | 03 | 112 | 03 | 05 |
| A19040 |  | Brick works for 1st floor | 5d | 2010-10-20 | 2010-10-25 | A18980 FS+10d | 16d | 0d | jungle | 03 | 112 | 09 |  |
| A18990 |  | pouring for roof floor's slab | 1d | 2010-10-23 | 2010-10-23 | A18860, A18900 FF+2d | 10d | 0d |  | 03 | 112 | 03 |  |
| A19050 |  | Brick works for roof floor | 5d | 2010-11-02 | 2010-11-07 | A18990 FS+8d | 10d | 0d | jungle | 03 | 112 | 09 |  |
|  | 5 | **electro mechanical** |  | 2010-09-06 | 2010-11-09 |  |  |  |  |  |  |  |  |
| A18930 |  | plumbing connections under slab on grade | 2d | 2010-09-06 | 2010-09-07 | A18770 | 40d | 23d |  | 03 | 112 | 04 |  |
| A18880 |  | electrical conduits for ground floor's slab | 2d | 2010-09-13 | 2010-09-14 | A18820 SS+4d | 9d | 1d |  | 03 | 112 | 04 |  |
| A18890 |  | electrical conduits for 1st floor slab | 2d | 2010-10-02 | 2010-10-03 | A18840 SS+4d | 11d | 1d |  | 03 | 112 | 04 |  |
| A19080 |  | electrical conduits for ground floor walls | 2d | 2010-10-14 | 2010-10-16 | A18800 FS+1d | 17d | 0d | jungle | 03 | 112 | 04 |  |
| A18900 |  | electrical conduits for roof slab | 1d | 2010-10-19 | 2010-10-19 | A18860 SS+3d | 11d | 1d |  | 03 | 112 | 04 |  |
| A19090 |  | electrical conduits for 1st floor walls | 2d | 2010-10-26 | 2010-10-27 | A19040 | 16d | 0d | jungle | 03 | 112 | 04 |  |
| A19100 |  | electrical conduits for roof floor walls | 2d | 2010-11-08 | 2010-11-09 | A19050 | 13d | 0d | jungle | 03 | 112 | 04 |  |
|  | 6 | **finishing** |  | 2010-10-17 | 2010-11-23 |  |  |  |  |  |  |  |  |
| A18910 |  | Internal plastering for ground floor | 8d | 2010-10-17 | 2010-10-25 | A19080 | 17d | 2d |  | 03 | 112 | 05 |  |
| A19060 |  | Internal plastering for 1st floor | 8d | 2010-10-28 | 2010-11-06 | A18910, A19090 | 16d | 3d | jungle | 03 | 112 | 05 |  |
| A18920 |  | External plastering | 10d | 2010-11-08 | 2010-11-23 | A19050 | 6d | 0d |  | 03 | 112 | 05 |  |
| A19070 |  | Internal plastering for roof floor | 5d | 2010-11-10 | 2010-11-15 | A19060, A19100 | 13d | 7d | jungle | 03 | 112 | 05 |  |

| ID | WBS | Activity | Type | Duration | Start | Finish | Predecessors | Total float |
| --- | --- | --- | --- | --- | --- | --- | --- | --- |
|  | Close | **Closing phase** |  |  | 2010-11-30 | 2010-11-30 |  |  |
| A1280 |  | end project | milestone | 0d | 2010-11-30 | 2010-11-30 | A10240, A10550, A10950, A11350, A11750, A12150, A12550, A12950, A13350, A13750, A14150, A14550, A14950, A15350, A15750, A16150, A16550, A16950, A17350, A17750, A18150, A18550, A18950 | 0d |

## Activity codes

| Code | Value | Meaning |
| --- | --- | --- |
| Work Category | 01 | engineering |
| Work Category | 02 | earth works |
| Work Category | 03 | concrete works |
| Work Category | 04 | electro mechanical works |
| Work Category | 05 | finishes |
| Work Category | 06 | fence works |
| Work Category | 07 | start construction |
| Work Category | 08 | finish construction |
| Work Category | 09 | Brick Works |
| Work Category | 10 | Insulation works |
| concrete type | 01 | plain concrete |
| concrete type | 02 | R.C For Foundation |
| concrete type | 03 | slab on grade |
| concrete type | 04 | columns |
| concrete type | 05 | slabs |
| villa number | 10 | villa D10 |
| villa number | 102 | villa B102 |
| villa number | 107 | villa B107 |
| villa number | 11 | villa B11 |
| villa number | 111 | villa TH111 |
| villa number | 112 | villa TH112 |
| villa number | 12 | villa B12 |
| villa number | 13 | villa B13 |
| villa number | 14 | villa B14 |
| villa number | 52 | vila A52 |
| villa number | 55 | villa B55 |
| villa number | 86 | villa F86 |
| villa number | 87 | villa F87 |
| villa number | 89 | villa D89 |
| villa number | 9 | villa D9 |
| villa number | 90 | villa D90 |
| villa number | 91 | villa D91 |
| villa number | 92 | villa D92 |
| villa number | 93 | villa F93 |
| villa number | 94 | villa F94 |
| villa number | 95 | villa A95 |
| villa number | 96 | villa A96 |
| villa number | 97 | villa A97 |
| zone number | 01 | zone 1 |
| zone number | 02 | zone 2 |
| zone number | 03 | zone 3 |
