# Architectural Design Template for Mid Rise Commercial Office

Schedule from Primavera P6, 2007-01-01 to 2007-08-29, data date 2007-07-01, costs in USD, A marks actual dates.

## Calendars

- Standard 5 Day Workweek: Mon-Fri 08:00-12:00, 13:00-17:00; Sat-Sun off.

## Schedule

| ID | Activity | Type | Duration | Start | Finish | Predecessors | Complete | Remaining | Planned start | Planned finish | Total float | Cost | Actual cost |
| --- | --- | --- | --- | --- | --- | --- | --- | --- | --- | --- | --- | --- | --- |
| ENGENL0001 | Notice to proceed for Design Contract | milestone | 0d | 2007-01-01 A | 2007-01-01 A |  | 100% |  |  |  |  |  |  |
| ENPHS1BRNG | Borings in field |  | 10d | 2007-01-01 A | 2007-01-12 A | ENPHS1STAR | 100% |  |  |  |  | 3,500 | 3,500 |
| ENPHS1CEST | Preliminary Cost Estimate |  | 10d | 2007-01-01 A | 2007-01-12 A | ENPHS1STAR | 100% |  |  |  |  | 4,000 | 4,000 |
| ENPHS1DESN | Schematic Architect. Design Analy. |  | 15d | 2007-01-01 A | 2007-01-19 A | ENPHS1STAR | 100% |  |  |  |  | 1,056 | 1,056 |
| ENPHS1DRWG | Site Plans Drafting |  | 5d | 2007-01-01 A | 2007-01-05 A | ENPHS1STAR | 100% |  |  |  |  | 3,000 | 3,000 |
| ENPHS1ENER | Energy Analysis & Utility Data |  | 10d | 2007-01-01 A | 2007-01-19 A | ENPHS1STAR | 100% |  | 2007-01-01 | 2007-01-12 |  | 450 | 450 |
| ENPHS1INVT | Site Investigation - Engineering |  | 5d | 2007-01-01 A | 2007-01-05 A | ENPHS1STAR | 100% |  |  |  |  | 1,830 | 1,830 |
| ENPHS1STAR | Start schematic Phase | milestone | 0d | 2007-01-01 A | 2007-01-01 A | ENGENL0001 | 100% |  |  |  |  |  |  |
| ENPHS1BREP | Boring Report |  | 5d | 2007-01-15 A | 2007-01-24 A | ENPHS1BRNG | 100% |  | 2007-01-15 | 2007-01-19 |  | 2,500 | 2,500 |
| ENPHS1FINS | Finish schematic Phase | milestone | 0d | 2007-01-24 A | 2007-01-24 A | ENPHS1BREP, ENPHS1CEST, ENPHS1DESN, ENPHS1DRWG, ENPHS1ENER, ENPHS1INVT | 100% |  | 2007-01-19 | 2007-01-19 |  |  |  |
| ENPHS1PRNT | Printing & reproduction for Schematic submission |  | 5d | 2007-01-25 A | 2007-02-02 A | ENPHS1FINS | 100% |  | 2007-01-22 | 2007-01-26 |  |  |  |
| ENPHS1REVW | Schematic Submission and Review |  | 10d | 2007-01-29 A | 2007-02-09 A | ENPHS1PRNT | 100% |  |  |  |  |  |  |
| ENPHS1MEET | Schematic Design meeting |  | 2d | 2007-02-12 A | 2007-02-13 A | ENPHS1REVW | 100% |  |  |  |  |  |  |
| ENPHS2CAD | CAD Time |  | 15d | 2007-02-14 A | 2007-03-06 A | ENPHS2STAR | 100% |  |  |  |  | 10,000 | 10,000 |
| ENPHS2CALC | Engineering Calculations |  | 10d | 2007-02-14 A | 2007-02-27 A | ENPHS2STAR | 100% |  |  |  |  | 7,900 | 7,900 |
| ENPHS2CEST | Detailed Cost Estimate |  | 5d | 2007-02-14 A | 2007-02-20 A | ENPHS2STAR | 100% |  |  |  |  | 5,500 | 5,500 |
| ENPHS2DRWG | Engineering Drawings - 35% cmplt |  | 10d | 2007-02-14 A | 2007-02-27 A | ENPHS2STAR | 100% |  |  |  |  | 8,500 | 8,500 |
| ENPHS2ENER | Computer Energy Analysis |  | 3d | 2007-02-14 A | 2007-02-16 A | ENPHS2STAR | 100% |  |  |  |  | 1,500 | 1,500 |
| ENPHS2OMSI | OMSI Report & Estimate |  | 3d | 2007-02-14 A | 2007-02-16 A | ENPHS2STAR | 100% |  |  |  |  | 800 | 800 |
| ENPHS2SPEC | Preliminary Specifications |  | 10d | 2007-02-14 A | 2007-02-27 A | ENPHS2STAR | 100% |  |  |  |  | 2,000 | 2,000 |
| ENPHS2STAR | Start Design Development Phase | milestone | 0d | 2007-02-14 A | 2007-02-14 A | ENPHS1MEET | 100% |  |  |  |  |  |  |
| ENPHS2VLUE | Value Engineering |  | 15d | 2007-02-14 A | 2007-03-06 A | ENPHS2STAR | 100% |  |  |  |  | 22,000 | 22,000 |
| ENPHS2FINS | Finish Development Phase | milestone | 0d | 2007-03-06 A | 2007-03-06 A | ENPHS2CAD, ENPHS2CALC, ENPHS2CEST, ENPHS2DRWG, ENPHS2ENER, ENPHS2OMSI, ENPHS2SPEC, ENPHS2VLUE | 100% |  |  |  |  |  |  |
| ENPHS2PRNT | Printing & Reproduction for Design Development |  | 5d | 2007-03-07 A | 2007-03-13 A | ENPHS2FINS | 100% |  |  |  |  |  |  |
| ENPHS2REVW | Design Development Submission & Review |  | 10d | 2007-03-14 A | 2007-03-27 A | ENPHS2PRNT | 100% |  |  |  |  |  |  |
| ENPHS2MEET | Design Development meeting |  | 1d | 2007-03-28 A | 2007-03-28 A | ENPHS2REVW | 100% |  |  |  |  |  |  |
| ENPHS3CAD | Drawing preparation with CAD |  | 5d | 2007-03-29 A | 2007-04-04 A | ENPHS3STAR | 100% |  |  |  |  | 32,000 | 32,000 |
| ENPHS3CEST | Refined Cost Estimate |  | 3d | 2007-03-29 A | 2007-04-02 A | ENPHS3STAR | 100% |  |  |  |  | 7,000 | 7,000 |
| ENPHS3DESN | Completed Design Analysis |  | 3d | 2007-03-29 A | 2007-04-02 A | ENPHS3STAR | 100% |  |  |  |  | 2,000 | 2,000 |
| ENPHS3DRWG | Engineering Drawings 60% Cmplt. |  | 15d | 2007-03-29 A | 2007-04-18 A | ENPHS3STAR | 100% |  |  |  |  | 23,000 | 23,000 |
| ENPHS3FINS | Preliminary Building Finishes Pck. |  | 5d | 2007-03-29 A | 2007-04-04 A | ENPHS3STAR | 100% |  |  |  |  | 12,000 | 12,000 |
| ENPHS3STAR | Start Progress Phase | milestone | 0d | 2007-03-29 A | 2007-03-29 A | ENPHS2MEET | 100% |  |  |  |  |  |  |
| ENS3FINSH | Finish Progress Phase | milestone | 0d | 2007-04-18 A | 2007-04-18 A | ENPHS3CAD, ENPHS3CEST, ENPHS3DESN, ENPHS3DRWG, ENPHS3FINS | 100% |  |  |  |  |  |  |
| ENPHS3PRNT | Printing & reproduction for Progress Submission |  | 5d | 2007-04-19 A | 2007-04-25 A | ENS3FINSH | 100% |  |  |  |  |  |  |
| ENPHS3REVW | Progress Submission and Review |  | 10d | 2007-04-26 A | 2007-05-09 A | ENPHS3PRNT | 100% |  |  |  |  |  |  |
| ENPHS3MEET | Progress Design meeting |  | 1d | 2007-05-15 A | 2007-05-15 A | ENPHS3REVW | 100% |  |  |  |  |  |  |
| ENPHS4CAD | CAD Time |  | 10d | 2007-05-16 A | 2007-05-29 A | ENPHS4STAR | 100% |  |  |  |  | 44,900 | 44,900 |
| ENPHS4CEST | Completed Cost Estimate w/Markups |  | 5d | 2007-05-16 A | 2007-05-22 A | ENPHS4STAR | 100% |  |  |  |  | 8,000 | 8,000 |
| ENPHS4DESN | Final Design Analysis |  | 3d | 2007-05-16 A | 2007-05-18 A | ENPHS4STAR | 100% |  |  |  |  | 1,000 | 1,000 |
| ENPHS4DRWG | Architectural Drawings - 100% |  | 15d | 2007-05-16 A | 2007-06-05 A | ENPHS4STAR | 100% |  |  |  |  | 8,000 | 8,000 |
| ENPHS4FINS | Completed Building Finishes Pck. |  | 10d | 2007-05-16 A | 2007-05-29 A | ENPHS4STAR | 100% |  |  |  |  | 15,200 | 15,200 |
| ENPHS4MDLS | Architectural Model |  | 10d | 2007-05-16 A | 2007-05-29 A | ENPHS4STAR | 100% |  |  |  |  | 5,000 | 5,000 |
| ENPHS4REND | Rendering |  | 10d | 2007-05-16 A | 2007-05-29 A | ENPHS4STAR | 100% |  |  |  |  | 1,500 | 1,500 |
| ENPHS4SPEC | Completed Contract Specifications |  | 10d | 2007-05-16 A | 2007-05-29 A | ENPHS4STAR | 100% |  |  |  |  | 7,600 | 7,600 |
| ENPHS4STAR | Start Final Design Phase | milestone | 0d | 2007-05-16 A | 2007-05-16 A | ENPHS3MEET | 100% |  |  |  |  |  |  |
| ENS4FINSH | Finish Final Design Phase |  | 15d | 2007-06-06 A | 2007-06-26 A | ENPHS4CAD, ENPHS4CEST, ENPHS4DESN, ENPHS4DRWG, ENPHS4FINS, ENPHS4MDLS, ENPHS4REND, ENPHS4SPEC | 100% |  |  |  |  |  |  |
| ENPHS4PRNT | Printing & Reproduction for Final Submission |  | 5d | 2007-06-27 A | 2007-07-03 | ENS4FINSH | 60% | 2d |  |  | 0d |  |  |
| ENPHS4REVW | Final Design Submission and Review |  | 10d | 2007-07-04 | 2007-07-17 | ENPHS4PRNT |  |  |  |  | 0d |  |  |
| ENPHS4MEET | Final Design Meeting |  | 1d | 2007-07-18 | 2007-07-18 | ENPHS4REVW |  |  |  |  | 0d |  |  |
| ENPHS5CEST | Final Cost Estimate |  | 5d | 2007-07-19 | 2007-07-25 | ENPHS5STAR |  |  |  |  | 5d | 10,000 |  |
| ENPHS5DRWG | Contract Bid Documents |  | 10d | 2007-07-19 | 2007-08-01 | ENPHS5STAR |  |  |  |  | 0d | 1,344 |  |
| ENPHS5SPEC | Reproduceable Specifications |  | 5d | 2007-07-19 | 2007-07-25 | ENPHS5STAR |  |  |  |  | 5d | 200 |  |
| ENPHS5STAR | Start Bidding Documents Phase | milestone | 0d | 2007-07-19 | 2007-07-19 | ENPHS4MEET |  |  |  |  | 0d |  |  |
| ENPHS5FINS | Finish Bid Documents Phase | milestone | 0d | 2007-08-01 | 2007-08-01 | ENPHS5CEST, ENPHS5DRWG, ENPHS5SPEC |  |  |  |  | 0d |  |  |
| ENPHS5PRNT | Printing & reproduction for Bid documents |  | 15d | 2007-08-02 | 2007-08-22 | ENPHS5FINS |  |  |  |  | 0d |  |  |
| ENPHS5SUBM | Bid Documents Submission & Approval |  | 5d | 2007-08-23 | 2007-08-29 | ENPHS5PRNT |  |  |  |  | 0d |  |  |
| ENGENL0002 | Design Phase completed | milestone | 0d | 2007-08-29 | 2007-08-29 | ENPHS5SUBM |  |  |  |  | 0d |  |  |

Notes:
- ENPHS1BRNG: Expenses: PHS1 BRNG S 3500
- ENPHS1CEST: Expenses: PHS1 CEST S 4000
- ENPHS1DESN: Expenses: PHS1 DESN A 1056
- ENPHS1DRWG: Expenses: PHS1 DRWG A 800; PHS1 DRWG E 1200; PHS1 DRWG D 1000
- ENPHS1ENER: Expenses: PHS1 ENER E 450
- ENPHS1INVT: Expenses: PHS1 INVT S 1250; PHS1 INVT E 580
- ENPHS1BREP: Expenses: PHS1 BREP S 2500
- ENPHS2CAD: Expenses: PHS2 CAD D 5000; PHS2 CAD C 5000
- ENPHS2CALC: Expenses: PHS2 CALC A 2000; PHS2 CALC E 5900
- ENPHS2CEST: Expenses: PHS2 CEST S 5500
- ENPHS2DRWG: Expenses: PHS2 DRWG A 2500; PHS2 DRWG E 6000
- ENPHS2ENER: Expenses: PHS2 ENER E 500; PHS2 ENER C 1000
- ENPHS2OMSI: Expenses: PHS2 OMSI E 800
- ENPHS2SPEC: Expenses: PHS2 SPEC E 2000
- ENPHS2VLUE: Expenses: PHS2 VLUE S 22000
- ENPHS3CAD: Expenses: PHS3 CAD C 12000; PHS3 CAD D 20000
- ENPHS3CEST: Expenses: PHS3 CEST S 7000
- ENPHS3DESN: Expenses: PHS3 DESN E 2000
- ENPHS3DRWG: Expenses: PHS3 DRWG A 7000; PHS3 DRWG E 16000
- ENPHS3FINS: Expenses: PHS3 FINS S 12000
- ENPHS4CAD: Expenses: PHS4 CAD D 19900; PHS4 CAD C 25000
- ENPHS4CEST: Expenses: PHS4 CEST S 8000
- ENPHS4DESN: Expenses: PHS4 DESN E 1000
- ENPHS4DRWG: Expenses: PHS4 DRWG E 5000; PHS4 DRWG A 3000
- ENPHS4FINS: Expenses: PHS4 FINS S 15200
- ENPHS4MDLS: Expenses: PHS4 MDLS S 5000
- ENPHS4REND: Expenses: PHS4 REND S 1500
- ENPHS4SPEC: Expenses: PHS4 SPEC E 7600
- ENPHS5CEST: Expenses: PHS5 CEST S 10000
- ENPHS5DRWG: Expenses: PHS5 DRWG A 500; PHS5 DRWG E 844
- ENPHS5SPEC: Expenses: PHS5 SPEC E 200
