# HYDE PARK

Schedule from Primavera P6, 2013-01-01 to 2014-03-29, data date 2013-01-01, costs in EGP.

## Calendars

- 7-Day Workweek(TENDER CALENDAR): Mon-Sun 08:00-12:00, 13:00-17:00.

## Resources

| Resource | Group | Unit | Rate |
| --- | --- | --- | --- |
| CASH | material |  | 1 |
| PLAIN CONCRETE | material | M3 |  |
| STEEL LABOUR | labor |  |  |
| CARPENTER | labor |  |  |
| STEEL RFT | material | KG |  |
| REINFORCED CONCRETE | material | M3 |  |
| FORM WORK | material | m2 |  |
| Brickwork Labor | labor |  |  |
| EXTERNAL PLASTER WORKER | labor |  |  |
| PAINTER WORKER | labor |  |  |

## Schedule

| ID | WBS | Activity | Type | Duration | Start | Finish | Predecessors | Total float | Free float | Resources | Cost |
| --- | --- | --- | --- | --- | --- | --- | --- | --- | --- | --- | --- |
|  | 14 | **MILESTONES** |  |  | 2013-01-01 | 2014-03-29 |  |  |  |  |  |
| A1250 |  | Site handing over | milestone | 0d | 2013-01-01 | 2013-01-01 |  | 0d |  |  |  |
| A1270 |  | Contract signature | milestone | 0d | 2013-01-01 | 2013-01-01 | A1250 | 0d |  |  |  |
| A1260 |  | Recieve advanced payments | milestone | 0d | 2013-01-01 | 2013-01-01 | A1270 FS+0.1d | 0d |  |  |  |
| A1230 |  | Commencement date | milestone | 0d | 2013-01-01 | 2013-01-01 | A1260 FS+0.1d | 0d |  |  |  |
| A1240 |  | Project handing over | milestone | 0d | 2014-03-29 | 2014-03-29 | V-1-230, V-1-240, V-1-250, V-2-240, V-3-240, V-3-250 | 0d |  |  |  |
|  | 11 | **MOBILIZATION & DEMOBILIZATION** |  |  | 2013-01-01 | 2014-03-29 |  |  |  |  |  |
| A1200 |  | Mobilization |  | 30d | 2013-01-01 | 2013-01-31 | A1230 | 0d |  |  |  |
| A1210 |  | Demobilization |  | 7d | 2014-03-22 | 2014-03-29 | A1240 FF | 0d |  |  |  |
|  | 3 | **INTERNAL AUDIT** |  |  | 2013-04-01 | 2014-03-04 |  |  |  |  |  |
| A1300 |  | Internal audit-1 |  | 3d | 2013-04-01 | 2013-04-04 | A1200 FS+60d | 359d |  |  |  |
| A1310 |  | Internal audit-2 |  | 6d | 2013-09-28 | 2013-10-04 | A1200 FS+240d | 176d |  |  |  |
| A1320 |  | Internal audit-3 |  | 7d | 2014-02-25 | 2014-03-04 | A1200 FS+390d | 25d |  |  |  |
|  | 1 | **ENGINEERING** |  |  | 2013-01-31 | 2013-03-02 |  |  |  |  |  |
|  | 1 | **MATERIAL** |  |  | 2013-01-31 | 2013-03-02 |  |  |  |  |  |
| A1280 |  | Materials submittalls& approvals |  | 30d | 2013-01-31 | 2013-03-02 | A1200 | 392d |  |  |  |
|  | 2 | **SHOP DRAWINGS** |  |  | 2013-01-31 | 2013-03-02 |  |  |  |  |  |
| A1290 |  | Shop drawings submittals& approvals |  | 30d | 2013-01-31 | 2013-03-02 | A1200 | 392d |  |  |  |
|  | 2 | **CONSTRUCTION** |  |  | 2013-01-31 | 2014-03-29 |  |  |  |  |  |
|  | 12 | **PLEX NO. 1&2&3** |  |  | 2013-01-31 | 2013-09-17 |  |  |  |  |  |
|  | 11 | **MAIN WORKS** |  |  | 2013-01-31 | 2013-07-05 |  |  |  |  |  |
| V-1-5 |  | Excavation |  | 14d | 2013-01-31 | 2013-02-14 | A1200 | 0d |  |  |  |
| V-1-10 |  | P.c footing |  | 10d | 2013-02-14 | 2013-02-24 | V-1-5 | 0d |  | CASH [40]; PLAIN CONCRETE [30 M3] | 40 |
| V-1-20 |  | R.c concrete foundations |  | 14d | 2013-02-24 | 2013-03-10 | V-1-10 | 0d |  | STEEL LABOUR [200 h]; CARPENTER [200 h]; STEEL RFT [2000 KG]; CASH [96]; REINFORCED CONCRETE [14 M3] | 96 |
| V-1-30 |  | Ground floor columns |  | 14d | 2013-03-10 | 2013-03-24 | V-1-20 | 0d |  | STEEL RFT [1500 KG]; REINFORCED CONCRETE [9 M3]; CASH [64]; FORM WORK [64 m2]; STEEL LABOUR [100 h]; CARPENTER [100 h] | 64 |
| V-1-40 |  | Masonry under slab on grade |  | 10d | 2013-03-24 | 2013-04-03 | V-1-30 | 0d |  | CASH [32]; Brickwork Labor [400 h] | 32 |
| V-1-50 |  | Footings&masonry insulation |  | 4d | 2013-04-03 | 2013-04-07 | V-1-40 | 0d |  | CASH [32] | 32 |
| V-1-60 |  | Backfilling under slab on grade |  | 7d | 2013-04-07 | 2013-04-14 | V-1-50 | 0d |  | CASH [32] | 32 |
| V-1-70 |  | Ground floor slab&beams&staircase |  | 25d | 2013-04-14 | 2013-05-09 | V-1-60 | 0d |  | STEEL RFT [9000 KG]; REINFORCED CONCRETE [60 M3]; CASH [120]; FORM WORK [120 m2]; STEEL LABOUR [800 h]; CARPENTER [800 h] | 120 |
| V-1-80 |  | First floor columns |  | 14d | 2013-05-09 | 2013-05-23 | V-1-70 | 1d |  | STEEL RFT [1000 KG]; REINFORCED CONCRETE [9 M3]; CASH [64]; FORM WORK [64 m2]; STEEL LABOUR [100 h]; CARPENTER [100 h] | 64 |
| V-1-90 |  | First floor slab&beams&staircase |  | 25d | 2013-05-24 | 2013-06-18 | V-1-80, V-1-70 FS+15d | 0d |  | STEEL RFT [9000 KG]; REINFORCED CONCRETE [60 M3]; CASH [120]; FORM WORK [120 m2]; STEEL LABOUR [800 h]; CARPENTER [800 h] | 120 |
| V-1-100 |  | Roof columns |  | 7d | 2013-06-18 | 2013-06-25 | V-1-90 | 0d |  | STEEL RFT [500 KG]; REINFORCED CONCRETE [2 M3]; CASH [40]; FORM WORK [40 m2]; STEEL LABOUR [66 h]; CARPENTER [66 h] | 40 |
| V-1-110 |  | Slab on grade(R.C&P.C) |  | 5d | 2013-06-18 | 2013-06-23 | V-1-90 | 203d | 10d | STEEL RFT [1650 KG]; PLAIN CONCRETE [8 M3]; REINFORCED CONCRETE [40 M3]; CASH [40] | 40 |
| V-1-120 |  | Roof slab |  | 10d | 2013-06-25 | 2013-07-05 | V-1-100 | 0d |  | STEEL RFT [1000 KG]; REINFORCED CONCRETE [20 M3]; CASH [40]; FORM WORK [40 m2]; STEEL LABOUR [200 h]; CARPENTER [200 h] | 40 |
| V-1-125 |  | Roof parapet |  | 10d | 2013-06-25 | 2013-07-05 | V-1-120 SS | 238d | 0d | CASH [56]; STEEL RFT [3240 KG]; REINFORCED CONCRETE [30 M3] | 56 |

| ID | WBS | Activity | Duration | Start | Finish | Predecessors | Total float | Free float | Resources | Cost |
| --- | --- | --- | --- | --- | --- | --- | --- | --- | --- | --- |
|  | 12 | **INTERNAL FINISHES** |  | 2013-07-03 | 2013-09-17 |  |  |  |  |  |
| V-1-140 |  | Masonry works | 20d | 2013-07-03 | 2013-07-23 | V-1-90 FS+15d, V-1-110 | 193d | 0d | CASH [160]; Brickwork Labor [1700 h] | 160 |
| V-1-130 |  | Slopped concrete | 5d | 2013-07-05 | 2013-07-10 | V-1-125 | 238d | 0d | PLAIN CONCRETE [14 M3]; CASH [40] | 40 |
| V-1-150 |  | Water proofing insulation | 7d | 2013-07-10 | 2013-07-17 | V-1-130 | 238d | 0d | CASH [56] | 56 |
| V-1-160 |  | Thermal insulation | 7d | 2013-07-17 | 2013-07-24 | V-1-150 | 238d | 0d | CASH [56] | 56 |
| V-1-180 |  | External plaster works | 21d | 2013-07-23 | 2013-08-13 | V-1-140 | 193d | 0d | EXTERNAL PLASTER WORKER [400 h]; CASH [168] | 168 |
| V-1-190 |  | Mechanical & electrical works | 25d | 2013-07-23 | 2013-08-17 | V-1-260 SS | 224d |  | CASH [80] | 80 |
| V-1-260 |  | Internal plaster works | 20d | 2013-07-23 | 2013-08-12 | V-1-140 | 224d | 0d |  |  |
| V-1-170 |  | Terrazzo tiles | 10d | 2013-07-24 | 2013-08-03 | V-1-160 | 238d |  | CASH [80] | 80 |
| V-1-200 |  | Flooring works(garnite& marbles) | 10d | 2013-08-13 | 2013-08-23 | V-1-180 | 193d | 0d | CASH [80] | 80 |
| V-1-210 |  | Stone cladding | 7d | 2013-08-13 | 2013-08-20 | V-1-180 | 196d | 3d | CASH [56] | 56 |
| V-1-220 |  | External painting | 15d | 2013-08-23 | 2013-09-07 | V-1-210, V-1-200 | 193d | 0d | PAINTER WORKER [400 h]; CASH [80] | 80 |
| V-1-230 |  | Doors & windows erection | 10d | 2013-09-07 | 2013-09-17 | V-1-220 | 193d |  | CASH [80] | 80 |
| V-1-240 |  | Wood cladding | 10d | 2013-09-07 | 2013-09-17 | V-1-220 | 193d |  | CASH [80] | 80 |
| V-1-250 |  | Hand rails erection | 5d | 2013-09-07 | 2013-09-12 | V-1-220 | 198d |  | CASH [40] | 40 |
|  | 2 | **PLEX NO. 4&5&6** |  | 2013-05-05 | 2013-12-13 |  |  |  |  |  |
|  | 11 | **MAIN WORKS** |  | 2013-05-05 | 2013-09-30 |  |  |  |  |  |
| V-2-280 |  | Excavation | 14d | 2013-05-05 | 2013-05-19 | V-1-5 FS+80d | 0d |  |  |  |
| V-2-10 |  | P.c footing | 10d | 2013-05-19 | 2013-05-29 | V-2-280, V-1-20 | 3d | 0d | CASH [40]; PLAIN CONCRETE [30 M3] | 40 |
| V-2-20 |  | R.c concrete foundations | 14d | 2013-05-29 | 2013-06-12 | V-2-10 | 3d | 0d | STEEL LABOUR [200 h]; CARPENTER [200 h]; STEEL RFT [2000 KG]; CASH [96]; REINFORCED CONCRETE [14 M3] | 96 |
| V-2-50 |  | Ground floor columns | 14d | 2013-06-12 | 2013-06-26 | V-2-20 | 3d | 0d | STEEL RFT [1500 KG]; REINFORCED CONCRETE [9 M3]; CASH [64]; FORM WORK [64 m2]; STEEL LABOUR [100 h]; CARPENTER [100 h] | 64 |
| V-2-120 |  | Masonry under slab on grade | 10d | 2013-06-26 | 2013-07-06 | V-2-50 | 3d | 0d | CASH [32]; Brickwork Labor [400 h] | 32 |
| V-2-140 |  | Footings&masonry insulation | 4d | 2013-07-06 | 2013-07-10 | V-2-120 | 3d | 0d | CASH [32] | 32 |
| V-2-30 |  | Backfilling under slab on grade | 7d | 2013-07-10 | 2013-07-17 | V-2-140 | 3d |  | CASH [32] | 32 |
| V-2-60 |  | Ground floor slab&beams&staircase | 20d | 2013-07-20 | 2013-08-09 | V-2-30, V-1-120 FS+15d | 0d |  | STEEL RFT [9000 KG]; REINFORCED CONCRETE [60 M3]; CASH [120]; FORM WORK [120 m2]; STEEL LABOUR [800 h]; CARPENTER [800 h] | 120 |
| V-2-70 |  | First floor columns | 14d | 2013-08-09 | 2013-08-23 | V-2-60 | 1d |  | STEEL RFT [1000 KG]; REINFORCED CONCRETE [9 M3]; CASH [64]; FORM WORK [64 m2]; STEEL LABOUR [100 h]; CARPENTER [100 h] | 64 |
| V-2-80 |  | First floor slab&beams&staircase | 20d | 2013-08-24 | 2013-09-13 | V-2-70, V-2-60 FS+15d | 0d |  | STEEL RFT [9000 KG]; REINFORCED CONCRETE [60 M3]; CASH [120]; FORM WORK [120 m2]; STEEL LABOUR [800 h]; CARPENTER [800 h] | 120 |
| V-2-110 |  | Slab on grade(R.C&P.C) | 5d | 2013-09-13 | 2013-09-18 | V-2-80 | 116d | 10d | STEEL RFT [1650 KG]; PLAIN CONCRETE [8 M3]; REINFORCED CONCRETE [40 M3]; CASH [40] | 40 |
| V-2-90 |  | Roof columns | 7d | 2013-09-13 | 2013-09-20 | V-2-80 | 0d |  | STEEL RFT [500 KG]; REINFORCED CONCRETE [2 M3]; CASH [40]; FORM WORK [40 m2]; STEEL LABOUR [66 h]; CARPENTER [66 h] | 40 |
| V-2-100 |  | Roof slab | 10d | 2013-09-20 | 2013-09-30 | V-2-90 | 0d |  | STEEL RFT [1000 KG]; REINFORCED CONCRETE [20 M3]; CASH [40]; FORM WORK [40 m2]; STEEL LABOUR [200 h]; CARPENTER [200 h] | 40 |
| V-2-40 |  | Roof parapet | 10d | 2013-09-20 | 2013-09-30 | V-2-100 SS | 151d | 0d | CASH [56]; STEEL RFT [3240 KG]; REINFORCED CONCRETE [30 M3] | 56 |

| ID | WBS | Activity | Duration | Start | Finish | Predecessors | Total float | Free float | Resources | Cost |
| --- | --- | --- | --- | --- | --- | --- | --- | --- | --- | --- |
|  | 12 | **INTERNAL FINISHES** |  | 2013-09-28 | 2013-12-13 |  |  |  |  |  |
| V-2-130 |  | Masonry works | 20d | 2013-09-28 | 2013-10-18 | V-2-80 FS+15d, V-2-110 | 106d | 0d | CASH [160]; Brickwork Labor [1700 h] | 160 |
| V-2-170 |  | Slopped concrete | 5d | 2013-09-30 | 2013-10-05 | V-2-40 | 151d | 0d | PLAIN CONCRETE [14 M3]; CASH [40] | 40 |
| V-2-160 |  | Water proofing insulation | 7d | 2013-10-05 | 2013-10-12 | V-2-170 | 151d | 0d | CASH [56] | 56 |
| V-2-150 |  | Thermal insulation | 7d | 2013-10-12 | 2013-10-19 | V-2-160 | 151d | 0d | CASH [56] | 56 |
| V-2-190 |  | External plaster works | 21d | 2013-10-18 | 2013-11-08 | V-2-130 | 106d | 0d | EXTERNAL PLASTER WORKER [400 h]; CASH [168] | 168 |
| V-2-260 |  | Mechanical & electrical works | 25d | 2013-10-18 | 2013-11-12 | V-2-270 SS | 137d |  | CASH [80] | 80 |
| V-2-270 |  | Internal plaster works | 20d | 2013-10-18 | 2013-11-07 | V-2-130 | 137d | 0d |  |  |
| V-2-180 |  | Terrazzo tiles | 10d | 2013-10-19 | 2013-10-29 | V-2-150 | 151d |  | CASH [80] | 80 |
| V-2-200 |  | Flooring works(garnite& marbles) | 10d | 2013-11-08 | 2013-11-18 | V-2-190 | 106d | 0d | CASH [80] | 80 |
| V-2-210 |  | Stone cladding | 7d | 2013-11-08 | 2013-11-15 | V-2-190 | 109d | 3d | CASH [56] | 56 |
| V-2-220 |  | External painting | 15d | 2013-11-18 | 2013-12-03 | V-2-210, V-2-200 | 106d | 0d | PAINTER WORKER [400 h]; CASH [80] | 80 |
| V-2-230 |  | Doors & windows erection | 10d | 2013-12-03 | 2013-12-13 | V-2-220 | 106d |  | CASH [80] | 80 |
| V-2-240 |  | Wood cladding | 10d | 2013-12-03 | 2013-12-13 | V-2-220 | 106d |  | CASH [80] | 80 |
| V-2-250 |  | Hand rails erection | 5d | 2013-12-03 | 2013-12-08 | V-2-220 | 111d |  | CASH [40] | 40 |
|  | 1 | **PLEX NO. 7&8&9&10** |  | 2013-08-07 | 2014-03-29 |  |  |  |  |  |
|  | 11 | **MAIN WORKS** |  | 2013-08-07 | 2013-12-26 |  |  |  |  |  |
| V-3-280 |  | Excavation | 14d | 2013-08-07 | 2013-08-21 | V-2-280 FS+80d | 0d |  |  |  |
| V-3-10 |  | P.c footing | 10d | 2013-08-21 | 2013-08-31 | V-3-280, V-2-20 | 0d |  | CASH [40]; PLAIN CONCRETE [30 M3] | 40 |
| V-3-20 |  | R.c concrete foundations | 14d | 2013-08-31 | 2013-09-14 | V-3-10 | 0d |  | STEEL LABOUR [200 h]; CARPENTER [200 h]; STEEL RFT [2000 KG]; CASH [96]; REINFORCED CONCRETE [14 M3] | 96 |
| V-3-50 |  | Ground floor columns | 10d | 2013-09-14 | 2013-09-24 | V-3-20 | 0d |  | STEEL RFT [1500 KG]; REINFORCED CONCRETE [9 M3]; CASH [64]; FORM WORK [64 m2]; STEEL LABOUR [100 h]; CARPENTER [100 h] | 64 |
| V-3-120 |  | Masonry under slab on grade | 10d | 2013-09-24 | 2013-10-04 | V-3-50 | 0d |  | CASH [32]; Brickwork Labor [400 h] | 32 |
| V-3-140 |  | Footings&masonry insulation | 4d | 2013-10-04 | 2013-10-08 | V-3-120 | 0d |  | CASH [32] | 32 |
| V-3-30 |  | Backfilling under slab on grade | 7d | 2013-10-08 | 2013-10-15 | V-3-140 | 0d |  | CASH [32] | 32 |
| V-3-60 |  | Ground floor slab&beams&staircase | 20d | 2013-10-15 | 2013-11-04 | V-3-30, V-2-100 FS+15d | 0d |  | STEEL RFT [9000 KG]; REINFORCED CONCRETE [60 M3]; CASH [120]; FORM WORK [120 m2]; STEEL LABOUR [800 h]; CARPENTER [800 h] | 120 |
| V-3-70 |  | First floor columns | 10d | 2013-11-04 | 2013-11-14 | V-3-60 | 5d |  | STEEL RFT [1000 KG]; REINFORCED CONCRETE [9 M3]; CASH [64]; FORM WORK [64 m2]; STEEL LABOUR [100 h]; CARPENTER [100 h] | 64 |
| V-3-80 |  | First floor slab&beams&staircase | 20d | 2013-11-19 | 2013-12-09 | V-3-70, V-3-60 FS+15d | 0d |  | STEEL RFT [9000 KG]; REINFORCED CONCRETE [60 M3]; CASH [120]; FORM WORK [120 m2]; STEEL LABOUR [800 h]; CARPENTER [800 h] | 120 |
| V-3-110 |  | Slab on grade(R.C&P.C) | 5d | 2013-12-09 | 2013-12-14 | V-3-80 | 10d |  | STEEL RFT [1650 KG]; PLAIN CONCRETE [8 M3]; REINFORCED CONCRETE [40 M3]; CASH [40] | 40 |
| V-3-90 |  | Roof columns | 7d | 2013-12-09 | 2013-12-16 | V-3-80 | 64d | 0d | STEEL RFT [500 KG]; REINFORCED CONCRETE [2 M3]; CASH [40]; FORM WORK [40 m2]; STEEL LABOUR [66 h]; CARPENTER [66 h] | 40 |
| V-3-100 |  | Roof slab | 10d | 2013-12-16 | 2013-12-26 | V-3-90 | 64d | 0d | STEEL RFT [1000 KG]; REINFORCED CONCRETE [20 M3]; CASH [40]; FORM WORK [40 m2]; STEEL LABOUR [200 h]; CARPENTER [200 h] | 40 |
| V-3-40 |  | Roof parapet | 10d | 2013-12-16 | 2013-12-26 | V-3-100 SS | 64d | 0d | CASH [56]; STEEL RFT [3240 KG]; REINFORCED CONCRETE [30 M3] | 56 |

| ID | WBS | Activity | Duration | Start | Finish | Predecessors | Total float | Free float | Resources | Cost |
| --- | --- | --- | --- | --- | --- | --- | --- | --- | --- | --- |
|  | 12 | **INTERNAL FINISHES** |  | 2013-12-24 | 2014-03-29 |  |  |  |  |  |
| V-3-130 |  | Masonry works | 20d | 2013-12-24 | 2014-01-13 | V-3-80 FS+15d, V-3-110 | 0d |  | CASH [160]; Brickwork Labor [1700 h] | 160 |
| V-3-170 |  | Slopped concrete | 5d | 2013-12-26 | 2013-12-31 | V-3-40 | 64d | 0d | PLAIN CONCRETE [14 M3]; CASH [40] | 40 |
| V-3-160 |  | Water proofing insulation | 7d | 2013-12-31 | 2014-01-07 | V-3-170 | 64d | 0d | CASH [56] | 56 |
| V-3-150 |  | Thermal insulation | 7d | 2014-01-07 | 2014-01-14 | V-3-160 | 64d | 0d | CASH [56] | 56 |
| V-3-190 |  | External plaster works | 25d | 2014-01-13 | 2014-02-07 | V-3-130 | 0d |  | EXTERNAL PLASTER WORKER [400 h]; CASH [168] | 168 |
| V-3-260 |  | Mechanical & electrical works | 25d | 2014-01-13 | 2014-02-07 | V-3-270 SS | 50d |  | CASH [80] | 80 |
| V-3-270 |  | Internal plaster works | 20d | 2014-01-13 | 2014-02-02 | V-3-130 | 50d | 0d |  |  |
| V-3-180 |  | Terrazzo tiles | 10d | 2014-01-14 | 2014-01-24 | V-3-150 | 64d |  | CASH [80] | 80 |
| V-3-200 |  | Flooring works(garnite& marbles) | 15d | 2014-02-07 | 2014-02-22 | V-3-190 | 0d |  | CASH [80] | 80 |
| V-3-210 |  | Stone cladding | 7d | 2014-02-07 | 2014-02-14 | V-3-190 | 8d |  | CASH [56] | 56 |
| V-3-220 |  | External painting | 15d | 2014-02-22 | 2014-03-09 | V-3-210, V-3-200 | 0d |  | PAINTER WORKER [400 h]; CASH [80] | 80 |
| V-3-230 |  | Doors & windows erection | 10d | 2014-03-09 | 2014-03-19 | V-3-220 | 10d |  | CASH [80] | 80 |
| V-3-240 |  | Wood cladding | 10d | 2014-03-09 | 2014-03-19 | V-3-220 | 0d |  | CASH [80] | 80 |
| V-3-250 |  | Hand rails erection | 10d | 2014-03-19 | 2014-03-29 | V-3-220, V-3-240 | 0d |  | CASH [40] | 40 |
