# EL EZZ

Schedule from Primavera P6, 2012-01-01 to 2012-07-17, data date 2012-01-01, costs in USD.

## Calendars

- 7-Day Workweek: Mon-Sun 08:00-12:00, 13:00-17:00.
- Calendar 2: Mon 08:00-16:00; Tue-Thu 08:00-12:00, 13:00-17:00; Fri off; Sat 08:00-12:00, 13:00-17:00; Sun 08:00-16:00.

## Schedule

| ID | WBS | Activity | Type | Duration | Start | Finish | Predecessors | Total float | Free float | Cost | TYPE OF WORK | (New) |
| --- | --- | --- | --- | --- | --- | --- | --- | --- | --- | --- | --- | --- |
|  | Milestones | **Project Milestones** |  |  | 2012-01-01 | 2012-07-17 |  |  |  |  |  |  |
| A1060 |  | Project Start | milestone | 0d | 2012-01-01 | 2012-01-01 |  | 0d |  |  |  |  |
| A1070 |  | Project Finish | milestone | 0d | 2012-07-17 | 2012-07-17 | A1470, A1440, A1380, A1480, A1340, A1350, A1240, A1300, A1670, A1140 | 0d |  |  |  |  |
|  | Mobilization | **Mobilization** |  |  | 2012-01-01 | 2012-01-25 |  |  |  |  |  |  |
| A1050 |  | Site Preparation Works |  | 25d | 2012-01-01 | 2012-01-25 | A1060 | 0d |  | 45,000 |  |  |
|  | Engineering | **Engineering** |  |  | 2012-01-08 | 2012-03-13 |  |  |  |  |  |  |
|  | Shop drawings | **Shop drawings** |  |  | 2012-01-08 | 2012-03-13 |  |  |  |  |  |  |
|  | Plain | **Concrete Works** |  |  | 2012-01-08 | 2012-01-19 |  |  |  |  |  |  |
| A120 |  | Shop Drawings submittal |  | 7d | 2012-01-08 | 2012-01-14 | A1050 SS+7d | 19.88d | 0d |  | civil |  |
| A170 |  | Shop Drawings Approval |  | 7d | 2012-01-13 | 2012-01-19 | A120 SS+5d | 19.88d | 0d |  | civil |  |
|  | Masonry | **Masonry** |  |  | 2012-01-20 | 2012-01-31 |  |  |  |  |  |  |
| A180 |  | Shop Drawings submittal |  | 7d | 2012-01-20 | 2012-01-26 | A170 | 35.88d | 0d |  | arch |  |
| A270 |  | Shop Drawings Approval |  | 7d | 2012-01-25 | 2012-01-31 | A180 SS+5d | 35.88d | 0d |  | arch |  |
|  | Metal | **Structure Steel** |  |  | 2012-02-01 | 2012-02-14 |  |  |  |  |  |  |
| A160 |  | Shop Drawings submittal |  | 7d | 2012-02-01 | 2012-02-07 | A270 | 48.88d | 0d |  | civil | 1000 |
| A260 |  | Shop Drawings Approval |  | 7d | 2012-02-08 | 2012-02-14 | A160 | 48.88d | 0d |  | civil |  |
|  | Finishes | **Finishes** |  |  | 2012-02-15 | 2012-02-28 |  |  |  |  |  |  |
| A300 |  | Shop Drawings submittal |  | 7d | 2012-02-15 | 2012-02-21 | A260 | 70.88d | 0d |  | civil |  |
| A310 |  | Shop Drawings Approval |  | 7d | 2012-02-22 | 2012-02-28 | A300 | 70.88d | 0d |  | civil |  |
|  | MEP | **MEP** |  |  | 2012-02-29 | 2012-03-13 |  |  |  |  |  |  |
| A340 |  | Shop Drawings submittal |  | 7d | 2012-02-29 | 2012-03-06 | A310 | 70.88d | 0d |  | civil |  |
| A350 |  | Shop Drawings Approval |  | 7d | 2012-03-07 | 2012-03-13 | A340 | 70.88d |  |  | civil |  |
|  | Construction | **Construction** |  |  | 2012-01-11 | 2012-07-17 |  |  |  |  |  |  |
|  | WT&PR | **Utilities building, ELEC. Room & Security** |  |  | 2012-01-11 | 2012-06-28 |  |  |  |  |  |  |
|  | Civil works | **Civil works** |  |  | 2012-01-11 | 2012-05-23 |  |  |  |  |  |  |
| A1540 |  | Excavation Works |  | 20d | 2012-01-11 | 2012-01-30 | A1050 SS+10d | 18.88d | 0d |  |  |  |
| A1550 |  | Plain Concrete For Footings |  | 10d | 2012-01-31 | 2012-02-09 | A1540 | 18.88d | 0d |  |  |  |
| A1560 |  | Reinforced Concrete For Footings |  | 20d | 2012-02-10 | 2012-02-29 | A1550 | 18.88d | 0d |  |  |  |
| A1570 |  | Backfill Works |  | 10d | 2012-03-01 | 2012-03-10 | A1560 | 18.88d | 0d |  |  |  |
| A1580 |  | Tank walls |  | 30d | 2012-03-11 | 2012-04-09 | A1570 | 18.88d | 0d |  |  |  |
| A1590 |  | S.O.G for ground floors |  | 10d | 2012-04-10 | 2012-04-19 | A1580 | 18.88d | 0d |  |  |  |
| A1600 |  | Ground floor columns |  | 7d | 2012-04-10 | 2012-04-16 | A1580 | 54.88d | 0d |  |  |  |
| A1610 |  | Ground floor roof |  | 15d | 2012-04-17 | 2012-05-01 | A1600 | 54.88d | 0d |  |  |  |
| A1630 |  | First floor cloumns |  | 7d | 2012-05-02 | 2012-05-08 | A1610 | 54.88d | 0d |  |  |  |
| A1620 |  | First floor roof |  | 15d | 2012-05-09 | 2012-05-23 | A1630 | 54.88d |  |  |  |  |

Notes:
- A1050: Expenses: (New Expense Item) 45000

| ID | WBS | Activity | Duration | Start | Finish | Predecessors | Total float | Free float | Calendar | Cost |
| --- | --- | --- | --- | --- | --- | --- | --- | --- | --- | --- |
|  | 1 | **Arch works** |  | 2012-04-20 | 2012-06-28 |  |  |  |  |  |
| A1640 |  | Masonry works | 20d | 2012-04-20 | 2012-05-09 | A1590 | 18.88d | 0d |  |  |
| A1650 |  | Plaster works | 30d | 2012-05-10 | 2012-06-08 | A1640 | 18.88d | 0d |  |  |
| A1660 |  | Flooring works | 20d | 2012-06-09 | 2012-06-28 | A1650 | 18.88d | 0d |  |  |
| A1670 |  | Painting works | 15d | 2012-06-14 | 2012-06-28 | A1660 SS+5d | 18.88d |  |  |  |
|  | 1 | **Warehouse building** |  | 2012-01-11 | 2012-07-17 |  |  |  |  |  |
|  | Civil | **Civil works** |  | 2012-01-11 | 2012-06-07 |  |  |  |  |  |
|  | Earth | **Earth works** |  | 2012-01-11 | 2012-04-03 |  |  |  |  |  |
| A1020 |  | Excavation Works | 10d | 2012-01-11 | 2012-01-20 | A1050 SS+10d | 0d |  |  | 582,400 |
| A1080 |  | Soil replacement&backfilling | 15d | 2012-01-21 | 2012-02-06 | A1020 | 0d |  | Calendar 2 |  |
| A1040 |  | Backfill Works | 10d | 2012-03-24 | 2012-04-03 | A1120 | 0d |  |  | 64,350 |
|  | Concrete | **Concrete Works** |  | 2012-02-06 | 2012-05-28 |  |  |  |  |  |
| A1090 |  | Plain Concrete For Footings | 20d | 2012-02-06 | 2012-02-26 | A170 SS+5d, A1080 | 0d |  |  | 491,150 |
| A1100 |  | Reinforced Concrete For Footings , Columns & Retaining Wall | 20d | 2012-02-16 | 2012-03-07 | A1090 SS+10d | 0d |  |  | 4,804,800 |
| A1140 |  | Slab On Grade | 20d | 2012-05-08 | 2012-05-28 | A1130 SS+5d | 50d |  |  | 1,200,150 |
| A1150 |  | Reinforced Concrete Slab Above Steel Platform | 7d | 2012-05-18 | 2012-05-25 | A1190 | 33d | 8d |  | 132,430 |
|  | Masonry | **Masonry Works** |  | 2012-03-07 | 2012-05-23 |  |  |  |  |  |
| A1230 |  | Masonry For Substructure | 10d | 2012-03-07 | 2012-03-17 | A270, A1100 | 0d |  |  | 105,690 |
| A1490 |  | Masonry For Superstructure | 20d | 2012-05-03 | 2012-05-23 | A1170 | 0d |  |  | 629,320 |
|  | Proofing | **Damp proofing & Insulation** |  | 2012-03-17 | 2012-06-07 |  |  |  |  |  |
| A1120 |  | Cold Bitumen For UnderGround | 7d | 2012-03-17 | 2012-03-24 | A1230 | 0d |  |  | 108,000 |
| A1130 |  | Polythene Sheets Under Slab On Grade | 7d | 2012-05-03 | 2012-05-10 | A1170 | 50d | 0d |  | 1,130,550 |
| A1240 |  | Insulation For Concrete Building Roof | 15d | 2012-05-23 | 2012-06-07 | A1180 | 40d |  |  | 10,835 |
|  | Steel | **Structural Steel** |  | 2012-04-03 | 2012-06-02 |  |  |  |  |  |
| A1170 |  | Steel Structure Erection | 30d | 2012-04-03 | 2012-05-03 | A260, A1040 | 0d |  |  | 971,620 |
| A1180 |  | Roof Cladding | 30d | 2012-04-23 | 2012-05-23 | A1170 SS+20d | 0d |  |  | 545,400 |
| A1190 |  | Steel Platform Erection For Mezzanine | 15d | 2012-05-03 | 2012-05-18 | A1170 | 33d | 0d |  | 306,510 |
| A1200 |  | Vertical Cladding | 30d | 2012-05-03 | 2012-06-02 | A1170 | 25d | 0d |  | 79,800 |

Notes:
- A1020: Expenses: (New Expense Item) 582400
- A1040: Expenses: (New Expense Item) 64350
- A1090: Expenses: (New Expense Item) 491150
- A1100: Expenses: (New Expense Item) 4804800
- A1140: Expenses: (New Expense Item) 1200150
- A1150: Expenses: (New Expense Item) 78030; (New Expense Item)1 54400
- A1230: Expenses: (New Expense Item) 105690
- A1490: Expenses: (New Expense Item) 629320
- A1120: Expenses: (New Expense Item) 108000
- A1130: Expenses: (New Expense Item) 1130550
- A1240: Expenses: (New Expense Item) 10835
- A1170: Expenses: (New Expense Item) 971620
- A1180: Expenses: (New Expense Item) 545400
- A1190: Expenses: (New Expense Item) 306510
- A1200: Expenses: (New Expense Item) 79800

| ID | WBS | Activity | Duration | Start | Finish | Predecessors | Total float | Free float | Cost |
| --- | --- | --- | --- | --- | --- | --- | --- | --- | --- |
|  | Arch | **Arch works** |  | 2012-05-17 | 2012-07-17 |  |  |  |  |
|  | Finishes | **Finishes Works** |  | 2012-05-23 | 2012-07-17 |  |  |  |  |
| A1280 |  | Internal Plaster | 20d | 2012-05-23 | 2012-06-12 | A1490 | 0d |  | 44,000 |
| A1320 |  | Flooring Works | 20d | 2012-06-12 | 2012-07-02 | A1280 | 0d |  | 151,735 |
| A1500 |  | False Ceiling | 20d | 2012-06-12 | 2012-07-02 | A1320 SS | 0d |  | 222,720 |
| A1300 |  | Internal Painting | 20d | 2012-06-27 | 2012-07-17 | A1500 SS+15d | 0d |  | 69,920 |
|  | Aluminium | **Doors & Windows** |  | 2012-06-02 | 2012-06-22 |  |  |  |  |
| A1330 |  | Windows Erection | 15d | 2012-06-02 | 2012-06-17 | A1200, A1150 | 25d | 0d | 372,798 |
| A1350 |  | Doors Erection | 15d | 2012-06-07 | 2012-06-22 | A1330 SS+5d | 25d |  | 1,591,688 |
|  | Site | **Site Works** |  | 2012-05-17 | 2012-07-16 |  |  |  |  |
| A1340 |  | Site Works | 60d | 2012-05-17 | 2012-07-16 | A1490 FS-6d | 1d |  | 693,152 |
|  | MEP | **MEP Works** |  | 2012-05-23 | 2012-07-17 |  |  |  |  |
|  | 2 | **Electrical Works** |  | 2012-05-23 | 2012-07-17 |  |  |  |  |
| A1450 |  | Fire alarm system | 30d | 2012-05-23 | 2012-06-22 | A1180, A350 | 0d |  | 1,000,000 |
| A1460 |  | Lighting works | 30d | 2012-06-07 | 2012-07-07 | A1450 SS+15d | 0d |  | 803,139 |
| A1470 |  | Switch board erection | 20d | 2012-06-27 | 2012-07-17 | A1460 SS+20d | 0d |  | 66,499 |
|  | 1 | **Mechanical Works** |  | 2012-05-23 | 2012-07-17 |  |  |  |  |
|  | HVAC&FFWorks | **HVAC & Fire Fighting Works** |  | 2012-05-23 | 2012-07-17 |  |  |  |  |
| A1480 |  | HVAC Works | 35d | 2012-05-23 | 2012-06-27 | A1180, A350 | 20d |  | 533,299 |
| A1380 |  | Fire Fighting Works | 35d | 2012-06-12 | 2012-07-17 | A1280 | 0d |  | 2,272,711 |
|  | 2 | **Plumbing Works** |  | 2012-05-23 | 2012-07-17 |  |  |  |  |
| A1420 |  | Supply works | 30d | 2012-05-23 | 2012-06-22 | A350, A1490 | 0d |  | 300,000 |
| A1430 |  | Drainage works | 30d | 2012-06-02 | 2012-07-02 | A1420 SS+10d | 0d |  | 200,000 |
| A1440 |  | Plumbing equipments | 15d | 2012-07-02 | 2012-07-17 | A1430 | 0d |  | 34,883 |

Notes:
- A1280: Expenses: (New Expense Item) 44000
- A1320: Expenses: (New Expense Item) 151735
- A1500: Expenses: (New Expense Item) 222720
- A1300: Expenses: (New Expense Item) 69920
- A1330: Expenses: (New Expense Item) 372798
- A1350: Expenses: (New Expense Item)1 57188; (New Expense Item) 1534500
- A1340: Expenses: (New Expense Item) 693152
- A1450: Expenses: (New Expense Item) 1000000
- A1460: Expenses: (New Expense Item) 800000; (New Expense Item)1 3139
- A1470: Expenses: (New Expense Item) 66499
- A1480: Expenses: (New Expense Item) 533299
- A1380: Expenses: (New Expense Item) 2272711
- A1420: Expenses: (New Expense Item) 300000
- A1430: Expenses: (New Expense Item) 200000
- A1440: Expenses: (New Expense Item) 30581; (New Expense Item)1 4302

## Activity codes

| Code | Value | Meaning |
| --- | --- | --- |
| TYPE OF WORK | arch | arch works |
| TYPE OF WORK | civil | civil works |
