# Polaris DC-1 — Aviapolis Data Campus, Vantaa

Schedule from Primavera P6, 2026-03-02 to 2027-11-24, costs in EUR.
Must finish by 2027-11-24

## Resources

| Resource | Group | Rate |
| --- | --- | --- |
| Manufacturing/Vendor | equipment |  |
| Logistics | labor | 60 |
| Electrical | labor | 80 |
| Procurement Management | labor | 95 |
| General | labor | 70 |
| Civil Works | labor | 65 |
| Utilities | labor | 68 |
| Mechanical | labor | 75 |
| MEP | labor | 78 |
| Waterproofing | labor | 60 |
| Concrete | labor | 65 |
| Roofing | labor | 65 |
| Steelwork | labor | 75 |
| Management | labor | 100 |
| Steel Decking | labor | 70 |
| Envelope | labor | 70 |
| Steel Erection | labor | 75 |
| BMS | labor |  |
| Misc. Enclosure | labor | 60 |
| Structural | labor | 72 |
| Cladding/Facade | labor | 70 |
| Fire Protection | labor | 72 |
| Fit-Out | labor | 60 |
| Concrete Works | labor | 65 |
| Mechanical/Electrical | labor | 78 |
| Commissioning | labor | 90 |
| Building Envelope | labor | 68 |
| Electrical Commissioning | labor | 85 |
| Insulation/Roofing | labor | 65 |
| Glazing/Joinery | labor | 60 |
| Electrical / Mechanical | labor |  |
| Mechanical/Electrical Commissioning | labor | 85 |
| Controls | labor | 85 |
| Security | labor | 72 |
| ICT | labor | 75 |
| Design | labor | 85 |
| BMS/Controls | labor | 85 |
| Mechanical Commissioning | labor | 85 |
| Documentation | labor | 70 |
| Training | labor | 75 |
| Project Management | labor |  |
| BMS/ICT | labor | 80 |
| Flooring | labor | 55 |
| Finishes | labor | 55 |
| Fire & Life Safety | labor | 72 |
| Close-Out | labor | 80 |
| Electrical Utility | labor |  |
| Close-out | labor | 80 |

## Schedule

| ID | Activity | Type | Duration | Start | Finish | Predecessors | Total float | Resources | Cost |
| --- | --- | --- | --- | --- | --- | --- | --- | --- | --- |
| 100 | Transformer T1 & T2 Delivery (~mid-Feb 2027) |  | 225d | 2026-03-02 | 2027-01-08 | 2 | 94d | Electrical [10800 h] | 5,064,000 |
| 2 | 110 kV Transformers — Order Placed (PRE-COMMENCEMENT: 16 Jan 2026 — STATED ASSUMPTION) | milestone | 0d | 2026-03-02 | 2026-03-02 | 239 SS | 94d | Manufacturing/Vendor |  |
| 239 | Design Team Mobilization & Kick-off Meeting |  | 5d | 2026-03-02 | 2026-03-06 |  | 0d |  |  |
| 3 | Advance Procurement Letter (16 Jan 2026 — EMPLOYER RISK if not placed pre-commencement) | milestone | 0d | 2026-03-02 | 2026-03-02 | 239 SS | 453d | Logistics |  |
| 240 | Pre-Application Meeting with City Planning Authority (Vantaa) |  | 3d | 2026-03-09 | 2026-03-11 | 239 | 425d |  |  |
| 242 | S1 Design Development — Hall 1, Substation, Generators, Cooling Spine, Gatehouse |  | 30d | 2026-03-09 | 2026-04-17 | 239 | 0d |  |  |
| 1 | Procurement Strategy & Package Finalisation |  | 8d | 2026-03-23 | 2026-04-01 | 242 SS+10d | 22d | Procurement Management [64 h] | 6,080 |
| 22 | Site Handover, Boundary Survey & Setting Out |  | 3d | 2026-03-23 | 2026-03-25 | 242 SS+10d | 13d | General [96 h] | 6,720 |
| 23 | Temporary Site Facilities, Security Fencing & Compound Setup |  | 5d | 2026-03-26 | 2026-04-01 | 22 | 13d | General [480 h] | 33,600 |
| 18 | Envelope / Precast Concrete Panels — Engineering & Production (All Halls) |  | 70d | 2026-04-02 | 2026-07-08 | 1 | 319d | Manufacturing/Vendor [560 h] | 3,800,000 |
| 24 | Key Subcontractor Mobilisation |  | 5d | 2026-04-02 | 2026-04-08 | 23 | 13d | General [40 h] | 2,800 |
| 8 | Dry Cooler Order (22-wk lead — order-by 18 Sep 2026) |  | 110d | 2026-04-02 | 2026-09-02 | 1 | 182d | Logistics [880 h] | 52,800 |
| 246 | S2 Design Development — Hall 2 + Associated Plant |  | 20d | 2026-04-06 | 2026-05-01 | 242 SS+20d | 338d |  |  |
| 25 | Site Clearance — Vegetation & Existing Structures |  | 5d | 2026-04-09 | 2026-04-15 | 24 | 13d | Civil Works [640 h] | 41,600 |
| 26 | Contaminated Material Removal & Disposal |  | 5d | 2026-04-16 | 2026-04-22 | 25 | 13d | Civil Works [240 h] | 15,600 |
| 11 | Envelope/Cladding/Precast Panel Order (16-wk lead — order-by 22 May 2026) |  | 130d | 2026-04-20 | 2026-10-16 | 242 | 250d | Manufacturing/Vendor [1040 h] |  |
| 12 | Raised Floor System Order (8-wk lead) |  | 60d | 2026-04-20 | 2026-07-10 | 242 | 312d | Logistics [480 h] | 28,800 |
| 14 | BMS/DCIM Hardware Order (16-wk lead — order-by 11 Dec 2026) |  | 100d | 2026-04-20 | 2026-09-04 | 242 | 243d | Logistics [800 h] | 48,000 |
| 243 | S1 Design — Engineer Review (14 calendar days per SP-20) |  | 10d | 2026-04-20 | 2026-05-01 | 242 | 6d |  |  |
| 259 | Crane Clearance Applications — Fintraffic/Finavia (21-day lead per crane position) |  | 21d | 2026-04-20 | 2026-05-18 | 242 | 139d |  |  |
| 4 | MV Switchgear Order (38-wk lead — order-by 8 May 2026) |  | 190d | 2026-04-20 | 2027-01-08 | 242 | 94d | Manufacturing/Vendor [1520 h] |  |
| 5 | Standby Generator Order (40-wk lead — order-by 8 May 2026) |  | 200d | 2026-04-20 | 2027-01-22 | 242 | 77d | Logistics [1600 h] | 96,000 |
| 6 | UPS Modules Order (30-wk lead — order-by 31 Jul 2026) |  | 200d | 2026-04-20 | 2027-01-22 | 242 | 206d | Manufacturing/Vendor [1600 h] |  |
| 7 | Chiller Order (26-wk lead — order-by 7 Aug 2026) |  | 130d | 2026-04-20 | 2026-10-16 | 242 | 270d | Logistics [1040 h] | 62,400 |
| 9 | CRAH Units Order (22-wk lead — order-by 16 Oct 2026) |  | 150d | 2026-04-20 | 2026-11-13 | 242 | 250d | Manufacturing/Vendor [1200 h] |  |
| 27 | Utility Diversions and Temporary Services |  | 5d | 2026-04-23 | 2026-04-29 | 26 | 13d | Utilities [640 h] | 43,520 |
| 250 | S3 Design Development — Hall 3 + Associated Plant |  | 20d | 2026-04-27 | 2026-05-22 | 246 SS+15d | 338d |  |  |
| 28 | Bulk Earthworks, Rough Grading & Platform Formation |  | 10d | 2026-04-30 | 2026-05-13 | 27 | 13d | Civil Works [2880 h] | 187,200 |
| 10 | Structural Steel Tender & Award (18-wk, order-by 10 Apr 2026) |  | 90d | 2026-05-04 | 2026-09-04 | 1, 242 FS+10d | 0d | Logistics [720 h] | 43,200 |
| 244 | S1 Design — Comment Resolution & Resubmission |  | 10d | 2026-05-04 | 2026-05-15 | 243 | 6d |  |  |
| 247 | S2 Design — Engineer Review (21 calendar days per SP-20) |  | 15d | 2026-05-04 | 2026-05-22 | 246 | 368d |  |  |
| 34 | District Heating Boundary Trenching, Ducting & Pipe Installation |  | 10d | 2026-05-14 | 2026-05-27 | 28 | 383d | Mechanical [1280 h] | 96,000 |
| 245 | S1 Design — Final Approval & IFC Release |  | 5d | 2026-05-18 | 2026-05-22 | 244 | 6d |  |  |
| 254 | S4 Design Development — Hall 4, Admin/NOC, External Works |  | 25d | 2026-05-18 | 2026-06-19 | 250 SS+15d | 338d |  |  |
| 15 | Fire Suppression Equipment Order (20-wk lead — order-by 6 Nov 2026) |  | 100d | 2026-05-25 | 2026-10-09 | 1, 245 | 195d | Manufacturing/Vendor [800 h] |  |
| 241 | Building Permit Preparation & Submission |  | 20d | 2026-05-25 | 2026-06-19 | 240, 245 | 373d |  |  |
| 248 | S2 Design — Comment Resolution & Resubmission |  | 10d | 2026-05-25 | 2026-06-05 | 247 | 368d |  |  |
| 251 | S3 Design — Engineer Review (14 calendar days) |  | 10d | 2026-05-25 | 2026-06-05 | 250 | 358d |  |  |
| 36 | Dewatering System Installation (S1 Area) |  | 3d | 2026-05-25 | 2026-05-27 | 28, 245 | 6d | Civil Works [192 h] | 12,480 |
| 35 | District Heating Connection to Building (by 31 Aug 2027) |  | 5d | 2026-05-28 | 2026-06-03 | 34 | 383d | Mechanical [240 h] | 18,000 |
| 37 | Hall 1 – CFA Piling Works |  | 28d | 2026-05-28 | 2026-07-06 | 36 | 6d | Civil Works [1792 h] | 116,480 |
| 39 | Substation – CFA Piling Works |  | 22d | 2026-05-28 | 2026-06-26 | 36 | 13d | Civil Works [1408 h] | 91,520 |
| 41 | Generator Compound – CFA Piling Works |  | 22d | 2026-05-28 | 2026-06-26 | 36 | 13d | Civil Works [1408 h] | 91,520 |
| 43 | Gatehouse – CFA Piling Works |  | 22d | 2026-05-28 | 2026-06-26 | 36 | 13d | Civil Works [704 h] | 45,760 |
| 45 | Cooling Spine – CFA Piling Works |  | 22d | 2026-05-28 | 2026-06-26 | 36 | 363d | Civil Works [1408 h] | 91,520 |
| 249 | S2 Design — Final Approval & IFC Release |  | 5d | 2026-06-08 | 2026-06-12 | 248 | 368d |  |  |
| 252 | S3 Design — Comment Resolution & Resubmission |  | 10d | 2026-06-08 | 2026-06-19 | 251 | 358d |  |  |
| 253 | S3 Design — Final Approval & IFC Release |  | 5d | 2026-06-22 | 2026-06-26 | 252 | 358d |  |  |
| 255 | S4 Design — Engineer Review (14 calendar days) |  | 10d | 2026-06-22 | 2026-07-03 | 254 | 338d |  |  |
| 32 | Electrical Duct Bank — S1 Area |  | 5d | 2026-06-29 | 2026-07-03 | 45 | 363d | Utilities [240 h] | 16,320 |
| 33 | District Heating Trenching — S1 Area |  | 5d | 2026-06-29 | 2026-07-03 | 45 | 363d | Electrical [640 h] | 51,200 |
| 40 | Substation – Piling Load Testing |  | 4d | 2026-06-29 | 2026-07-02 | 39 | 13d | Civil Works [96 h] | 6,240 |
| 42 | Generator Compound – Piling Load Testing |  | 4d | 2026-06-29 | 2026-07-02 | 41 | 13d | Civil Works [96 h] | 6,240 |
| 44 | Gatehouse – Piling Load Testing |  | 4d | 2026-06-29 | 2026-07-02 | 43 | 13d | Civil Works [96 h] | 6,240 |
| 29 | Stormwater Drainage — S1 Area |  | 8d | 2026-07-03 | 2026-07-14 | 42 | 356d | Civil Works [1280 h] | 83,200 |
| 30 | Sanitary Sewer — S1 Area |  | 5d | 2026-07-03 | 2026-07-09 | 42 | 359d | Civil Works [640 h] | 41,600 |
| 31 | Water Service — S1 Area |  | 5d | 2026-07-03 | 2026-07-09 | 42 | 359d | Utilities [240 h] | 16,320 |
| 50 | Substation – Foundation Waterproofing & Drainage Layer |  | 4d | 2026-07-03 | 2026-07-08 | 40 | 123d | Civil Works [96 h] | 6,240 |
| 55 | Gatehouse – Foundation Waterproofing & Drainage Layer |  | 4d | 2026-07-03 | 2026-07-08 | 44 | 334d | Civil Works [96 h] | 6,240 |
| 256 | S4 Design — Comment Resolution & Resubmission |  | 10d | 2026-07-06 | 2026-07-17 | 255 | 338d |  |  |
| 38 | Hall 1 – Piling Load Testing & Inspection |  | 5d | 2026-07-07 | 2026-07-13 | 37 | 6d | Civil Works [120 h] | 7,800 |
| 51 | Substation – Foundation Pile Caps & Ground Beams |  | 8d | 2026-07-09 | 2026-07-20 | 50 | 123d | Civil Works [256 h] | 16,640 |
| 19 | Raised Floor System — Manufacturing & Delivery |  | 40d | 2026-07-13 | 2026-09-04 | 12 | 312d | Manufacturing/Vendor [320 h] |  |
| 47 | Hall 1 – Foundation Waterproofing & Drainage Layer |  | 5d | 2026-07-14 | 2026-07-20 | 38 | 105d | Civil Works [160 h] | 10,400 |
| 60 | S1 Underground Service Trenches (under-slab — after piling, before slabs) |  | 10d | 2026-07-14 | 2026-07-27 | 38, 40, 42, 44 | 6d | MEP [640 h] | 49,920 |
| 257 | S4 Design — Final Approval & IFC Release |  | 5d | 2026-07-20 | 2026-07-24 | 256 | 338d |  |  |
| 46 | Cooling Spine – Piling Load Testing |  | 4d | 2026-07-21 | 2026-07-24 | 45, 47 | 348d | Civil Works [96 h] | 6,240 |
| 48 | Hall 1 – Foundation Pile Caps & Ground Beams |  | 10d | 2026-07-21 | 2026-08-03 | 47 | 105d | Civil Works [640 h] | 41,600 |
| 258 | Permit Conditions Compliance Planning & Approvals |  | 10d | 2026-07-27 | 2026-08-07 | 245, 249, 253, 257, 239 FS+5d | 338d |  |  |
| 52 | Substation – Foundation Slab |  | 8d | 2026-07-28 | 2026-08-06 | 51, 60 | 118d | Civil Works [256 h] | 16,640 |

Notes:
- 100: Expenses: Transformer T1 & T2 Delivery (~mid-Feb 2027) 4200000
- 18: Expenses: Envelope / Precast Concrete Panels — Engineering & Production (All Halls) 3800000

| ID | Activity | Duration | Start | Finish | Predecessors | Total float | Resources | Cost |
| --- | --- | --- | --- | --- | --- | --- | --- | --- |
| 56 | Gatehouse – Foundation Pile Caps, Ground Beams & Slab | 6d | 2026-07-28 | 2026-08-04 | 55, 60 | 321d | Civil Works [192 h] | 12,480 |
| 61 | S1 Underground Utility Backfilling & Compaction | 8d | 2026-07-28 | 2026-08-06 | 60 | 6d | Civil Works [384 h] | 24,960 |
| 49 | Hall 1 – Foundation Slab | 10d | 2026-08-04 | 2026-08-17 | 48, 60 | 105d | Civil Works [640 h] | 41,600 |
| 57 | Cooling Spine – Foundation Waterproofing & Drainage Layer | 4d | 2026-08-05 | 2026-08-10 | 56 | 321d | Civil Works [96 h] | 6,240 |
| 138 | Hall 2 — Excavation & Blinding (earthworks crew moves from S1 slab) | 5d | 2026-08-07 | 2026-08-13 | 61 | 6d | Civil Works [320 h] | 20,800 |
| 53 | Generator Compound – Foundation Waterproofing & Drainage Layer | 4d | 2026-08-07 | 2026-08-12 | 52 | 118d | Civil Works [96 h] | 6,240 |
| 58 | Cooling Spine – Foundation Pile Caps & Ground Beams | 8d | 2026-08-11 | 2026-08-20 | 57 | 321d | Civil Works [256 h] | 16,640 |
| 139 | Hall 2 — Foundation Waterproofing & Drainage Layer | 5d | 2026-08-14 | 2026-08-20 | 138 | 6d | Waterproofing [120 h] | 7,200 |
| 140 | Hall 2 — Pad Footings & Ground Floor Slab | 10d | 2026-08-21 | 2026-09-03 | 139 | 6d | Concrete [960 h] | 62,400 |
| 59 | Cooling Spine – Foundation Slab | 8d | 2026-08-21 | 2026-09-01 | 58, 60, 47 | 321d | Civil Works [256 h] | 16,640 |
| 13 | Dry Coolers — Manufacturing & Delivery (22-wk lead from order) | 110d | 2026-09-03 | 2027-02-03 | 8 | 182d | Manufacturing/Vendor [880 h] |  |
| 147 | Hall 2 — Ground Floor Slab Casting & Curing (earthworks crew released to S3) | 8d | 2026-09-04 | 2026-09-15 | 140 | 6d | Roofing [256 h] | 16,640 |
| 166 | Hall 2 — Chiller & Dry Cooler Plant Installation | 5d | 2026-09-04 | 2026-09-10 | 140 | 229d | Mechanical [160 h] | 12,000 |
| 167 | Hall 2 — Standby Generator Installation | 3d | 2026-09-04 | 2026-09-08 | 140 | 226d | Electrical [96 h] | 7,680 |
| 168 | Hall 2 — UPS System Installation | 3d | 2026-09-04 | 2026-09-08 | 140 | 226d | Electrical [96 h] | 7,680 |
| 17 | Structural Steel — Shop Drawings & Fabrication (All Halls) | 60d | 2026-09-07 | 2026-11-27 | 10 | 0d | Manufacturing/Vendor [480 h] | 5,200,000 |
| 21 | BMS/DCIM Equipment — Tender, Award, Manufacturing & Delivery | 60d | 2026-09-07 | 2026-11-27 | 14 | 243d | Manufacturing/Vendor [480 h] |  |
| 141 | Hall 2 — Steel Base Plates (Gang A continues from S1 — waits for S2 slab) | 8d | 2026-09-16 | 2026-09-25 | 147 | 116d | Steelwork [256 h] | 19,200 |
| 185 | Key Subcontractors Mobilize for Section 3 (earthworks crew released from S2 slab) | 5d | 2026-09-16 | 2026-09-22 | 147 | 6d | Management [320 h] | 32,000 |
| 186 | 9.2 Hall 3 — CFA Piling Works | 22d | 2026-09-23 | 2026-10-22 | 185 | 6d | Civil Works [1408 h] | 91,520 |
| 142 | Hall 2 — Ground Floor Steel Frame Erection (Gang A) | 8d | 2026-09-28 | 2026-10-07 | 141 | 116d | Steelwork [640 h] | 48,000 |
| 143 | Hall 2 — First Floor & Roof Steel Frame Erection (Gang A) | 10d | 2026-10-08 | 2026-10-21 | 142 | 116d | Steelwork [800 h] | 60,000 |
| 20 | Fire Suppression Equipment — Tender, Award, Manufacturing & Delivery | 80d | 2026-10-12 | 2027-01-29 | 15 | 195d | Manufacturing/Vendor [640 h] |  |
| 144 | Hall 2 — 1st Floor Metal Deck Installation | 5d | 2026-10-22 | 2026-10-28 | 143 | 124d | Steel Decking [160 h] | 11,200 |
| 149 | Hall 2 — External Wall Insulation & Cladding | 20d | 2026-10-22 | 2026-11-18 | 143 | 116d | Envelope [1920 h] | 134,400 |
| 187 | 9.3 Hall 3 — Piling Load Testing & Inspection | 5d | 2026-10-23 | 2026-10-29 | 186 | 6d | Civil Works [320 h] | 20,800 |
| 145 | Hall 2 — 1st Floor Concrete Topping | 7d | 2026-10-29 | 2026-11-06 | 144 | 124d | Concrete [336 h] | 21,840 |
| 188 | 9.4a Hall 3 — Foundation Pile Caps & Ground Beams | 10d | 2026-10-30 | 2026-11-12 | 187 | 6d | Civil Works [640 h] | 41,600 |
| 146 | Hall 2 — Surface Area Preparation for Fit-Out (Gang A) | 8d | 2026-11-09 | 2026-11-18 | 145 | 260d | Steelwork [256 h] | 19,200 |
| 189 | Hall 3 — Steel Frame Erection (Gang B starts — independent work front) | 10d | 2026-11-13 | 2026-11-26 | 188 | 22d | Civil Works [640 h] | 41,600 |
| 260 | Hall 4 — Excavation & Blinding (earthworks crew moves from S3) | 5d | 2026-11-13 | 2026-11-19 | 188 | 6d |  |  |
| 16 | CRAH Units — Delivery | 3d | 2026-11-16 | 2026-11-18 | 9 | 250d | Logistics [24 h] | 1,440 |
| 150 | Hall 2 — Window & Door Installation | 10d | 2026-11-19 | 2026-12-02 | 149 | 130d | Envelope [320 h] | 22,400 |
| 151 | Hall 2 — Ground Floor Cable Trays & Containment | 12d | 2026-11-19 | 2026-12-04 | 145, 149 | 116d | Electrical [960 h] | 76,800 |
| 261 | Hall 4 — Foundation Waterproofing & Drainage Layer | 5d | 2026-11-20 | 2026-11-26 | 260 | 6d |  |  |
| 190 | Hall 3 — First Floor & Roof Steel Frame (Gang B) | 10d | 2026-11-27 | 2026-12-10 | 189 | 22d | Civil Works [640 h] | 41,600 |
| 262 | Hall 4 — Ground Floor Pad Footings & Floor Slab | 12d | 2026-11-27 | 2026-12-14 | 261 | 6d |  |  |
| 62 | Hall 1 — Steel Base Plates (Gang A — steel released, crane clearance obtained) | 8d | 2026-11-30 | 2026-12-09 | 61, 17, 259 | 0d | Steel Erection [384 h] | 28,800 |
| 155 | Hall 2 — Cable Trays, LV Switchgear + Distribution (equipment) | 20d | 2026-12-03 | 2026-12-30 | 150 | 130d | Mechanical [1600 h] | 1,070,000 |
| 152 | Hall 2 — First Floor Cable Trays & Containment | 12d | 2026-12-07 | 2026-12-22 | 151 | 116d | Electrical [960 h] | 76,800 |
| 153 | Hall 2 — Ground Floor HVAC Ductwork | 20d | 2026-12-07 | 2027-01-01 | 151 | 128d | Mechanical [1600 h] | 120,000 |
| 157 | Hall 2 — Main LV Switchgear & Distribution Boards | 5d | 2026-12-07 | 2026-12-11 | 151 | 148d | Electrical [160 h] | 12,800 |
| 159 | Hall 2 — Ground Floor Lighting & Small Power | 15d | 2026-12-07 | 2026-12-25 | 151 | 128d | Electrical [1200 h] | 96,000 |
| 162 | Hall 2 — BMS/DCIM Installation & Wiring | 10d | 2026-12-07 | 2026-12-18 | 151 | 158d | BMS [480 h] |  |
| 63 | Hall 1 - Steel Frame Erection - Ground Floor | 8d | 2026-12-10 | 2026-12-21 | 62 | 0d | Steel Erection [384 h] | 28,800 |
| 72 | Hall 1 — Ground Floor Steel Frame Erection (Gang A) | 5d | 2026-12-10 | 2026-12-16 | 62 | 51d | Steel Erection [200 h] | 15,000 |
| 74 | Gatehouse - Superstructure (Steel Frame) | 5d | 2026-12-10 | 2026-12-16 | 62 | 53d | Steel Erection [160 h] | 12,000 |
| 76 | Cooling Spine - Steel Frame / Superstructure | 6d | 2026-12-10 | 2026-12-17 | 62 | 52d | Steel Erection [240 h] | 18,000 |
| 78 | Generator Compound - Enclosure & Finishing | 6d | 2026-12-10 | 2026-12-17 | 62 | 58d | Misc. Enclosure [192 h] | 11,520 |
| 191 | 9.5 Hall 3 — Steel Frame Erection (Ground + First Floor) | 30d | 2026-12-11 | 2027-01-21 | 190 | 22d | Structural [3840 h] | 276,480 |
| 192 | 9.6 Hall 3 — Frame Connection Inspection & QA | 5d | 2026-12-11 | 2026-12-17 | 190 | 47d | Structural [80 h] | 5,760 |
| 158 | Hall 2 — Busbar, PDU & Main Power Feeder Cables | 10d | 2026-12-14 | 2026-12-25 | 157 | 148d | Electrical [800 h] | 64,000 |
| 263 | Hall 4 — Steel Base Plates (Gang B moves from S3) | 8d | 2026-12-15 | 2026-12-24 | 262 | 6d |  |  |
| 269 | Admin/NOC — Piling Works (follows S4 substructure) | 15d | 2026-12-15 | 2027-01-04 | 262 | 33d |  |  |
| 73 | Hall 1 — First Floor & Roof Steel Frame Erection (Gang A) | 8d | 2026-12-17 | 2026-12-28 | 72 | 51d | Cladding/Facade [256 h] | 17,920 |
| 75 | Gatehouse - External Envelope | 6d | 2026-12-17 | 2026-12-24 | 74 | 53d | Cladding/Facade [144 h] | 10,080 |
| 77 | Cooling Spine - Enclosure | 6d | 2026-12-18 | 2026-12-25 | 76 | 52d | Cladding/Facade [192 h] | 13,440 |
| 64 | Hall 1 - Steel Frame Erection - 1st Floor | 15d | 2026-12-22 | 2027-01-11 | 63 | 0d | Steel Erection [720 h] | 54,000 |
| 154 | Hall 2 — First Floor HVAC Ductwork | 20d | 2026-12-23 | 2027-01-19 | 152 | 116d | Mechanical [1600 h] | 120,000 |
| 264 | Hall 4 — Ground Floor Steel Frame Erection (Gang B) | 8d | 2026-12-25 | 2027-01-05 | 263 | 6d |  |  |
| 160 | Hall 2 — First Floor Lighting & Small Power | 15d | 2026-12-28 | 2027-01-15 | 152, 159 | 128d | Electrical [1200 h] | 96,000 |
| 169 | Hall 2 — Generator & UPS Connections (Power and Controls) | 5d | 2026-12-28 | 2027-01-01 | 167, 168, 158 | 148d | Electrical [200 h] | 16,000 |
| 94 | Hall 1 — Cable Trays & Containment - Ground Floor | 15d | 2026-12-29 | 2027-01-18 | 73 | 111d | Fire Protection [480 h] | 34,560 |
| 161 | Hall 2 — VESDA Fire Detection & Gas Suppression Installation | 20d | 2027-01-04 | 2027-01-29 | 153 | 128d | Fire Protection [1280 h] | 92,160 |
| 163 | Hall 2 — Ground Floor Raised Access Flooring | 10d | 2027-01-04 | 2027-01-15 | 159, 153 | 128d | Fit-Out [640 h] | 38,400 |
| 270 | Admin/NOC — Piling Load Testing | 5d | 2027-01-05 | 2027-01-11 | 269 | 33d |  |  |
| 95 | Hall 1 - Cable Trays & Containment - First Floor | 20d | 2027-01-05 | 2027-02-01 | 94 SS+5d, 73 | 111d | Fire Protection [640 h] | 46,080 |
| 265 | Hall 4 — First Floor & Roof Steel Frame Erection (Gang B) | 12d | 2027-01-06 | 2027-01-21 | 264 | 6d |  |  |
| 99 | Substation — MV Switchgear Installation & Connection | 5d | 2027-01-11 | 2027-01-15 | 100, 4 | 94d | Electrical [160 h] | 3,812,800 |
| 271 | Admin/NOC — Foundation, Ground Beams & Slab (RC Frame) | 12d | 2027-01-12 | 2027-01-27 | 270 | 33d |  |  |

Notes:
- 17: Expenses: Structural Steel — Shop Drawings & Fabrication (All Halls) 5200000
- 155: Expenses: Hall 2 — Cable Trays, LV Switchgear + Distribution (equipment) 950000
- 99: Expenses: Substation — MV Switchgear Installation & Connection 3800000

| ID | Activity | Type | Duration | Start | Finish | Predecessors | Total float | Resources | Cost |
| --- | --- | --- | --- | --- | --- | --- | --- | --- | --- |
| 65 | Hall 1 - 1st Floor Metal Deck Installation |  | 10d | 2027-01-12 | 2027-01-25 | 64, 49 | 0d | Steel Decking [320 h] | 22,400 |
| 165 | Hall 2 — CRAH Unit Installation |  | 8d | 2027-01-18 | 2027-01-27 | 163, 155 | 130d | Mechanical [256 h] | 19,200 |
| 156 | Hall 2 — First Floor Chilled Water & CRAH Piping |  | 20d | 2027-01-20 | 2027-02-16 | 154, 155 | 116d | Mechanical [1600 h] | 120,000 |
| 164 | Hall 2 — First Floor Raised Access Flooring |  | 10d | 2027-01-20 | 2027-02-02 | 160, 154, 163 | 126d | Fit-Out [640 h] | 38,400 |
| 193 | Hall 3 — 1st Floor Metal Deck, Concrete Topping & Curing |  | 15d | 2027-01-22 | 2027-02-11 | 191, 192 | 22d | Structural [1440 h] | 103,680 |
| 266 | Hall 4 — First Floor Metal Deck, Concrete Topping & Curing |  | 15d | 2027-01-22 | 2027-02-11 | 265 | 104d |  |  |
| 268 | Hall 4 — External Wall Insulation & Composite Cladding |  | 22d | 2027-01-22 | 2027-02-22 | 265 | 6d |  |  |
| 66 | Hall 1 - 1st Floor Concrete Topping & Curing |  | 15d | 2027-01-26 | 2027-02-15 | 65, 53 | 0d | Concrete Works [600 h] | 39,000 |
| 70 | Hall 1 — Steel Frame + Precast Cladding Materials |  | 25d | 2027-01-26 | 2027-03-01 | 65, 18 FS+5d | 189d | Cladding/Facade [1200 h] | 2,884,000 |
| 272 | Admin/NOC — RC Frame Construction (Ground + First Floor + Precast) |  | 30d | 2027-01-28 | 2027-03-10 | 271 | 33d |  |  |
| 194 | 9.6 Hall 3 — Cable Trays & Containment - Ground Floor (MEP Crew B starts) |  | 8d | 2027-02-12 | 2027-02-23 | 193 | 22d | Structural [640 h] | 46,080 |
| 101 | Substation — Generator Units G01-G08 Installation |  | 12d | 2027-02-16 | 2027-03-03 | 66, 5 | 61d | Mechanical/Electrical [768 h] | 2,259,904 |
| 67 | Hall 1 - Roof Steelwork |  | 8d | 2027-02-16 | 2027-02-25 | 66 | 0d | Steel Erection [384 h] | 28,800 |
| 170 | Hall 2 — CRAH Units + Chillers + Generator (equipment supply) |  | 5d | 2027-02-17 | 2027-02-23 | 164, 165, 166, 169, 156, 161, 162 | 116d | Commissioning [120 h] | 1,210,800 |
| 267 | Hall 4 — Roof Insulation & Finishing (Gang B) |  | 16d | 2027-02-23 | 2027-03-16 | 266, 268 | 97d |  |  |
| 275 | Hall 4 — Cable Trays & Containment (MEP Crew B moves from S3) |  | 20d | 2027-02-23 | 2027-03-22 | 268 | 6d |  |  |
| 299 | External Works — Access Road + Car Parking (materials) |  | 10d | 2027-02-23 | 2027-03-08 | 268 | 108d |  | 900,000 |
| 171 | Hall 2 — HVAC Commissioning, Balancing & Air Volume Testing |  | 10d | 2027-02-24 | 2027-03-09 | 170 | 116d | Commissioning [240 h] | 21,600 |
| 172 | Hall 2 — Electrical Systems Testing & Functional Checks |  | 8d | 2027-02-24 | 2027-03-05 | 170 | 118d | Commissioning [192 h] | 17,280 |
| 173 | Hall 2 — Fire Alarm Integrated Testing |  | 5d | 2027-02-24 | 2027-03-02 | 170 | 121d | Commissioning [80 h] | 7,200 |
| 174 | Hall 2 — Gas Suppression Commissioning |  | 5d | 2027-02-24 | 2027-03-02 | 170 | 121d | Fire Protection [80 h] | 5,760 |
| 195 | 9.7 Hall 3 — Cable Trays & Containment - First Floor (MEP Crew B) |  | 13d | 2027-02-24 | 2027-03-12 | 194 | 22d | Building Envelope [832 h] | 56,576 |
| 103 | Cooling Spine — Chiller Units 1-4 Installation |  | 10d | 2027-02-26 | 2027-03-11 | 67, 7 | 176d | Mechanical [640 h] | 48,000 |
| 68 | Hall 1 - Roof Waterproofing Membrane Installation |  | 8d | 2027-02-26 | 2027-03-09 | 67 | 0d | Waterproofing [256 h] | 15,360 |
| 196 | 9.8 Hall 3 — HVAC Ductwork - Ground Floor (MEP Crew B) |  | 20d | 2027-03-03 | 2027-03-30 | 195 SS+5d, 193 SS+10d | 22d | Building Envelope [1280 h] | 87,040 |
| 102 | Substation — UPS Module Installation (4 modules) |  | 6d | 2027-03-04 | 2027-03-11 | 101, 6 | 178d | Electrical [384 h] | 1,830,720 |
| 120 | MV Switchgear Commissioning – Functional Tests |  | 8d | 2027-03-04 | 2027-03-15 | 101, 99 | 61d | Electrical Commissioning [64 h] | 5,440 |
| 300 | External Works — Car Parking Construction |  | 8d | 2027-03-09 | 2027-03-18 | 299 | 108d |  |  |
| 175 | Hall 2 — BMS Integrated Functional Testing |  | 8d | 2027-03-10 | 2027-03-19 | 173, 174, 171, 172 | 116d | Commissioning [192 h] | 17,280 |
| 176 | Grid Connection & Permanent Power Energization (S2 — 30 Jun 2027 target) | milestone | 0d | 2027-03-10 | 2027-03-10 | 172, 171 | 124d | Electrical |  |
| 69 | Hall 1 - Roof Thermal Insulation & Finishing |  | 5d | 2027-03-10 | 2027-03-16 | 68 | 178d | Insulation/Roofing [160 h] | 10,400 |
| 79 | Phase 6 - Start MEP First Fix & Plant Installation | milestone | 0d | 2027-03-10 | 2027-03-10 | 68, 78, 73, 75, 77 | 0d | Management |  |
| 80 | Hall 1 - Cable Trays, Conduits & Containment - Ground Floor |  | 15d | 2027-03-10 | 2027-03-30 | 79 | 0d | Electrical [960 h] | 76,800 |
| 273 | Admin/NOC — Roof Waterproofing, Insulation & Finishing |  | 12d | 2027-03-11 | 2027-03-26 | 272 | 33d |  |  |
| 121 | Transformer T1 Commissioning |  | 8d | 2027-03-16 | 2027-03-25 | 120 | 61d | Electrical Commissioning [64 h] | 5,440 |
| 71 | Hall 1 - Windows & Doors Installation |  | 3d | 2027-03-17 | 2027-03-19 | 70, 69 | 178d | Glazing/Joinery [96 h] | 5,760 |
| 301 | External Works — Perimeter Fencing & Security Gates |  | 10d | 2027-03-19 | 2027-04-01 | 300 | 108d |  |  |
| 177 | Hall 2 — L4 Integrated Systems Test |  | 14d | 2027-03-22 | 2027-04-08 | 175, 176 | 116d | Commissioning [896 h] | 80,640 |
| 276 | Hall 4 — Main Power Feeder Cables |  | 10d | 2027-03-23 | 2027-04-05 | 275 | 6d |  |  |
| 122 | Transformer T2 Commissioning |  | 8d | 2027-03-26 | 2027-04-06 | 121 | 61d | Electrical Commissioning [64 h] | 5,440 |
| 274 | Admin/NOC — External Envelope, Cladding, Windows, Doors |  | 20d | 2027-03-29 | 2027-04-23 | 273 | 33d |  | 1,800,000 |
| 197 | 9.8b Hall 3 — External Composite Cladding/Facade (Gang B) |  | 40d | 2027-03-31 | 2027-05-25 | 196, 195 | 111d | Building Envelope [3200 h] | 217,600 |
| 198 | Hall 3 — Cable Trays, Conduits & Containment — Ground Floor |  | 15d | 2027-03-31 | 2027-04-20 | 196 | 22d | Electrical [960 h] | 76,800 |
| 202 | Hall 3 — Cable Trays, Conduits & Containment — First Floor |  | 15d | 2027-03-31 | 2027-04-20 | 196 | 22d | Electrical [960 h] | 76,800 |
| 208 | 9.20 Hall 3 — LV Switchgear, Distribution Boards & Sub-Boards |  | 12d | 2027-03-31 | 2027-04-15 | 196 | 80d | Electrical [768 h] | 61,440 |
| 219 | 9.17 Hall 3 — Chiller & Dry Cooler Plant Installation |  | 10d | 2027-03-31 | 2027-04-13 | 196 | 82d | Mechanical [640 h] | 48,000 |
| 220 | 9.18 Hall 3 — Standby Generator Installation |  | 5d | 2027-03-31 | 2027-04-06 | 196 | 87d | Electrical / Mechanical [320 h] |  |
| 221 | 9.19 Hall 3 — UPS System Installation |  | 5d | 2027-03-31 | 2027-04-06 | 196 | 87d | Electrical [320 h] | 25,600 |
| 302 | External Works — External Lighting Installation |  | 8d | 2027-04-02 | 2027-04-13 | 301 | 108d |  |  |
| 277 | Hall 4 — HVAC Ductwork (MEP Crew B) |  | 25d | 2027-04-06 | 2027-05-10 | 276, 268 SS+5d | 6d |  |  |
| 289 | Hall 4 — Lighting & Small Power (Ground + First Floor) |  | 20d | 2027-04-06 | 2027-05-03 | 276 | 100d |  |  |
| 123 | Generator G01-G04 Commissioning |  | 8d | 2027-04-07 | 2027-04-16 | 122 | 61d | Mechanical/Electrical Commissioning [64 h] | 5,440 |
| 81 | Hall 1 - Cable Trays, Conduits & Containment - First Floor |  | 15d | 2027-04-07 | 2027-04-27 | 80 FS+5d | 0d | Electrical [960 h] | 76,800 |
| 178 | Hall 2 — 24-Hour Full-Load Bank Test (L5) |  | 7d | 2027-04-09 | 2027-04-19 | 177 | 116d | Commissioning [448 h] | 40,320 |
| 278 | Hall 4 — Chilled Water & CRAH Piping (Ground + First Floor) |  | 25d | 2027-04-13 | 2027-05-17 | 277 SS+5d, 268 SS+5d | 6d |  |  |
| 303 | External Works — Landscaping (materials/planting) |  | 15d | 2027-04-14 | 2027-05-04 | 302 | 108d |  | 400,000 |
| 124 | Generator G05-G08 Commissioning |  | 8d | 2027-04-19 | 2027-04-28 | 123 | 61d | Mechanical/Electrical Commissioning [64 h] | 5,440 |
| 179 | Hall 2 — Failure-Mode Demonstrations |  | 3d | 2027-04-20 | 2027-04-22 | 178 | 116d | Commissioning [96 h] | 8,640 |
| 199 | Hall 3 — HVAC Ductwork — Ground Floor |  | 15d | 2027-04-21 | 2027-05-11 | 198 | 22d | Mechanical [960 h] | 72,000 |
| 203 | Hall 3 — HVAC Ductwork — First Floor |  | 15d | 2027-04-21 | 2027-05-11 | 202 | 22d | Mechanical [960 h] | 72,000 |
| 209 | 9.21 Hall 3 — BMS/BAS Installation & Programming |  | 10d | 2027-04-21 | 2027-05-04 | 198, 202 | 67d | Controls [480 h] | 40,800 |
| 210 | 9.22 Hall 3 — Fire Alarm & Detection System |  | 15d | 2027-04-21 | 2027-05-11 | 198, 202 | 62d | Fire Protection [720 h] | 51,840 |
| 211 | 9.23 Hall 3 — Security, Access Control & CCTV |  | 10d | 2027-04-21 | 2027-05-04 | 198, 202 | 67d | Security [480 h] | 34,560 |
| 212 | 9.24 Hall 3 — Data, Communications & AV Cabling |  | 10d | 2027-04-21 | 2027-05-04 | 198, 202 | 67d | ICT [480 h] | 36,000 |
| 213 | Hall 3 — Lighting & Small Power — Ground Floor |  | 15d | 2027-04-21 | 2027-05-11 | 198 | 52d | Electrical [960 h] | 76,800 |
| 214 | Hall 3 — Lighting & Small Power — First Floor |  | 15d | 2027-04-21 | 2027-05-11 | 202 | 52d | Electrical [960 h] | 76,800 |
| 180 | Hall 2 — Punch List Rectification Works |  | 10d | 2027-04-23 | 2027-05-06 | 179 | 116d | General [640 h] | 44,800 |
| 291 | Admin/NOC — MEP Rough-In (Cable Trays, Conduits, Ductwork, Piping) |  | 25d | 2027-04-26 | 2027-05-28 | 274 | 33d |  |  |
| 82 | Hall 1 — Cable Trays & Containment - Ground Floor (MEP Crew A) |  | 20d | 2027-04-28 | 2027-05-25 | 81 | 0d | Mechanical [1280 h] | 96,000 |
| 87 | Hall 1 - Busbar & PDU Installation - First Floor |  | 10d | 2027-04-28 | 2027-05-11 | 81 | 25d | Electrical [320 h] | 25,600 |

Notes:
- 70: Expenses: Hall 1 — Steel Frame + Precast Cladding Materials 2800000
- 101: Expenses: Substation — Generator Units G01-G08 Installation 2200000
- 170: Expenses: Hall 2 — CRAH Units + Chillers + Generator (equipment supply) 1200000
- 299: Expenses: External Works — Access Road + Car Parking (materials) 900000
- 102: Expenses: Substation — UPS Module Installation (4 modules) 1800000
- 274: Expenses: Admin/NOC — External Envelope, Cladding, Windows, Doors 1800000
- 303: Expenses: External Works — Landscaping (materials/planting) 400000

| ID | Activity | Type | Duration | Start | Finish | Predecessors | Total float | Resources | Cost |
| --- | --- | --- | --- | --- | --- | --- | --- | --- | --- |
| 125 | UPS Module 1-2 Commissioning |  | 8d | 2027-04-29 | 2027-05-10 | 124 | 61d | Electrical Commissioning [64 h] | 5,440 |
| 288 | Hall 4 — Security, Access Control & CCTV |  | 10d | 2027-05-04 | 2027-05-17 | 289 | 100d |  |  |
| 304 | External Works — Fibre Duct Connection to Site Boundary |  | 5d | 2027-05-05 | 2027-05-11 | 303 | 108d |  |  |
| 83 | Hall 1 - HVAC Ductwork - First Floor |  | 20d | 2027-05-05 | 2027-06-01 | 82 SS+5d | 0d | Mechanical [1280 h] | 96,000 |
| 181 | Hall 2 — As-Built Drawings & BIM Model Finalization |  | 10d | 2027-05-07 | 2027-05-20 | 180 | 116d | Design [160 h] | 13,600 |
| 126 | UPS Module 3-4 Commissioning |  | 8d | 2027-05-11 | 2027-05-20 | 125 | 61d | Electrical Commissioning [64 h] | 5,440 |
| 290 | Hall 4 — Raised Access Flooring (Ground + First Floor) |  | 15d | 2027-05-11 | 2027-05-31 | 277 | 43d |  |  |
| 200 | Hall 3 — Chilled Water Pipework — Ground Floor |  | 15d | 2027-05-12 | 2027-06-01 | 199 | 22d | Mechanical [960 h] | 72,000 |
| 204 | Hall 3 — Chilled Water Pipework — First Floor |  | 15d | 2027-05-12 | 2027-06-01 | 203 | 22d | Mechanical [960 h] | 72,000 |
| 89 | Hall 1 - Lighting Installation - Ground Floor |  | 15d | 2027-05-12 | 2027-06-01 | 87 | 25d | Electrical [960 h] | 76,800 |
| 96 | Hall 1 - HVAC Ductwork - Ground Floor |  | 20d | 2027-05-12 | 2027-06-08 | 82 SS+10d, 73 | 78d | Fire Protection [640 h] | 46,080 |
| 279 | Hall 4 — Fire Sprinkler System (Ground + First Floor) |  | 15d | 2027-05-18 | 2027-06-07 | 278 | 38d |  |  |
| 280 | Hall 4 — Mechanical Insulation (Pipes & Ducts) |  | 15d | 2027-05-18 | 2027-06-07 | 278 | 6d |  |  |
| 287 | Hall 4 — Fire Alarm & Detection System |  | 15d | 2027-05-18 | 2027-06-07 | 288 | 100d |  |  |
| 97 | Hall 1 - HVAC Ductwork - First Floor |  | 10d | 2027-05-19 | 2027-06-01 | 96 SS+5d | 78d | BMS/Controls [320 h] | 27,200 |
| 127 | Chiller Unit 1-2 Commissioning |  | 10d | 2027-05-21 | 2027-06-03 | 126 | 61d | Mechanical Commissioning [80 h] | 6,800 |
| 182 | Hall 2 — O&M Manuals Compilation |  | 8d | 2027-05-21 | 2027-06-01 | 181 | 116d | Documentation [128 h] | 8,960 |
| 292 | Admin/NOC — LV Switchgear, Distribution Boards |  | 8d | 2027-05-31 | 2027-06-09 | 291 | 50d |  |  |
| 293 | Admin/NOC — Lighting, Small Power, Fire Alarm, Security |  | 20d | 2027-05-31 | 2027-06-25 | 291 | 38d |  |  |
| 294 | Admin/NOC — HVAC, Plumbing & Sanitary |  | 25d | 2027-05-31 | 2027-07-02 | 291 | 33d |  |  |
| 183 | Hall 2 — Client & FM Team Training |  | 5d | 2027-06-02 | 2027-06-08 | 182 | 116d | Training [80 h] | 6,000 |
| 201 | Hall 3 — Fire Sprinkler System — Ground Floor |  | 10d | 2027-06-02 | 2027-06-15 | 200 | 22d | Fire Protection [480 h] | 34,560 |
| 205 | 9.11 Hall 3 — LV Switchgear + Distribution Boards (equipment) |  | 10d | 2027-06-02 | 2027-06-15 | 204 | 22d | Fire Protection [480 h] | 984,560 |
| 215 | 9.17 Hall 3 — Chiller & Dry Cooler + Generator Plant (equipment supply) |  | 8d | 2027-06-02 | 2027-06-11 | 200 | 29d | Mechanical [384 h] | 1,228,800 |
| 216 | 9.16 Hall 3 — CRAH Unit Installation — First Floor |  | 8d | 2027-06-02 | 2027-06-11 | 204 | 29d | Mechanical [384 h] | 28,800 |
| 84 | Hall 1 - Chilled Water & CRAH Distribution Piping - Ground Floor |  | 20d | 2027-06-02 | 2027-06-29 | 83, 82 | 0d | Mechanical [1280 h] | 96,000 |
| 90 | Hall 1 - Lighting Installation - First Floor |  | 15d | 2027-06-02 | 2027-06-22 | 89 | 25d | Electrical [960 h] | 76,800 |
| 98 | Hall 1 - Chilled Water & CRAH Distribution Piping |  | 10d | 2027-06-02 | 2027-06-15 | 96 SS+5d, 97 | 78d | BMS/Controls [320 h] | 27,200 |
| 128 | Chiller Unit 3-4 Commissioning |  | 10d | 2027-06-04 | 2027-06-17 | 127 | 61d | Mechanical Commissioning [80 h] | 6,800 |
| 281 | Hall 4 — CRAH Unit Installation (Ground + First Floor) |  | 10d | 2027-06-08 | 2027-06-21 | 280 | 6d |  |  |
| 286 | Hall 4 — BMS/BAS Installation & Programming |  | 12d | 2027-06-08 | 2027-06-23 | 287 | 100d |  |  |
| 107 | VESDA Central Panel & Gas Suppression Cylinder Installation (Hall 1) |  | 10d | 2027-06-09 | 2027-06-22 | 95, 96 | 111d | Fire Protection [240 h] | 797,280 |
| 148 | Hall 2 — Roof Steelwork, Waterproofing & Insulation (Gang A) |  | 5d | 2027-06-09 | 2027-06-15 | 146, 155, 184 | 116d | Roofing [160 h] | 10,400 |
| 184 | Hall 2 — Handover & Certificate of Sectional Completion | milestone | 0d | 2027-06-09 | 2027-06-09 | 183, 150 | 116d | Project Management |  |
| 85 | Hall 1 - Chilled Water & CRAH Distribution Piping - First Floor |  | 20d | 2027-06-09 | 2027-07-06 | 84 SS+5d | 0d | Mechanical [1280 h] | 96,000 |
| 105 | Chilled Water Spine Piping (Hall 1 section + future provision) |  | 15d | 2027-06-16 | 2027-07-06 | 98, 16, 21 | 101d | Mechanical [960 h] | 72,000 |
| 106 | BMS/DCIM Central Controllers, Servers & Backbone Cabling |  | 10d | 2027-06-16 | 2027-06-29 | 98 | 106d | BMS/ICT [320 h] | 675,600 |
| 108 | Cooling Spine — Chiller Units 1-4 Installation |  | 10d | 2027-06-16 | 2027-06-29 | 98, 11 | 78d | Flooring [80 h] | 1,604,400 |
| 206 | 9.15 Hall 3 — Mechanical Insulation (Pipes & Ducts) |  | 15d | 2027-06-16 | 2027-07-06 | 201, 205 | 22d | Mechanical [960 h] | 72,000 |
| 217 | Hall 3 — Raised Access Flooring — Ground Floor |  | 10d | 2027-06-16 | 2027-06-29 | 215, 201, 213 | 27d | Finishes [800 h] | 44,000 |
| 218 | Hall 3 — Raised Access Flooring — First Floor |  | 10d | 2027-06-16 | 2027-06-29 | 216, 205, 214 | 27d | Finishes [800 h] | 44,000 |
| 129 | Dry Cooler Array 1 Commissioning |  | 10d | 2027-06-18 | 2027-07-01 | 128 | 61d | Mechanical Commissioning [80 h] | 6,800 |
| 282 | Hall 4 — Chiller & Dry Cooler Plant Installation (equipment supply) |  | 12d | 2027-06-22 | 2027-07-07 | 268, 281 | 6d |  | 1,200,000 |
| 285 | Hall 4 — LV Switchgear & Distribution Boards (equipment) |  | 10d | 2027-06-24 | 2027-07-07 | 286 | 100d |  | 950,000 |
| 109 | Cooling Spine — Dry Cooler Arrays 1-2 Installation |  | 10d | 2027-06-30 | 2027-07-13 | 108, 13 | 78d | Flooring [80 h] | 954,400 |
| 130 | Dry Cooler Array 2 Commissioning |  | 10d | 2027-07-02 | 2027-07-15 | 129 | 61d | Mechanical Commissioning [80 h] | 6,800 |
| 295 | Admin/NOC — Internal Partitions, Ceilings, Doors & Finishes |  | 20d | 2027-07-05 | 2027-07-30 | 292, 293, 294 | 33d |  |  |
| 207 | 9.11 Hall 3 — Main Power Feeder Cables |  | 10d | 2027-07-07 | 2027-07-20 | 206 | 71d | Electrical [640 h] | 51,200 |
| 222 | 9.28 Hall 3 — Pre-Commissioning Walkdowns & Punch List |  | 5d | 2027-07-07 | 2027-07-13 | 206, 208, 209, 210, 211, 212, 217, 218, 219, 220, 221 | 22d | Commissioning [240 h] | 21,600 |
| 86 | Hall 1 - Busbar & PDU Installation - Ground Floor |  | 10d | 2027-07-07 | 2027-07-20 | 85, 95 | 0d | Electrical [320 h] | 25,600 |
| 283 | Hall 4 — Standby Generator Installation |  | 5d | 2027-07-08 | 2027-07-14 | 282 | 6d |  |  |
| 104 | Cooling Spine — Dry Cooler Arrays 1-2 Installation |  | 8d | 2027-07-14 | 2027-07-23 | 67, 103, 109 | 88d | Mechanical [256 h] | 19,200 |
| 110 | CRAH Unit Installation – Hall 1 Ground Floor |  | 8d | 2027-07-14 | 2027-07-23 | 109, 20 | 78d | Mechanical [64 h] | 4,800 |
| 223 | 9.29 Hall 3 — HVAC Commissioning, Balancing & Air Volume Testing |  | 10d | 2027-07-14 | 2027-07-27 | 222 | 22d | Commissioning [480 h] | 43,200 |
| 224 | 9.30 Hall 3 — Electrical Systems Testing & Functional Checks |  | 8d | 2027-07-14 | 2027-07-23 | 222 | 24d | Commissioning [384 h] | 34,560 |
| 284 | Hall 4 — UPS System Installation |  | 5d | 2027-07-15 | 2027-07-21 | 283, 276 | 6d |  |  |
| 131 | Chilled Water Spine Pressure Testing |  | 5d | 2027-07-16 | 2027-07-22 | 130 | 61d | Mechanical Commissioning [40 h] | 3,400 |
| 88 | Hall 1 - Main Power Feeder Cables |  | 10d | 2027-07-21 | 2027-08-03 | 86, 87 | 81d | Electrical [640 h] | 51,200 |
| 305 | Hall 4 — Pre-Commissioning Walkdowns & Punch List |  | 5d | 2027-07-22 | 2027-07-28 | 290, 279, 267, 284 | 6d |  |  |
| 132 | BMS/DCIM System Integration & Functional Tests |  | 8d | 2027-07-23 | 2027-08-03 | 131 | 61d | Commissioning [64 h] | 5,760 |
| 111 | CRAH Unit Installation – Hall 1 First Floor |  | 8d | 2027-07-26 | 2027-08-04 | 110 | 78d | Mechanical [64 h] | 4,800 |
| 225 | 9.31 Hall 3 — Fire Alarm Integrated Testing |  | 5d | 2027-07-28 | 2027-08-03 | 223, 224 | 22d | Commissioning [160 h] | 14,400 |
| 226 | 9.32 Hall 3 — Sprinkler Commissioning & Hydraulic Testing |  | 5d | 2027-07-28 | 2027-08-03 | 223, 224 | 22d | Commissioning [160 h] | 14,400 |
| 91 | Hall 1 - Small Power Installation - Ground Floor |  | 15d | 2027-07-28 | 2027-08-17 | 90, 86 FS+5d | 0d | Electrical [960 h] | 76,800 |
| 306 | Hall 4 — HVAC Commissioning, Balancing & Air Volume Testing |  | 10d | 2027-07-29 | 2027-08-11 | 305 | 6d |  |  |
| 307 | Hall 4 — Electrical Systems Testing & Functional Checks |  | 8d | 2027-07-29 | 2027-08-09 | 305 | 8d |  |  |
| 296 | Admin/NOC — Raised Flooring & Floor Finishes |  | 10d | 2027-08-02 | 2027-08-13 | 295 | 33d |  |  |
| 133 | VESDA System Functional Testing |  | 5d | 2027-08-04 | 2027-08-10 | 132 | 61d | Fire & Life Safety [40 h] | 2,880 |
| 227 | 9.33 Hall 3 — BMS Integrated Functional Testing |  | 8d | 2027-08-04 | 2027-08-13 | 225, 226 | 22d | Commissioning [384 h] | 34,560 |
| 134 | Gas Suppression Discharge Test |  | 5d | 2027-08-11 | 2027-08-17 | 133 | 61d | Fire & Life Safety [40 h] | 2,880 |

Notes:
- 205: Expenses: 9.11 Hall 3 — LV Switchgear + Distribution Boards (equipment) 950000
- 215: Expenses: 9.17 Hall 3 — Chiller & Dry Cooler + Generator Plant (equipment supply) 1200000
- 107: Expenses: VESDA Central Panel & Gas Suppression Cylinder Installation (Hall 1) 780000
- 106: Expenses: BMS/DCIM Central Controllers, Servers & Backbone Cabling 650000
- 108: Expenses: Cooling Spine — Chiller Units 1-4 Installation 1600000
- 282: Expenses: Hall 4 — Chiller & Dry Cooler Plant Installation (equipment supply) 1200000
- 285: Expenses: Hall 4 — LV Switchgear & Distribution Boards (equipment) 950000
- 109: Expenses: Cooling Spine — Dry Cooler Arrays 1-2 Installation 950000

| ID | Activity | Type | Duration | Start | Finish | Predecessors | Total float | Resources | Cost |
| --- | --- | --- | --- | --- | --- | --- | --- | --- | --- |
| 308 | Hall 4 — Fire Alarm & Sprinkler Commissioning |  | 5d | 2027-08-12 | 2027-08-18 | 307, 306 | 6d |  |  |
| 228 | 9.34 Hall 3 — Integrated Systems Test (L4) |  | 5d | 2027-08-16 | 2027-08-20 | 227 | 22d | Commissioning [400 h] | 36,000 |
| 297 | Admin/NOC — Kitchen & Welfare Facilities Installation |  | 10d | 2027-08-16 | 2027-08-27 | 296 | 33d |  |  |
| 135 | Grid Connection Energization (S1) | milestone | 0d | 2027-08-18 | 2027-08-18 | 134 | 61d | Electrical |  |
| 136 | S1 Punch List, As-Built, O&M Manuals, Training |  | 10d | 2027-08-18 | 2027-08-31 | 135 | 61d | Close-Out [80 h] | 6,400 |
| 92 | Hall 1 - Small Power Installation - First Floor |  | 15d | 2027-08-18 | 2027-09-07 | 91 | 0d | Electrical [960 h] | 76,800 |
| 309 | Hall 4 — BMS Integrated Functional Testing |  | 8d | 2027-08-19 | 2027-08-30 | 308 | 6d |  |  |
| 229 | 9.35 Hall 3 — Black-Building Test (L5) |  | 3d | 2027-08-23 | 2027-08-25 | 228 | 22d | Commissioning [288 h] | 25,920 |
| 230 | 9.36 Grid Connection Energization (S3 — Target 31 Oct 2027) | milestone | 0d | 2027-08-26 | 2027-08-26 | 229 | 32d | Electrical Utility |  |
| 231 | 9.37 Hall 3 — As-Built Drawings & BIM Model Finalization |  | 10d | 2027-08-26 | 2027-09-08 | 229 | 22d | Close-out [160 h] | 12,800 |
| 232 | 9.37 Hall 3 — O&M Manuals Compilation |  | 8d | 2027-08-26 | 2027-09-06 | 229 | 24d | Close-out [128 h] | 10,240 |
| 234 | 9.37 Hall 3 — Client & FM Team Training |  | 5d | 2027-08-26 | 2027-09-01 | 229 | 27d | Close-out [80 h] | 6,400 |
| 298 | Admin/NOC — Commissioning & Handover |  | 10d | 2027-08-30 | 2027-09-10 | 297 | 33d |  |  |
| 310 | Hall 4 — Integrated Systems Test (L4) |  | 5d | 2027-08-31 | 2027-09-06 | 309 | 6d |  |  |
| 311 | Hall 4 — Black-Building Test (L5) |  | 3d | 2027-09-07 | 2027-09-09 | 310 | 6d |  |  |
| 315 | Grid Connection — S4 Energization (Target 31 Jan 2028) | milestone | 0d | 2027-09-07 | 2027-09-07 | 307, 285, 305 FS+5d, 310 | 57d |  |  |
| 93 | Hall 1 - VESDA Fire Detection Installation - Ground Floor |  | 15d | 2027-09-08 | 2027-09-28 | 92 | 0d | Fire Protection [480 h] | 34,560 |
| 235 | 9.38 Hall 3 — Authority Final Inspection |  | 3d | 2027-09-09 | 2027-09-13 | 230, 231, 232, 234 | 22d | Close-out [48 h] | 3,840 |
| 312 | Hall 4 — Failure-Mode Demonstrations |  | 3d | 2027-09-10 | 2027-09-14 | 311 | 6d |  |  |
| 236 | 9.38 Hall 3 — Occupancy Permit Receipt |  | 5d | 2027-09-14 | 2027-09-20 | 235 | 22d | Close-out [40 h] | 3,200 |
| 316 | Hall 4 — Punch List, As-Built Drawings, O&M Manuals |  | 12d | 2027-09-15 | 2027-09-30 | 312 | 6d |  |  |
| 237 | 9.39 Hall 3 — Client Handover, Keys & Documentation |  | 2d | 2027-09-21 | 2027-09-22 | 236 | 22d | Close-out [32 h] | 2,560 |
| 233 | 9.37 Hall 3 — Spare Parts Delivery & Inventory |  | 3d | 2027-09-23 | 2027-09-27 | 237 | 22d | Close-out [48 h] | 3,840 |
| 238 | 9.40 Section 3 Completion — Certificate of Sectional Completion | milestone | 0d | 2027-09-28 | 2027-09-28 | 197, 207, 233 | 22d | Close-out |  |
| 112 | UPS Final Connections |  | 3d | 2027-09-29 | 2027-10-01 | 18, 93 | 0d | Electrical [24 h] | 1,920 |
| 317 | Client & FM Team Training (All Sections) |  | 8d | 2027-10-01 | 2027-10-12 | 316, 304 | 6d |  |  |
| 113 | LV Switchgear Final Connections – Ground Floor |  | 3d | 2027-10-04 | 2027-10-06 | 112, 19, 102 | 32d | Electrical [24 h] | 1,920 |
| 115 | L4 Integrated Systems Test – Hall 1 |  | 8d | 2027-10-04 | 2027-10-13 | 112 | 0d | Commissioning [64 h] | 5,760 |
| 114 | LV Switchgear Final Connections – First Floor |  | 3d | 2027-10-07 | 2027-10-11 | 113 | 32d | Electrical [24 h] | 1,920 |
| 318 | Authority Final Inspections & Occupancy Permits (All Sections) |  | 10d | 2027-10-13 | 2027-10-26 | 317 | 6d |  |  |
| 116 | Black-Building Test (L4) – Hall 1 |  | 5d | 2027-10-14 | 2027-10-20 | 115 | 0d | Commissioning [40 h] | 3,600 |
| 117 | 24-Hour Full-Load Bank Test (L5) – Hall 1 |  | 3d | 2027-10-21 | 2027-10-25 | 116 | 0d | Commissioning [24 h] | 2,160 |
| 118 | Failure-Mode Demonstration Tests – Hall 1 |  | 2d | 2027-10-26 | 2027-10-27 | 117 | 0d | Commissioning [16 h] | 1,440 |
| 319 | Spare Parts, Consumables & Special Tools Handover |  | 3d | 2027-10-27 | 2027-10-29 | 318 | 6d |  |  |
| 119 | Waste Heat Test – Hall 1 |  | 2d | 2027-10-28 | 2027-10-29 | 118, 35, 111 | 18d | Commissioning [16 h] | 1,440 |
| 313 | Campus-Wide Black-Start Test (All Halls) |  | 5d | 2027-10-28 | 2027-11-03 | 311, 179, 118, 238, 298 | 0d |  |  |
| 137 | Section 1 Handover – Certificate of Sectional Completion | milestone | 0d | 2027-11-01 | 2027-11-01 | 136, 119, 105, 114, 113, 103, 102, 88, 71, 32, 33, 29, 30, 31, 104, 107, 106 | 18d | Management |  |
| 320 | Whole Works Handover — Certificate of Completion | milestone | 0d | 2027-11-01 | 2027-11-01 | 319 | 6d |  |  |
| 321 | Defects Liability Period Commencement Documentation |  | 2d | 2027-11-01 | 2027-11-02 | 320 | 6d |  |  |
| 314 | Waste Heat Recovery Test (Seasonal: Oct-Apr Window) |  | 5d | 2027-11-04 | 2027-11-10 | 313 | 0d |  |  |
| 322 | Final Account Preparation |  | 10d | 2027-11-11 | 2027-11-24 | 321, 314 | 0d |  |  |
