# Polaris DC-1 — Baseline Construction Programme

Schedule from Primavera P6, 2026-03-02 to 2027-04-14, costs in USD.
Must finish by 2027-04-14

## Resources

| Resource | Group |
| --- | --- |
| Preliminaries | labor |
| Earthworks | labor |
| Substructure | labor |
| Electrical | labor |
| Structural Steel | labor |
| External | labor |
| Roofing | labor |
| Envelope | labor |
| Architectural | labor |
| Mechanical | labor |
| ELV/Fire | labor |
| Commissioning | labor |
| Fire Suppression | labor |

## Schedule

| ID | Activity | Type | Duration | Start | Finish | Predecessors | Total float | Resources | Cost |
| --- | --- | --- | --- | --- | --- | --- | --- | --- | --- |
| 10 | Site Establishment, Hoarding & Welfare |  | 12d | 2026-03-02 | 2026-03-17 |  | 0d | Preliminaries [768 h] | 240,000 |
| 11 | Topsoil Strip & Bulk Earthworks |  | 22d | 2026-03-18 | 2026-04-16 | 10 | 0d | Earthworks [2112 h] | 2,016,000 |
| 12 | Unrecorded Made Ground – Remove & Replace |  | 8d | 2026-04-17 | 2026-04-28 | 11 | 0d | Earthworks [384 h] | 100,000 |
| 13 | Footing Excavations & Preparation |  | 18d | 2026-04-29 | 2026-05-22 | 12 | 0d | Substructure [1152 h] | 344,000 |
| 14 | Pad & Strip Footings (All Halls, Spine, Substation) |  | 22d | 2026-05-25 | 2026-06-23 | 13 | 0d | Substructure [2112 h] | 1,680,000 |
| 15 | Ground Beams & RC Works |  | 12d | 2026-06-24 | 2026-07-09 | 14 | 0d | Substructure [1536 h] | 420,000 |
| 27 | Generator Compound — Foundations, Bases & Install |  | 18d | 2026-06-24 | 2026-07-17 | 14 | 192d | Electrical [1728 h] | 2,000,000 |
| 16 | Ground-Bearing Slab (25 kN/m²) |  | 18d | 2026-07-10 | 2026-08-04 | 15 | 0d | Substructure [1728 h] | 1,120,000 |
| 17 | Steel Frame — Hall 1 |  | 20d | 2026-08-05 | 2026-09-01 | 16 | 0d | Structural Steel [1920 h] | 2,880,000 |
| 26 | Substation Electrical — Switchgear, Transformers, HV Cables |  | 20d | 2026-08-05 | 2026-09-01 | 16 | 39d | Electrical [2560 h] | 3,800,000 |
| 55 | External — Roads, Hardstanding & Pavements |  | 15d | 2026-08-05 | 2026-08-25 | 16 | 155d | External [1920 h] | 1,600,000 |
| 57 | Stormwater Attenuation & Drainage |  | 12d | 2026-08-05 | 2026-08-20 | 16 | 160d | External [576 h] | 800,000 |
| 18 | Steel Frame — Hall 2 |  | 20d | 2026-08-19 | 2026-09-15 | 17 SS+10d | 0d | Structural Steel [1920 h] | 2,880,000 |
| 56 | Fencing, Gatehouse & Access Control |  | 10d | 2026-08-26 | 2026-09-08 | 55 | 155d | External [480 h] | 600,000 |
| 58 | Utility Connections (Power, Water, Telecom) |  | 10d | 2026-08-26 | 2026-09-08 | 55 | 155d | External [480 h] | 400,000 |
| 59 | Fibre & Power Entry Duct Banks |  | 8d | 2026-08-26 | 2026-09-04 | 55 | 157d | External [256 h] | 200,000 |
| 60 | External Lighting & Landscaping |  | 8d | 2026-08-26 | 2026-09-04 | 55, 57 | 157d | External [256 h] | 160,000 |
| 19 | Steel Frame — Hall 3 |  | 20d | 2026-09-02 | 2026-09-29 | 18 SS+10d | 0d | Structural Steel [1920 h] | 2,880,000 |
| 22 | Roof Purlins, Metal Deck & Sheeting |  | 15d | 2026-09-02 | 2026-09-22 | 17 | 38d | Roofing [960 h] | 352,000 |
| 31 | Electrical Room — Hall 1 (Substations, Switchgear, UPS) |  | 22d | 2026-09-02 | 2026-10-01 | 26 | 39d | Electrical [2816 h] | 4,200,000 |
| 41 | Electrical Room — Hall 2 (Substations, Switchgear, UPS) |  | 22d | 2026-09-02 | 2026-10-01 | 18 SS+10d | 103d | Electrical [2816 h] | 4,200,000 |
| 20 | Steel Frame — Hall 4 |  | 25d | 2026-09-16 | 2026-10-20 | 19 SS+10d | 31d | Structural Steel [2400 h] | 2,880,000 |
| 43 | Electrical Room — Hall 3 (Substations, Switchgear, UPS) |  | 22d | 2026-09-16 | 2026-10-15 | 19 SS+10d | 93d | Electrical [2816 h] | 4,200,000 |
| 21 | Fire-Rated Partitions Between Halls (2-hr REI) |  | 8d | 2026-09-30 | 2026-10-09 | 17, 19 | 0d | Structural Steel [512 h] | 112,000 |
| 32 | Overhead Busway Distribution — Hall 1 |  | 12d | 2026-10-02 | 2026-10-19 | 31 | 39d | Electrical [576 h] | 484,000 |
| 42 | Overhead Busway Distribution — Hall 2 |  | 12d | 2026-10-02 | 2026-10-19 | 41 | 103d | Electrical [576 h] | 484,000 |
| 23 | Composite Cladding — Halls & Spine |  | 25d | 2026-10-12 | 2026-11-13 | 21 | 0d | Envelope [2000 h] | 2,856,000 |
| 44 | Overhead Busway Distribution — Hall 3 |  | 12d | 2026-10-16 | 2026-11-02 | 43 | 93d | Electrical [576 h] | 484,000 |
| 47 | Hall 2 White Space — Containment, Floor Finishes & Partitions |  | 25d | 2026-10-16 | 2026-11-19 | 42 SS+10d | 103d | Architectural [4000 h] | 2,500,000 |
| 49 | Hall 2 Mechanical — CRAH Units & Ductwork |  | 15d | 2026-10-20 | 2026-11-09 | 42 | 111d | Mechanical [960 h] | 2,400,000 |
| 51 | Electrical Room — Hall 4 (Substations, Switchgear, UPS) |  | 22d | 2026-10-21 | 2026-11-19 | 20 | 31d | Electrical [2816 h] | 4,200,000 |
| 48 | Hall 3 White Space — Containment, Floor Finishes & Partitions |  | 25d | 2026-10-30 | 2026-12-03 | 44 SS+10d | 93d | Architectural [4000 h] | 2,500,000 |
| 50 | Hall 3 Mechanical — CRAH Units & Ductwork |  | 15d | 2026-11-03 | 2026-11-23 | 44 | 101d | Mechanical [960 h] | 2,400,000 |
| 24 | Acoustic Louvres to Halls & Spine |  | 12d | 2026-11-16 | 2026-12-01 | 23 | 33d | Envelope [576 h] | 420,000 |
| 25 | Roofing Insulation, Membrane & Flashings |  | 18d | 2026-11-16 | 2026-12-09 | 22, 23 | 0d | Roofing [1152 h] | 1,320,000 |
| 34 | Hall 1 White Space — Containment, Floor Finishes & Partitions |  | 25d | 2026-11-16 | 2026-12-18 | 23, 32 | 20d | Architectural [4000 h] | 2,500,000 |
| 52 | Overhead Busway Distribution — Hall 4 |  | 12d | 2026-11-20 | 2026-12-07 | 51 | 31d | Electrical [576 h] | 484,000 |
| 71 | MS200 — Section 2 Handover (Hall 2 & Associated Plant) | milestone | 0d | 2026-11-20 | 2026-11-20 | 49, 47 | 103d |  |  |
| 72 | MS300 — Section 3 Handover (Hall 3 & Associated Plant) | milestone | 0d | 2026-12-04 | 2026-12-04 | 50, 48 | 93d |  |  |
| 53 | Hall 4 Mechanical — CRAH Units & Ductwork |  | 15d | 2026-12-08 | 2026-12-28 | 52 | 76d | Mechanical [960 h] | 2,400,000 |
| 54 | Hall 4 White Space — Containment, Floor Finishes & Partitions |  | 25d | 2026-12-08 | 2027-01-11 | 52 | 31d | Architectural [4000 h] | 2,500,000 |
| 28 | Shared Spine MEP — Cooling Infrastructure |  | 22d | 2026-12-10 | 2027-01-08 | 25 | 7d | Mechanical [4224 h] | 8,200,000 |
| 33 | HVAC Ductwork — Ancillary Areas & Admin Block |  | 18d | 2026-12-10 | 2027-01-04 | 25 | 0d | Mechanical [1152 h] | 1,800,000 |
| 29 | Shared Spine MEP — Heat Recovery Systems |  | 15d | 2026-12-17 | 2027-01-06 | 28 SS+5d | 7d | Mechanical [960 h] | 1,600,000 |
| 38 | Access Control & CCTV — Phase 1 (Halls 1-3, Spine) |  | 10d | 2026-12-21 | 2027-01-01 | 34 | 40d | ELV/Fire [320 h] | 480,000 |
| 40 | Structured Cabling — Phase 1 (Halls 1-3, Spine) |  | 10d | 2027-01-04 | 2027-01-15 | 38 | 40d | ELV/Fire [320 h] | 360,000 |
| 45 | Admin Block — Mechanical & Electrical Rough-In |  | 18d | 2027-01-05 | 2027-01-28 | 33 | 0d | Mechanical [2304 h] | 2,800,000 |
| 36 | Fire Detection & Alarm — Halls 1-3 & Spine |  | 15d | 2027-01-07 | 2027-01-27 | 34, 33, 24, 29 | 7d | ELV/Fire [720 h] | 1,200,000 |
| 30 | Primary & Secondary Pump Systems |  | 12d | 2027-01-11 | 2027-01-26 | 28 | 55d | Mechanical [1152 h] | 560,000 |
| 35 | Hall 1 Mechanical — CRAH Units & Ductwork |  | 15d | 2027-01-11 | 2027-01-29 | 28 | 40d | Mechanical [960 h] | 2,400,000 |
| 62 | As-Built Documentation & O&M Manuals |  | 12d | 2027-01-18 | 2027-02-02 | 40 | 40d | Commissioning [384 h] | 120,000 |
| 39 | BMS/DCIM — Phase 1 (Halls 1-3, Spine) |  | 12d | 2027-01-28 | 2027-02-12 | 36 | 7d | ELV/Fire [384 h] | 800,000 |
| 46 | Admin Block — Architectural Finishes & NOC Fitting-Out |  | 18d | 2027-01-29 | 2027-02-23 | 45 | 0d | Architectural [1440 h] | 1,800,000 |
| 37 | Fire Suppression — Data Halls (Clean Agent) |  | 12d | 2027-02-01 | 2027-02-16 | 34, 35 | 40d | Fire Suppression [576 h] | 2,000,000 |
| 63 | Statutory Inspections — Section 1 |  | 10d | 2027-02-03 | 2027-02-16 | 62 | 40d | Commissioning [320 h] | 60,000 |
| 70 | MS100 — Section 1 Handover (Hall 1, Substation, Generators, Shared Spine) | milestone | 0d | 2027-02-17 | 2027-02-17 | 63, 27, 30, 37 | 40d |  |  |
| 61 | Commissioning — L1 to L5 (Halls 1-4 & Spine) |  | 25d | 2027-02-24 | 2027-03-30 | 39, 54, 46 | 0d | Commissioning [2400 h] | 1,800,000 |
| 64 | Statutory Inspections — Section 4 |  | 10d | 2027-03-31 | 2027-04-13 | 61 | 0d | Commissioning [320 h] | 60,000 |
| 73 | MS400 — Section 4 Handover (Hall 4, Admin/NOC, External Works) | milestone | 0d | 2027-04-14 | 2027-04-14 | 64, 53, 56, 58, 59, 60 | 0d |  |  |
| 80 | PROJECT COMPLETE — All Sections Handed Over | milestone | 0d | 2027-04-14 | 2027-04-14 | 70, 71, 72, 73 | 0d |  |  |

Notes:
- 10: Expenses: Site Establishment, Hoarding & Welfare — Materials/Plant/Sublet 240000
- 11: Expenses: Topsoil Strip & Bulk Earthworks — Materials/Plant/Sublet 2016000
- 12: Expenses: Unrecorded Made Ground – Remove & Replace — Materials/Plant/Sublet 100000
- 13: Expenses: Footing Excavations & Preparation — Materials/Plant/Sublet 344000
- 14: Expenses: Pad & Strip Footings (All Halls, Spine, Substation) — Materials/Plant/Sublet 1680000
- 15: Expenses: Ground Beams & RC Works — Materials/Plant/Sublet 420000
- 27: Expenses: Generator Compound — Foundations, Bases & Install — Materials/Plant/Sublet 2000000
- 16: Expenses: Ground-Bearing Slab (25 kN/m²) — Materials/Plant/Sublet 1120000
- 17: Expenses: Steel Frame — Hall 1 — Materials/Plant/Sublet 2880000
- 26: Expenses: Substation Electrical — Switchgear, Transformers, HV Cables — Materials/Plant/Sublet 3800000
- 55: Expenses: External — Roads, Hardstanding & Pavements — Materials/Plant/Sublet 1600000
- 57: Expenses: Stormwater Attenuation & Drainage — Materials/Plant/Sublet 800000
- 18: Expenses: Steel Frame — Hall 2 — Materials/Plant/Sublet 2880000
- 56: Expenses: Fencing, Gatehouse & Access Control — Materials/Plant/Sublet 600000
- 58: Expenses: Utility Connections (Power, Water, Telecom) — Materials/Plant/Sublet 400000
- 59: Expenses: Fibre & Power Entry Duct Banks — Materials/Plant/Sublet 200000
- 60: Expenses: External Lighting & Landscaping — Materials/Plant/Sublet 160000
- 19: Expenses: Steel Frame — Hall 3 — Materials/Plant/Sublet 2880000
- 22: Expenses: Roof Purlins, Metal Deck & Sheeting — Materials/Plant/Sublet 352000
- 31: Expenses: Electrical Room — Hall 1 (Substations, Switchgear, UPS) — Materials/Plant/Sublet 4200000
- 41: Expenses: Electrical Room — Hall 2 (Substations, Switchgear, UPS) — Materials/Plant/Sublet 4200000
- 20: Expenses: Steel Frame — Hall 4 — Materials/Plant/Sublet 2880000
- 43: Expenses: Electrical Room — Hall 3 (Substations, Switchgear, UPS) — Materials/Plant/Sublet 4200000
- 21: Expenses: Fire-Rated Partitions Between Halls (2-hr REI) — Materials/Plant/Sublet 112000
- 32: Expenses: Overhead Busway Distribution — Hall 1 — Materials/Plant/Sublet 484000
- 42: Expenses: Overhead Busway Distribution — Hall 2 — Materials/Plant/Sublet 484000
- 23: Expenses: Composite Cladding — Halls & Spine — Materials/Plant/Sublet 2856000
- 44: Expenses: Overhead Busway Distribution — Hall 3 — Materials/Plant/Sublet 484000
- 47: Expenses: Hall 2 White Space — Containment, Floor Finishes & Partitions — Materials/Plant/Sublet 2500000
- 49: Expenses: Hall 2 Mechanical — CRAH Units & Ductwork — Materials/Plant/Sublet 2400000
- 51: Expenses: Electrical Room — Hall 4 (Substations, Switchgear, UPS) — Materials/Plant/Sublet 4200000
- 48: Expenses: Hall 3 White Space — Containment, Floor Finishes & Partitions — Materials/Plant/Sublet 2500000
- 50: Expenses: Hall 3 Mechanical — CRAH Units & Ductwork — Materials/Plant/Sublet 2400000
- 24: Expenses: Acoustic Louvres to Halls & Spine — Materials/Plant/Sublet 420000
- 25: Expenses: Roofing Insulation, Membrane & Flashings — Materials/Plant/Sublet 1320000
- 34: Expenses: Hall 1 White Space — Containment, Floor Finishes & Partitions — Materials/Plant/Sublet 2500000
- 52: Expenses: Overhead Busway Distribution — Hall 4 — Materials/Plant/Sublet 484000
- 53: Expenses: Hall 4 Mechanical — CRAH Units & Ductwork — Materials/Plant/Sublet 2400000
- 54: Expenses: Hall 4 White Space — Containment, Floor Finishes & Partitions — Materials/Plant/Sublet 2500000
- 28: Expenses: Shared Spine MEP — Cooling Infrastructure — Materials/Plant/Sublet 8200000
- 33: Expenses: HVAC Ductwork — Ancillary Areas & Admin Block — Materials/Plant/Sublet 1800000
- 29: Expenses: Shared Spine MEP — Heat Recovery Systems — Materials/Plant/Sublet 1600000
- 38: Expenses: Access Control & CCTV — Phase 1 (Halls 1-3, Spine) — Materials/Plant/Sublet 480000
- 40: Expenses: Structured Cabling — Phase 1 (Halls 1-3, Spine) — Materials/Plant/Sublet 360000
- 45: Expenses: Admin Block — Mechanical & Electrical Rough-In — Materials/Plant/Sublet 2800000
- 36: Expenses: Fire Detection & Alarm — Halls 1-3 & Spine — Materials/Plant/Sublet 1200000
- 30: Expenses: Primary & Secondary Pump Systems — Materials/Plant/Sublet 560000
- 35: Expenses: Hall 1 Mechanical — CRAH Units & Ductwork — Materials/Plant/Sublet 2400000
- 62: Expenses: As-Built Documentation & O&M Manuals — Materials/Plant/Sublet 120000
- 39: Expenses: BMS/DCIM — Phase 1 (Halls 1-3, Spine) — Materials/Plant/Sublet 800000
- 46: Expenses: Admin Block — Architectural Finishes & NOC Fitting-Out — Materials/Plant/Sublet 1800000
- 37: Expenses: Fire Suppression — Data Halls (Clean Agent) — Materials/Plant/Sublet 2000000
- 63: Expenses: Statutory Inspections — Section 1 — Materials/Plant/Sublet 60000
- 61: Expenses: Commissioning — L1 to L5 (Halls 1-4 & Spine) — Materials/Plant/Sublet 1800000
- 64: Expenses: Statutory Inspections — Section 4 — Materials/Plant/Sublet 60000
