# Polaris DC-1 Baseline

Schedule from Primavera P6, 2026-08-03 to 2027-11-12, costs in EUR.
Must finish by 2027-11-12

## Resources

| Resource | Group | Rate |
| --- | --- | --- |
| General Labour | labor | 45 |
| Management | labor | 75 |
| Procurement | labor | 70 |
| Surveyor | labor | 55 |
| Design Team | labor | 75 |
| Earthworks | labor | 52 |
| Blasting | labor | 65 |
| RC Frame | labor | 55 |
| Piling | labor | 70 |
| Steel Erection | labor | 62 |
| External Works | labor | 48 |
| Waterproofing | labor | 48 |
| Mech Pipe | labor | 60 |
| ELV | labor | 58 |
| Mech HVAC | labor | 58 |
| Precast | labor | 50 |
| Electrical | labor | 62 |
| Mech | labor | 55 |
| Envelope | labor | 48 |
| Roofing | labor | 50 |
| Fit-Out | labor | 48 |
| Commissioning | labor | 65 |

## Schedule

| ID | Activity | Type | Duration | Start | Finish | Predecessors | Total float | Resources | Cost |
| --- | --- | --- | --- | --- | --- | --- | --- | --- | --- |
| 1 | PROJECT COMMENCEMENT | milestone | 0d | 2026-08-03 | 2026-08-03 |  | 0d |  |  |
| 10 | Mobilisation & Site Setup |  | 8d | 2026-08-03 | 2026-08-12 | 1 | 0d | General Labour [384 h] | 17,280 |
| 12 | Planning Conditions Discharge |  | 10d | 2026-08-03 | 2026-08-14 | 1 | 21d | Management [160 h] | 12,000 |
| 30 | LT-01 Advance Purchase — Transformer Order |  | 5d | 2026-08-03 | 2026-08-07 | 1 | 88d | Procurement [80 h] | 5,600 |
| 11 | Site Survey & Setting Out |  | 5d | 2026-08-13 | 2026-08-19 | 10 | 21d | Surveyor [120 h] | 6,600 |
| 13 | Finavia Crane Permits — Application |  | 5d | 2026-08-13 | 2026-08-19 | 10 | 0d | Management [40 h] | 3,000 |
| 20 | Architectural Design Development |  | 25d | 2026-08-17 | 2026-09-18 | 12 | 21d | Design Team [800 h] | 60,000 |
| 14 | Finavia Crane Permits — Clearance Period |  | 21d | 2026-08-20 | 2026-09-17 | 13 | 0d | Management [168 h] | 12,600 |
| 22 | MEP Design Development |  | 25d | 2026-08-24 | 2026-09-25 | 20 SS+5d | 83d | Design Team [1000 h] | 75,000 |
| 23 | Electrical & ELV Design |  | 20d | 2026-08-24 | 2026-09-18 | 20 SS+5d | 126d | Design Team [640 h] | 48,000 |
| 21 | Structural Design Development |  | 20d | 2026-08-31 | 2026-09-25 | 20 SS+10d | 21d | Design Team [640 h] | 48,000 |
| 24 | Civil & External Works Design |  | 15d | 2026-09-07 | 2026-09-25 | 21 SS+5d | 132d | Design Team [360 h] | 27,000 |
| 40 | Bulk Earthworks — Site Strip & Cut |  | 53d | 2026-09-18 | 2026-12-01 | 11, 14 | 0d | Earthworks [6784 h] | 352,768 |
| 35 | LT-05 UPS Procurement |  | 5d | 2026-09-21 | 2026-09-25 | 23 | 156d | Procurement [80 h] | 5,600 |
| 36 | LT-06 Busway Procurement |  | 5d | 2026-09-21 | 2026-09-25 | 23 | 126d | Procurement [80 h] | 5,600 |
| 25 | Design Gate Review — Engineer (14-day) |  | 14d | 2026-09-28 | 2026-10-15 | 20, 21, 22, 23, 24 | 132d | Management [112 h] | 8,400 |
| 33 | LT-04 Chiller & CRAH Procurement |  | 5d | 2026-09-28 | 2026-10-02 | 22 | 174d | Procurement [80 h] | 5,600 |
| 34 | LT-11 Structural Steel Procurement |  | 5d | 2026-09-28 | 2026-10-02 | 21 | 21d | Procurement [80 h] | 5,600 |
| 41 | Rock Excavation & Blasting |  | 31d | 2026-10-02 | 2026-11-13 | 40 SS+10d | 0d | Blasting [3968 h] | 257,920 |
| 31 | LT-02 MV Switchgear Procurement |  | 5d | 2026-10-05 | 2026-10-09 | 22 FS+5d | 83d | Procurement [80 h] | 5,600 |
| 32 | LT-03 Generator Procurement |  | 5d | 2026-10-05 | 2026-10-09 | 22 FS+5d | 131d | Procurement [80 h] | 5,600 |
| 43 | Substation & Gen Pad Foundations |  | 15d | 2026-11-09 | 2026-11-27 | 41 FS-5d | 87d | RC Frame [960 h] | 52,800 |
| 45 | Gatehouse & Compound Foundations |  | 8d | 2026-11-16 | 2026-11-25 | 41 | 226d | RC Frame [384 h] | 21,120 |
| 50 | DH1 — Rock-Socketed Bored Piles |  | 53d | 2026-11-16 | 2027-01-27 | 41 | 0d | Piling [5088 h] | 356,160 |
| 42 | Trench Excavation — Site Services |  | 11d | 2026-11-23 | 2026-12-07 | 41 FS+5d | 196d | Earthworks [704 h] | 36,608 |
| 103 | Gatehouse Construction |  | 20d | 2026-11-26 | 2026-12-23 | 45 | 226d | RC Frame [640 h] | 35,200 |
| 100 | Substation Building Construction |  | 30d | 2026-11-30 | 2027-01-08 | 43 | 148d | RC Frame [1440 h] | 79,200 |
| 101 | Gen Compound Civil & Enclosure |  | 25d | 2026-11-30 | 2027-01-01 | 43 | 206d | RC Frame [1200 h] | 66,000 |
| 44 | Cooling Spine Pipe Rack Fnds |  | 8d | 2026-11-30 | 2026-12-09 | 43 | 87d | RC Frame [384 h] | 21,120 |
| 51 | DH2 — Rock-Socketed Bored Piles |  | 53d | 2026-12-07 | 2027-02-17 | 50 SS+15d | 0d | Piling [5088 h] | 356,160 |
| 104 | Shared Infra — UG Services & Ducts |  | 15d | 2026-12-08 | 2026-12-28 | 42 | 196d | Earthworks [720 h] | 37,440 |
| 102 | Cooling Spine Structural Frame |  | 15d | 2026-12-10 | 2026-12-30 | 44 | 87d | Steel Erection [720 h] | 44,640 |
| 55 | DH2 Pile Caps & Ground Beams |  | 13d | 2026-12-14 | 2026-12-30 | 51 SS+5d | 0d | RC Frame [1664 h] | 91,520 |
| 52 | DH3 — Rock-Socketed Bored Piles |  | 53d | 2026-12-21 | 2027-03-03 | 51 SS+10d | 22d | Piling [5088 h] | 356,160 |
| 56 | DH3 Pile Caps & Ground Beams |  | 13d | 2026-12-28 | 2027-01-13 | 52 SS+5d | 27d | RC Frame [1664 h] | 91,520 |
| 200 | Access Roads & Parking Construction |  | 15d | 2026-12-29 | 2027-01-18 | 104 | 196d | External Works [1440 h] | 69,120 |
| 118 | Cooling Spine — Pipework & Distr. |  | 44d | 2026-12-31 | 2027-03-02 | 102 | 87d | Mech Pipe [4224 h] | 253,440 |
| 59 | DH2 Foundation Waterproofing |  | 11d | 2026-12-31 | 2027-01-14 | 55 | 0d | Waterproofing [352 h] | 16,896 |
| 53 | DH4 — Rock-Socketed Bored Piles |  | 53d | 2027-01-04 | 2027-03-17 | 52 SS+10d | 22d | Piling [5088 h] | 356,160 |
| 57 | DH4 Pile Caps & Ground Beams |  | 13d | 2027-01-11 | 2027-01-27 | 53 SS+5d | 22d | RC Frame [1664 h] | 91,520 |
| 60 | DH3 Foundation Waterproofing |  | 11d | 2027-01-11 | 2027-01-25 | 56 SS+10d | 27d | Waterproofing [352 h] | 16,896 |
| 63 | DH2 Ground Floor Slab |  | 22d | 2027-01-15 | 2027-02-15 | 59 | 0d | RC Frame [2816 h] | 154,880 |
| 201 | External Lighting & Security |  | 10d | 2027-01-19 | 2027-02-01 | 200 | 198d | ELV [320 h] | 18,560 |
| 202 | Perimeter Fencing & Gates |  | 10d | 2027-01-19 | 2027-02-01 | 200 | 198d | External Works [320 h] | 15,360 |
| 203 | Landscaping & Soft Works |  | 12d | 2027-01-19 | 2027-02-03 | 200 | 196d | External Works [384 h] | 18,432 |
| 61 | DH4 Foundation Waterproofing |  | 11d | 2027-01-25 | 2027-02-08 | 57 SS+10d | 22d | Waterproofing [352 h] | 16,896 |
| 54 | DH1 Pile Caps & Ground Beams |  | 13d | 2027-01-28 | 2027-02-15 | 50 | 5d | RC Frame [1664 h] | 91,520 |
| 64 | DH3 Ground Floor Slab |  | 22d | 2027-02-01 | 2027-03-02 | 60 SS+15d | 27d | RC Frame [2816 h] | 154,880 |
| 65 | DH4 Ground Floor Slab |  | 22d | 2027-02-15 | 2027-03-16 | 61 SS+15d | 22d | RC Frame [2816 h] | 154,880 |
| 58 | DH1 Foundation Waterproofing |  | 11d | 2027-02-16 | 2027-03-02 | 54 | 5d | Waterproofing [352 h] | 16,896 |
| 71 | DH2 — GF Steel Erection |  | 8d | 2027-02-25 | 2027-03-08 | 63 FS+7d | 0d | Steel Erection [1024 h] | 63,488 |
| 140 | DH1 — Chiller Installation & Piping |  | 10d | 2027-03-03 | 2027-03-16 | 118, 33 SS+105d | 167d | Mech HVAC [320 h] | 18,560 |
| 62 | DH1 Ground Floor Slab |  | 22d | 2027-03-03 | 2027-04-01 | 58 | 5d | RC Frame [2816 h] | 154,880 |
| 73 | DH2 — Upper Floor & Roof Steel |  | 40d | 2027-03-09 | 2027-05-03 | 71 | 0d | Steel Erection [6400 h] | 396,800 |
| 79 | DH2 — Precast Plank Floors |  | 20d | 2027-03-23 | 2027-04-19 | 73 SS+10d | 33d | Precast [1920 h] | 96,000 |
| 82 | Admin/NOC Ground Slab |  | 12d | 2027-04-07 | 2027-04-22 | 65 FS+15d | 53d | RC Frame [768 h] | 42,240 |
| 123 | Transformer & MV Switchgear Install |  | 5d | 2027-04-12 | 2027-04-16 | 100, 30 SS+175d, 31 SS+135d | 83d | Electrical [320 h] | 19,840 |
| 70 | DH1 — GF Steel Erection |  | 8d | 2027-04-13 | 2027-04-22 | 62 FS+7d, 25, 34 SS+125d | 5d | Steel Erection [1024 h] | 63,488 |
| 124 | Main LV Switchgear Installation |  | 3d | 2027-04-19 | 2027-04-21 | 123 | 83d | Electrical [96 h] | 5,952 |
| 125 | Generator & UPS Installation |  | 5d | 2027-04-19 | 2027-04-23 | 101, 32 SS+140d, 35 SS+125d | 131d | Mech [320 h] | 17,600 |
| 74 | DH3 — GF Steel Erection |  | 8d | 2027-04-20 | 2027-04-29 | 64 FS+7d, 73 FS-10d | 0d | Steel Erection [1024 h] | 63,488 |
| 91 | DH2 — Ext Wall Insul & Cladding |  | 28d | 2027-04-20 | 2027-05-27 | 79 | 33d | Envelope [2688 h] | 129,024 |
| 72 | DH1 — Upper Floor & Roof Steel |  | 40d | 2027-04-23 | 2027-06-17 | 70 | 5d | Steel Erection [6400 h] | 396,800 |
| 75 | DH4 — GF Steel Erection |  | 8d | 2027-04-27 | 2027-05-06 | 65 FS+7d, 74 FS-3d | 0d | Steel Erection [1024 h] | 63,488 |
| 95 | DH2 — Roof Waterproofing & Insul |  | 22d | 2027-04-27 | 2027-05-26 | 91 SS+5d | 33d | Roofing [1408 h] | 70,400 |
| 76 | DH3 — Upper Floor & Roof Steel |  | 40d | 2027-04-30 | 2027-06-24 | 74 | 5d | Steel Erection [6400 h] | 396,800 |
| 111 | DH2 — Cable Trays & Containment |  | 35d | 2027-05-04 | 2027-06-21 | 95 SS+5d | 50d | Electrical [4480 h] | 277,760 |
| 115 | DH2 — HVAC Ductwork & AHU Install |  | 35d | 2027-05-04 | 2027-06-21 | 95 SS+5d | 43d | Mech HVAC [4480 h] | 259,840 |
| 83 | Admin/NOC Steel Frame & Precast |  | 25d | 2027-05-04 | 2027-06-07 | 82 FS+7d | 53d | Steel Erection [1600 h] | 99,200 |
| 77 | DH4 — Upper Floor & Roof Steel |  | 40d | 2027-05-07 | 2027-07-01 | 75 | 0d | Steel Erection [6400 h] | 396,800 |

| ID | Activity | Type | Duration | Start | Finish | Predecessors | Total float | Resources | Cost |
| --- | --- | --- | --- | --- | --- | --- | --- | --- | --- |
| 78 | DH1 — Precast Plank Floors |  | 20d | 2027-05-07 | 2027-06-03 | 72 SS+10d | 5d | Precast [1920 h] | 96,000 |
| 120 | DH2 — Riser Piping |  | 22d | 2027-05-11 | 2027-06-09 | 95 SS+10d, 118 FS-5d | 33d | Mech Pipe [2112 h] | 126,720 |
| 80 | DH3 — Precast Plank Floors |  | 20d | 2027-05-14 | 2027-06-10 | 76 SS+10d | 5d | Precast [1920 h] | 96,000 |
| 81 | DH4 — Precast Plank Floors |  | 20d | 2027-05-21 | 2027-06-17 | 77 SS+10d | 0d | Precast [1920 h] | 96,000 |
| 90 | DH1 — Ext Wall Insul & Cladding |  | 28d | 2027-06-04 | 2027-07-13 | 78 | 5d | Envelope [2688 h] | 129,024 |
| 105 | Admin/NOC Envelope |  | 20d | 2027-06-08 | 2027-07-05 | 83 | 53d | Envelope [960 h] | 46,080 |
| 92 | DH3 — Ext Wall Insul & Cladding |  | 28d | 2027-06-11 | 2027-07-20 | 80 | 5d | Envelope [2688 h] | 129,024 |
| 94 | DH1 — Roof Waterproofing & Insul |  | 22d | 2027-06-11 | 2027-07-12 | 90 SS+5d | 5d | Roofing [1408 h] | 70,400 |
| 131 | DH2 — CRAH Fan-Wall Installation |  | 33d | 2027-06-15 | 2027-07-29 | 115 FS-5d, 120 SS+5d | 43d | Mech HVAC [3168 h] | 183,744 |
| 142 | DH2 — Electrical Dist. Boards |  | 14d | 2027-06-15 | 2027-07-02 | 111 FS-5d | 50d | Electrical [1344 h] | 83,328 |
| 146 | DH2 — Busway & Power Feeders |  | 14d | 2027-06-15 | 2027-07-02 | 111 FS-5d | 50d | Electrical [1344 h] | 83,328 |
| 151 | DH2 — ELV/BMS/Fire Detection |  | 20d | 2027-06-15 | 2027-07-12 | 111 FS-5d | 71d | ELV [1920 h] | 111,360 |
| 161 | DH2 — Raised Access Flooring |  | 19d | 2027-06-15 | 2027-07-09 | 115 FS-5d | 84d | Fit-Out [1824 h] | 87,552 |
| 110 | DH1 — Cable Trays & Containment |  | 35d | 2027-06-18 | 2027-08-05 | 94 SS+5d, 25 | 12d | Electrical [4480 h] | 277,760 |
| 114 | DH1 — HVAC Ductwork & AHU Install |  | 35d | 2027-06-18 | 2027-08-05 | 94 SS+5d, 25 | 5d | Mech HVAC [4480 h] | 259,840 |
| 93 | DH4 — Ext Wall Insul & Cladding |  | 28d | 2027-06-18 | 2027-07-27 | 81 | 0d | Envelope [2688 h] | 129,024 |
| 96 | DH3 — Roof Waterproofing & Insul |  | 22d | 2027-06-18 | 2027-07-19 | 92 SS+5d | 5d | Roofing [1408 h] | 70,400 |
| 112 | DH3 — Cable Trays & Containment |  | 35d | 2027-06-25 | 2027-08-12 | 96 SS+5d | 12d | Electrical [4480 h] | 277,760 |
| 116 | DH3 — HVAC Ductwork & AHU Install |  | 35d | 2027-06-25 | 2027-08-12 | 96 SS+5d | 5d | Mech HVAC [4480 h] | 259,840 |
| 119 | DH1 — Riser Piping (Htg & Clg) |  | 22d | 2027-06-25 | 2027-07-26 | 94 SS+10d, 118 FS-5d | 25d | Mech Pipe [2112 h] | 126,720 |
| 97 | DH4 — Roof Waterproofing & Insul |  | 22d | 2027-06-25 | 2027-07-26 | 93 SS+5d | 0d | Roofing [1408 h] | 70,400 |
| 113 | DH4 — Cable Trays & Containment |  | 35d | 2027-07-02 | 2027-08-19 | 97 SS+5d | 7d | Electrical [4480 h] | 277,760 |
| 117 | DH4 — HVAC Ductwork & AHU Install |  | 35d | 2027-07-02 | 2027-08-19 | 97 SS+5d | 0d | Mech HVAC [4480 h] | 259,840 |
| 121 | DH3 — Riser Piping |  | 22d | 2027-07-02 | 2027-08-02 | 96 SS+10d, 120 SS+15d | 10d | Mech Pipe [2112 h] | 126,720 |
| 171 | DH2 — Electrical Testing & Dead Bus |  | 12d | 2027-07-05 | 2027-07-20 | 142, 146 | 50d | Commissioning [384 h] | 24,960 |
| 164 | Admin/NOC — Fit-Out |  | 25d | 2027-07-06 | 2027-08-09 | 105 | 53d | Fit-Out [3200 h] | 153,600 |
| 122 | DH4 — Riser Piping |  | 22d | 2027-07-23 | 2027-08-23 | 97 SS+10d, 121 SS+15d | 10d | Mech Pipe [2112 h] | 126,720 |
| 130 | DH1 — CRAH Fan-Wall Installation |  | 33d | 2027-07-30 | 2027-09-14 | 114 FS-5d, 119 SS+5d | 5d | Mech HVAC [3168 h] | 183,744 |
| 141 | DH1 — Electrical Dist. Boards |  | 14d | 2027-07-30 | 2027-08-18 | 110 FS-5d, 124 | 12d | Electrical [1344 h] | 83,328 |
| 145 | DH1 — Busway & Power Feeders |  | 14d | 2027-07-30 | 2027-08-18 | 110 FS-5d, 124, 36 SS+110d | 12d | Electrical [1344 h] | 83,328 |
| 150 | DH1 — ELV/BMS/Fire Detection |  | 20d | 2027-07-30 | 2027-08-26 | 110 FS-5d | 33d | ELV [1920 h] | 111,360 |
| 160 | DH1 — Raised Access Flooring |  | 19d | 2027-07-30 | 2027-08-25 | 114 FS-5d | 34d | Fit-Out [1824 h] | 87,552 |
| 176 | DH2 — HVAC Commissioning & Balancing |  | 15d | 2027-07-30 | 2027-08-19 | 131, 171 | 43d | Commissioning [720 h] | 46,800 |
| 132 | DH3 — CRAH Fan-Wall Installation |  | 33d | 2027-08-06 | 2027-09-21 | 116 FS-5d, 121 SS+5d | 5d | Mech HVAC [3168 h] | 183,744 |
| 143 | DH3 — Electrical Dist. Boards |  | 14d | 2027-08-06 | 2027-08-25 | 112 FS-5d | 12d | Electrical [1344 h] | 83,328 |
| 147 | DH3 — Busway & Power Feeders |  | 14d | 2027-08-06 | 2027-08-25 | 112 FS-5d | 12d | Electrical [1344 h] | 83,328 |
| 152 | DH3 — ELV/BMS/Fire Detection |  | 20d | 2027-08-06 | 2027-09-02 | 112 FS-5d | 33d | ELV [1920 h] | 111,360 |
| 162 | DH3 — Raised Access Flooring |  | 19d | 2027-08-06 | 2027-09-01 | 116 FS-5d | 46d | Fit-Out [1824 h] | 87,552 |
| 210 | Admin/NOC Commissioning Sign-off |  | 10d | 2027-08-10 | 2027-08-23 | 164 | 53d | Commissioning [240 h] | 15,600 |
| 133 | DH4 — CRAH Fan-Wall Installation |  | 33d | 2027-08-13 | 2027-09-28 | 117 FS-5d, 122 SS+5d | 0d | Mech HVAC [3168 h] | 183,744 |
| 144 | DH4 — Electrical Dist. Boards |  | 14d | 2027-08-13 | 2027-09-01 | 113 FS-5d | 7d | Electrical [1344 h] | 83,328 |
| 148 | DH4 — Busway & Power Feeders |  | 14d | 2027-08-13 | 2027-09-01 | 113 FS-5d | 7d | Electrical [1344 h] | 83,328 |
| 153 | DH4 — ELV/BMS/Fire Detection |  | 20d | 2027-08-13 | 2027-09-09 | 113 FS-5d | 28d | ELV [1920 h] | 111,360 |
| 163 | DH4 — Raised Access Flooring |  | 19d | 2027-08-13 | 2027-09-08 | 117 FS-5d | 41d | Fit-Out [1824 h] | 87,552 |
| 170 | DH1 — Electrical Testing & Dead Bus |  | 12d | 2027-08-19 | 2027-09-03 | 141, 145 | 12d | Commissioning [384 h] | 24,960 |
| 190 | DH2 — BMS/BAS Integ. Func. Test |  | 12d | 2027-08-20 | 2027-09-06 | 151, 176 | 43d | Commissioning [384 h] | 24,960 |
| 191 | DH2 — Fire Alarm Integ. Test |  | 7d | 2027-08-20 | 2027-08-30 | 151, 176 | 48d | Commissioning [168 h] | 10,920 |
| 172 | DH3 — Electrical Testing & Dead Bus |  | 12d | 2027-08-26 | 2027-09-10 | 143, 147 | 12d | Commissioning [384 h] | 24,960 |
| 173 | DH4 — Electrical Testing & Dead Bus |  | 12d | 2027-09-02 | 2027-09-17 | 144, 148 | 7d | Commissioning [384 h] | 24,960 |
| 182 | DH1 — Generator Load-Bank Test |  | 8d | 2027-09-06 | 2027-09-15 | 125, 170 | 36d | Commissioning [192 h] | 12,480 |
| 192 | Section 2 Completion — Readiness Review |  | 5d | 2027-09-07 | 2027-09-13 | 190, 191, 161 | 43d | Management [80 h] | 6,000 |
| 6 | SECTION 2 COMPLETION (DH2 + Plant) | milestone | 0d | 2027-09-14 | 2027-09-14 | 192 | 43d |  |  |
| 175 | DH1 — HVAC Commissioning & Balancing |  | 15d | 2027-09-15 | 2027-10-05 | 130, 170 | 5d | Commissioning [720 h] | 46,800 |
| 177 | DH3 — HVAC Commissioning & Balancing |  | 15d | 2027-09-22 | 2027-10-12 | 132, 172 | 5d | Commissioning [720 h] | 46,800 |
| 178 | DH4 — HVAC Commissioning & Balancing |  | 15d | 2027-09-29 | 2027-10-19 | 133, 173 | 0d | Commissioning [720 h] | 46,800 |
| 180 | DH1 — BMS/BAS Integ. Func. Test |  | 12d | 2027-10-06 | 2027-10-21 | 150, 175, 160 | 5d | Commissioning [384 h] | 24,960 |
| 181 | DH1 — Fire Alarm Integ. Test |  | 7d | 2027-10-06 | 2027-10-14 | 150, 175 | 15d | Commissioning [168 h] | 10,920 |
| 205 | District Heating Commissioning (72hr) |  | 5d | 2027-10-06 | 2027-10-12 | 175 | 17d | Commissioning [120 h] | 7,800 |
| 193 | DH3 — BMS/BAS Integ. Func. Test |  | 12d | 2027-10-13 | 2027-10-28 | 152, 177 | 5d | Commissioning [384 h] | 24,960 |
| 194 | DH3 — Fire Alarm Integ. Test |  | 7d | 2027-10-13 | 2027-10-21 | 152, 177 | 10d | Commissioning [168 h] | 10,920 |
| 196 | DH4 — BMS/BAS Integ. Func. Test |  | 12d | 2027-10-20 | 2027-11-04 | 153, 178 | 0d | Commissioning [384 h] | 24,960 |
| 197 | DH4 — Fire Alarm Integ. Test |  | 7d | 2027-10-20 | 2027-10-28 | 153, 178 | 5d | Commissioning [168 h] | 10,920 |
| 206 | Acoustic Testing & IEQ Validation |  | 5d | 2027-10-22 | 2027-10-28 | 180 | 5d | Commissioning [120 h] | 7,800 |
| 183 | DH1 — S1 Completion Readiness Review |  | 5d | 2027-10-29 | 2027-11-04 | 181, 182, 103, 140, 205, 206 | 5d | Management [80 h] | 6,000 |
| 195 | Section 3 Completion — Readiness Review |  | 5d | 2027-10-29 | 2027-11-04 | 193, 194, 162 | 5d | Management [80 h] | 6,000 |
| 211 | Section 4 — Final Snagging & Readiness |  | 5d | 2027-11-05 | 2027-11-11 | 196, 197, 210, 201, 202, 203, 163 | 0d | Management [80 h] | 6,000 |
| 5 | SECTION 1 COMPLETION (DH1 + Shared Infra) | milestone | 0d | 2027-11-05 | 2027-11-05 | 183 | 5d |  |  |
| 7 | SECTION 3 COMPLETION (DH3 + Plant) | milestone | 0d | 2027-11-05 | 2027-11-05 | 195 | 5d |  |  |
| 8 | PROJECT COMPLETION (S4: DH4 + Admin/NOC + External) | milestone | 0d | 2027-11-12 | 2027-11-12 | 211, 5 FF, 6 FF, 7 FF | 0d |  |  |
