# Polaris DC-1

Schedule from Primavera P6, 2026-03-02 to 2028-05-30, data date 2026-09-25, costs in EUR.
Must finish by 2028-05-30

## Calendars

- Project Calendar: Mon-Fri 08:00-12:00, 13:00-17:00; Sat-Sun off. Exceptions (off unless hours are given): 2026-05-01, 2026-07-15 to 2026-08-14, 2026-10-01, 2026-12-24 to 2026-12-26, 2027-05-01, 2027-07-15 to 2027-08-14, 2027-10-01, 2027-12-24 to 2027-12-26, 2028-05-01.

## Resources

| Resource | Group | Rate |
| --- | --- | --- |
| Project Mgmt | labor | 85 |
| Site Establishment | labor | 45 |
| Survey | labor | 60 |
| Supply | labor |  |
| Crew | labor | 42 |
| Civil | labor | 48 |
| Excavation | labor | 55 |
| Blasting | labor | 75 |
| Piling | labor | 80 |
| Plumbing | labor | 58 |
| Concrete | labor | 50 |
| Rebar | labor | 52 |
| Steel | labor | 65 |
| Mechanical | labor | 62 |
| Fire | labor | 64 |
| Roof | labor | 55 |
| Electrical | labor | 70 |
| DNO | labor |  |
| Cladding | labor | 50 |
| Glazing | labor | 48 |
| IT | labor | 72 |
| Carpenters | labor | 46 |
| Commissioning | labor | 78 |

## Schedule

| ID | WBS | Activity | Type | Duration | Start | Finish | Predecessors | Total float | Free float | Resources | Cost |
| --- | --- | --- | --- | --- | --- | --- | --- | --- | --- | --- | --- |
|  | 0 | **0** |  |  | 2026-03-02 | 2026-03-02 |  |  |  |  |  |
|  | 0.0 | **0.0 Project Start** |  |  | 2026-03-02 | 2026-03-02 |  |  |  |  |  |
| 0 |  | PROJECT START (Commencement - 2026-03-02) | milestone | 0d | 2026-03-02 | 2026-03-02 |  | 0d |  | Project Mgmt |  |
|  | 1 | **1** |  |  | 2026-03-02 | 2026-04-06 |  |  |  |  |  |
|  | 1.0 | **1.0 Project Mgmt & Mobilisation** |  |  | 2026-03-02 | 2026-04-06 |  |  |  |  |  |
| 1 |  | Notice to Commence & Mobilisation (14wd notice window) |  | 8d | 2026-03-02 | 2026-03-11 | 0 | 189d | 0d | Site Establishment [512 h] | 2,000,000 |
| 4 |  | Survey & setting out (control points) |  | 4d | 2026-03-02 | 2026-03-05 | 0 | 201d | 12d | Survey [128 h] | 1,006,000 |
| 2 |  | Site establishment (hoarding, access, welfare, temp services) |  | 8d | 2026-03-12 | 2026-03-23 | 1 | 189d | 0d | Crew [512 h] | 2,000,000 |
| 3 |  | 110kV earthworks (transformer compound & outbuilding) |  | 10d | 2026-03-24 | 2026-04-06 | 2 | 444d | 192d | Civil [480 h] | 1,000,000 |
|  | 2 | **2** |  |  | 2026-03-24 | 2026-09-04 |  |  |  |  |  |
|  | 2.0 | **2.0 Earthworks & Foundations** |  |  | 2026-03-24 | 2026-09-04 |  |  |  |  |  |
| 5 |  | General earthworks (grading, drainage, bulk fill) |  | 35d | 2026-03-24 | 2026-05-12 | 2, 4 | 189d | 0d | Excavation [3360 h] | 1,500,000 |
| 6 |  | Blasting (eastern third, 4,500 m3) |  | 40d | 2026-05-13 | 2026-07-07 | 5 | 189d | 0d | Blasting [1920 h] | 1,000,000 |
| 7 |  | Piling (foundation piles, to bedrock 7-9m) |  | 30d | 2026-05-13 | 2026-06-23 | 5 | 199d | 10d | Piling [1920 h] | 1,800,000 |
| 9 |  | Stormwater drainage (site) |  | 10d | 2026-05-13 | 2026-05-26 | 5 | 446d | 0d | Civil [480 h] | 868,000 |
| 8 |  | Foundations: pile caps, ground beam & slab-on-grade |  | 20d | 2026-07-08 | 2026-09-04 | 6, 7 | 189d | 0d | Concrete [3200 h] | 1,300,000 |
|  | 3 | **3** |  |  | 2026-09-07 | 2027-02-24 |  |  |  |  |  |
|  | 3.0 | **3.0 Structural Works** |  |  | 2026-09-07 | 2027-02-24 |  |  |  |  |  |
| 10 |  | Rebar (walls, slabs, columns) |  | 35d | 2026-09-07 | 2026-10-26 | 8 | 189d | 0d | Rebar [4480 h] | 1,000,000 |
| 11 |  | Concrete (walls, slabs, columns) |  | 50d | 2026-10-27 | 2027-01-06 | 10 | 189d | 0d | Concrete [8000 h] | 2,500,000 |
| 12 |  | Structural steel (primary frame) |  | 45d | 2026-11-03 | 2027-01-06 | 11 SS+5d | 189d | 0d | Steel [8640 h] | 2,000,000 |
| 13 |  | Secondary steel (bracing, floor framing) |  | 35d | 2026-11-10 | 2026-12-30 | 12 SS+5d | 189d | 0d | Steel [6720 h] | 1,500,000 |
| 14 |  | Structural concrete (secondary, columns) |  | 25d | 2026-12-31 | 2027-02-03 | 13 | 189d | 0d | Concrete [2000 h] | 1,000,000 |
| 15 |  | Structural weathertight (roof structure + parapets) |  | 15d | 2027-02-04 | 2027-02-24 | 14 | 189d | 0d | Roof [960 h] | 778,000 |

Notes:
- 0: Duration Basis: None - contractual commencement 2026-03-02 (PDC-PC-001 Rev C §2.1) / Notes: Contractual commencement 2026-03-02 (PDC-PC-001 Rev C §2.1)
- 1: Duration Basis: hist-prj-001-act-99 / Notes: 14wd notice window / Expenses: Notice to Commence & Mobilisation (14wd notice window) — Materials/Plant/Sublet 1976960
- 4: Duration Basis: None - survey control points per PDC-SUR-001 (no direct analog) / Notes: Control points per PDC-SUR-001 / Expenses: Survey & setting out (control points) — Materials/Plant/Sublet 998320
- 2: Duration Basis: hist-prj-001-act-99 / Notes: Per PDC-DWG-016 access layout / Expenses: Site establishment (hoarding, access, welfare, temp services) — Materials/Plant/Sublet 1978496
- 3: Duration Basis: None - 110kV earthworks per PDC-GC-001 / PDC-TR-004 (no analog) / Notes: Per PDC-GC-001 / PDC-TR-004 / Expenses: 110kV earthworks (transformer compound & outbuilding) — Materials/Plant/Sublet 976960
- 5: Duration Basis: hist-prj-001-act-134 / Notes: Earthworks only; deeper than 2-storey office foundation / Expenses: General earthworks (grading, drainage, bulk fill) — Materials/Plant/Sublet 1315200
- 6: Duration Basis: None - NO BLAST PRECEDENT in org DB (PDC-SS-001 eastern third); flagged / Notes: NO BLAST PRECEDENT (PDC-SS-001 eastern third); flagged for decision / Expenses: Blasting (eastern third, 4,500 m3) — Materials/Plant/Sublet 856000
- 7: Duration Basis: hist-prj-001-act-134 / Notes: To bedrock 7-9m (PDC-SS-001) + pile caps / Expenses: Piling (foundation piles, to bedrock 7-9m) — Materials/Plant/Sublet 1646400
- 9: Duration Basis: hist-prj-001-act-160 / Notes: Per PDC-SUR-001; perched groundwater N-E corner / Expenses: Stormwater drainage (site) — Materials/Plant/Sublet 844960
- 8: Duration Basis: hist-prj-001-act-139 / Notes: Deeper foundations than 10d office ground slab / Expenses: Foundations: pile caps, ground beam & slab-on-grade — Materials/Plant/Sublet 1140000
- 10: Duration Basis: hist-prj-001-act-143 / Notes: Formwork & reinforcement typical floors / Expenses: Rebar (walls, slabs, columns) — Materials/Plant/Sublet 767040
- 11: Duration Basis: hist-prj-001-act-144 / Notes: Core walls progressive floors / Expenses: Concrete (walls, slabs, columns) — Materials/Plant/Sublet 2100000
- 12: Duration Basis: hist-prj-004-act-149 / Notes: Tower crane floor-by-floor; 5wd winter buffer / Expenses: Structural steel (primary frame) — Materials/Plant/Sublet 1438400
- 13: Duration Basis: hist-prj-004-act-149 / Notes: Tower crane floor-by-floor / Expenses: Secondary steel (bracing, floor framing) — Materials/Plant/Sublet 1063200
- 14: Duration Basis: hist-prj-001-act-147 / Notes: In-situ topping pours / Expenses: Structural concrete (secondary, columns) — Materials/Plant/Sublet 900000
- 15: Duration Basis: hist-prj-001-act-148 / Notes: Roof structure + parapets + data hall roof edge / Expenses: Structural weathertight (roof structure + parapets) — Materials/Plant/Sublet 725200

| ID | WBS | Activity | Duration | Start | Finish | Predecessors | Total float | Free float | Resources | Cost |
| --- | --- | --- | --- | --- | --- | --- | --- | --- | --- | --- |
|  | 4 | **4** |  | 2027-02-25 | 2027-05-05 |  |  |  |  |  |
|  | 4.0 | **4.0 Envelope** |  | 2027-02-25 | 2027-05-05 |  |  |  |  |  |
| 16 |  | Roof (flat, insulated, waterproofed, finished) | 15d | 2027-02-25 | 2027-03-17 | 15 | 189d | 0d | Roof [960 h] | 1,500,000 |
| 17 |  | External cladding (curtain wall) | 40d | 2027-02-25 | 2027-04-21 | 15 | 194d | 0d | Cladding [3840 h] | 2,500,000 |
| 18 |  | Fenestration (glazing) | 20d | 2027-03-04 | 2027-03-31 | 17 SS+5d | 263d |  | Glazing [960 h] | 1,544,000 |
| 19 |  | Data hall containment / internal partitions | 35d | 2027-03-18 | 2027-05-05 | 16, 17 SS+10d | 189d | 0d | Carpenters [2800 h] | 3,500,000 |
|  | 5 | **5** |  | 2027-02-08 | 2027-04-16 |  |  |  |  |  |
|  | 5.0 | **5.0 Electrical & DC Power** |  | 2027-02-08 | 2027-04-16 |  |  |  |  |  |
| 21 |  | Transformer & 110kV substation installation | 10d | 2027-02-08 | 2027-02-19 | 3, 35 | 252d | 0d | Electrical [640 h] | 5,000,000 |
| 20 |  | DC power installation (switchgear, busway, 110kV substation) | 35d | 2027-02-22 | 2027-04-09 | 8, 21 | 252d | 0d | Electrical [5600 h] | 5,000,000 |
| 22 |  | Electrical distribution (switchboards, cabling, lighting) | 35d | 2027-03-01 | 2027-04-16 | 20 SS+5d | 252d | 0d | Electrical [5600 h] | 10,000,000 |
| 23 |  | IT power (UPS, generator feed, UPS battery rooms) | 10d | 2027-03-08 | 2027-03-19 | 22 SS+5d | 252d | 63d | Electrical [640 h] | 5,000,000 |
|  | 6 | **6** |  | 2026-05-13 | 2027-01-13 |  |  |  |  |  |
|  | 6.0 | **6.0 Mechanical** |  | 2026-05-13 | 2027-01-13 |  |  |  |  |  |
| 26 |  | DH boundary works (waste-heat connection) | 10d | 2026-05-13 | 2026-05-26 | 5 | 460d | 0d | Plumbing [480 h] | 1,100,000 |
| 27 |  | DH waste-heat delivery test (72h witnessed, summer window) | 3d | 2026-05-20 | 2026-05-22 | 26 SS+5d | 460d |  | Plumbing [96 h] | 76,000 |
| 24 |  | Mechanical installation (cooling spine, CRTs, DH heat pump) | 45d | 2026-11-10 | 2027-01-13 | 12 SS+5d | 314d | 0d | Mechanical [11520 h] | 15,000,000 |
| 25 |  | Chilled water piping (CRT supply/return) | 25d | 2026-11-17 | 2026-12-21 | 24 SS+5d | 314d | 125d | Mechanical [1600 h] | 6,000,000 |
|  | 7 | **7** |  | 2027-01-07 | 2027-02-24 |  |  |  |  |  |
|  | 7.0 | **7.0 Fire Protection** |  | 2027-01-07 | 2027-02-24 |  |  |  |  |  |
| 28 |  | Fire protection (suppression, detection, piping) | 35d | 2027-01-07 | 2027-02-24 | 11 | 294d | 0d | Fire [2240 h] | 4,200,000 |
| 29 |  | Fire systems integration & test | 10d | 2027-01-14 | 2027-01-27 | 28 SS+5d | 294d | 105d | Fire [480 h] | 300,000 |
|  | 8 | **8** |  | 2027-01-07 | 2027-02-10 |  |  |  |  |  |
|  | 8.0 | **8.0 Plumbing** |  | 2027-01-07 | 2027-02-10 |  |  |  |  |  |
| 30 |  | Plumbing (water supply, drainage, HVAC piping) | 25d | 2027-01-07 | 2027-02-10 | 11 | 249d | 60d | Plumbing [1200 h] | 582,000 |

Notes:
- 16: Duration Basis: hist-prj-001-act-153 / Notes: Roof membrane + insulation + deck / Expenses: Roof (flat, insulated, waterproofed, finished) — Materials/Plant/Sublet 1447200
- 17: Duration Basis: hist-prj-001-act-151 / Notes: Curtain wall phased; weathertight gate / Expenses: External cladding (curtain wall) — Materials/Plant/Sublet 2308000
- 18: Duration Basis: hist-prj-001-act-152 / Notes: Window & glazing; larger DC-1 glass area / Expenses: Fenestration (glazing) — Materials/Plant/Sublet 1497920
- 19: Duration Basis: hist-prj-001-act-201 / Notes: Internal partitions + data hall containment / Expenses: Data hall containment / internal partitions — Materials/Plant/Sublet 3371200
- 21: Duration Basis: hist-prj-001-act-180 / Notes: Transformer & MV switchgear + 110kV gear / Expenses: Transformer & 110kV substation installation — Materials/Plant/Sublet 4955200
- 20: Duration Basis: None - DC power substation per PDC-ER-001 / PDC-TA-001 (no direct analog) / Notes: Substation + busway + switchgear; depends on transformer install / Expenses: DC power installation (switchgear, busway, 110kV substation) — Materials/Plant/Sublet 4608000
- 22: Duration Basis: hist-prj-001-act-185 / Notes: Distribution boards + lighting + DC-1 cabling / Expenses: Electrical distribution (switchboards, cabling, lighting) — Materials/Plant/Sublet 9608000
- 23: Duration Basis: hist-prj-001-act-182 / Notes: Generator & UPS + UPS battery rooms / Expenses: IT power (UPS, generator feed, UPS battery rooms) — Materials/Plant/Sublet 4955200
- 26: Duration Basis: hist-prj-001-act-170 / Notes: DH substation + boundary works / Expenses: DH boundary works (waste-heat connection) — Materials/Plant/Sublet 1072160
- 27: Duration Basis: None - DH test per PDC-DH-001, summer 05-06 window (no analog) / Notes: 72h witnessed test; summer window only - FLAG / Expenses: DH waste-heat delivery test (72h witnessed, summer window) — Materials/Plant/Sublet 70432
- 24: Duration Basis: hist-prj-004-act-177 / Notes: HVAC ductwork + CRTs + DH heat pump + cooling spine / Expenses: Mechanical installation (cooling spine, CRTs, DH heat pump) — Materials/Plant/Sublet 14285760
- 25: Duration Basis: hist-prj-001-act-173 / Notes: DHW/CW piping + chilled water / Expenses: Chilled water piping (CRT supply/return) — Materials/Plant/Sublet 5900800
- 28: Duration Basis: hist-prj-001-act-175 / Notes: Fire sprinkler + fire alarm + detection / Expenses: Fire protection (suppression, detection, piping) — Materials/Plant/Sublet 4056640
- 29: Duration Basis: hist-prj-001-act-218 / Notes: Fire alarm integrated testing + sprinkler commissioning / Expenses: Fire systems integration & test — Materials/Plant/Sublet 269280
- 30: Duration Basis: hist-prj-001-act-173 / Notes: DHW/CW + sanitary piping / Expenses: Plumbing (water supply, drainage, HVAC piping) — Materials/Plant/Sublet 512400

| ID | WBS | Activity | Duration | Start | Finish | Predecessors | Total float | Free float | Resources | Cost |
| --- | --- | --- | --- | --- | --- | --- | --- | --- | --- | --- |
|  | 9 | **9** |  | 2027-03-04 | 2027-06-16 |  |  |  |  |  |
|  | 9.0 | **9.0 IT & Data Hall Fit-out** |  | 2027-03-04 | 2027-06-16 |  |  |  |  |  |
| 31 |  | IT trunking & structured cabling (pre-containment) | 35d | 2027-03-04 | 2027-04-21 | 15, 16 SS+5d | 229d | 40d | IT [2240 h] | 650,000 |
| 32 |  | Data hall fit-out & ICT (post-containment) | 30d | 2027-05-06 | 2027-06-16 | 19, 30, 31 SS+5d | 189d | 0d | IT [1920 h] | 470,000 |
|  | 10 | **10** |  | 2026-05-27 | 2027-03-24 |  |  |  |  |  |
|  | 10.0 | **10.0 External Works** |  | 2026-05-27 | 2027-03-24 |  |  |  |  |  |
| 33 |  | Access road & haul routes | 12d | 2026-05-27 | 2026-06-11 | 9 | 446d |  | Civil [576 h] | 2,000,000 |
| 34 |  | Landscaping / external finishes | 15d | 2027-03-04 | 2027-03-24 | 17 SS+5d | 268d |  | Civil [480 h] | 1,696,000 |
|  | 12 | **12** |  | 2026-03-02 | 2028-04-10 |  |  |  |  |  |
|  | 12.0 | **12.0 Grid Connection (DNO)** |  | 2026-03-02 | 2028-04-10 |  |  |  |  |  |
| 35 |  | Transformer manufacture & delivery (order-by 16-Jan-2026) | 218d | 2026-03-02 | 2027-02-05 | 0 | 0d |  | Supply [1744 h] | 2,720,000 |
| 36 |  | DNO protection coordination & metering | 10d | 2027-02-08 | 2027-02-19 | 35 | 0d |  | DNO [80 h] |  |
| 37 |  | Grid Stage 1 outage window - Hall 1 energisation (2027-04-24) | 71d | 2027-02-22 | 2027-05-31 | 36 | 0d |  | DNO [568 h] |  |
| 38 |  | Grid Stage 2 outage window - Hall 2 energisation (2027-06-30) | 48d | 2027-06-01 | 2027-09-06 | 37 | 0d |  | DNO [384 h] |  |
| 39 |  | Grid Stage 3 outage window - Hall 3 energisation (2027-10-31) | 87d | 2027-09-07 | 2028-01-07 | 38 | 0d |  | DNO [696 h] |  |
| 40 |  | Grid Stage 4 outage window - Hall 4/admin energisation (2028-01-31) | 66d | 2028-01-10 | 2028-04-10 | 39 | 0d |  | DNO [528 h] |  |
|  | 13 | **13** |  | 2027-06-17 | 2028-05-09 |  |  |  |  |  |
|  | 13.0 | **13.0 Commissioning** |  | 2027-06-17 | 2028-05-08 |  |  |  |  |  |
| 41 |  | Integrated testing (L4) - H1 | 10d | 2027-06-17 | 2027-06-30 | 37, 23, 25, 32, 29 SS+5d | 189d | 0d | Commissioning [800 h] | 150,000 |
| 42 |  | Load-bank test (L5) - H1 | 4d | 2027-07-01 | 2027-07-06 | 41 | 189d | 0d | Commissioning [192 h] | 75,000 |
| 43 |  | Pre-handover walkdown & punch - H1 | 5d | 2027-07-07 | 2027-07-13 | 42 | 189d | 0d | Commissioning [320 h] | 50,000 |
| 45 |  | Integrated testing (L4) - H2 | 10d | 2027-09-07 | 2027-09-20 | 38, 23, 25, 32, 29 SS+5d | 153d | 0d | Commissioning [800 h] | 150,000 |
| 46 |  | Load-bank test (L5) - H2 | 4d | 2027-09-21 | 2027-09-24 | 45 | 153d | 0d | Commissioning [192 h] | 75,000 |
| 47 |  | Pre-handover walkdown & punch - H2 | 5d | 2027-09-27 | 2027-10-04 | 46 | 153d | 0d | Commissioning [320 h] | 50,000 |
| 49 |  | Integrated testing (L4) - H3 | 10d | 2028-01-10 | 2028-01-21 | 39, 23, 25, 32, 29 SS+5d | 66d | 0d | Commissioning [800 h] | 150,000 |
| 50 |  | Load-bank test (L5) - H3 | 4d | 2028-01-24 | 2028-01-27 | 49 | 66d | 0d | Commissioning [192 h] | 75,000 |
| 51 |  | Pre-handover walkdown & punch - H3 | 5d | 2028-01-28 | 2028-02-03 | 50 | 66d | 0d | Commissioning [320 h] | 50,000 |
| 53 |  | Integrated testing (L4) - H4 | 10d | 2028-04-11 | 2028-04-24 | 40, 23, 25, 32, 29 SS+5d | 0d |  | Commissioning [800 h] | 150,000 |
| 54 |  | Load-bank test (L5) - H4 | 4d | 2028-04-25 | 2028-04-28 | 53 | 0d |  | Commissioning [192 h] | 75,000 |
| 55 |  | Pre-handover walkdown & punch - H4 | 5d | 2028-05-02 | 2028-05-08 | 54 | 0d |  | Commissioning [320 h] | 50,000 |

Notes:
- 31: Duration Basis: hist-prj-001-act-190 / Notes: Data cabling + racks / Expenses: IT trunking & structured cabling (pre-containment) — Materials/Plant/Sublet 488720
- 32: Duration Basis: hist-prj-001-act-190 / Notes: ICT/data hall fit-out / Expenses: Data hall fit-out & ICT (post-containment) — Materials/Plant/Sublet 331760
- 33: Duration Basis: hist-prj-001-act-161 / Notes: Access road + haul routes / Expenses: Access road & haul routes — Materials/Plant/Sublet 1972352
- 34: Duration Basis: hist-prj-001-act-162 / Notes: Landscaping + hardscape / Expenses: Landscaping / external finishes — Materials/Plant/Sublet 1672960
- 35: Duration Basis: None - PDC-GC-001 / LT-01: order 16-Jan-2026 (negative float), deliver 31-Dec-2026 (DNO/manufacturer, no analog) / Notes: DNO/manufacturer committed: order 16-Jan-2026 (negative float), deliver 31-Dec-2026 / Expenses: Transformer manufacture & delivery (order-by 16-Jan-2026) — Materials/Plant/Sublet 2720000
- 36: Duration Basis: None - PDC-GC-001 §3: protection coordination & metering 10wd (DNO, no analog) / Notes: Per PDC-GC-001 §3: protection coordination & metering 10wd
- 37: Duration Basis: None - PDC-GC-001 / PDC-LTR-PMC-014: firm 24-Apr-2027 (revised from 12-Mar; DNO-committed, no analog) / Notes: PDC-GC-001 / PDC-LTR-PMC-014: firm 24-Apr-2027 (revised from 12-Mar)
- 38: Duration Basis: None - PDC-GC-001: firm 30-Jun-2027 (DNO-committed, no analog) / Notes: PDC-GC-001: firm 30-Jun-2027
- 39: Duration Basis: None - PDC-GC-001: firm 31-Oct-2027 (DNO-committed, no analog) / Notes: PDC-GC-001: firm 31-Oct-2027
- 40: Duration Basis: None - PDC-GC-001: firm 31-Jan-2028 (DNO-committed, no analog) / Notes: PDC-GC-001: firm 31-Jan-2028
- 41: Duration Basis: hist-prj-001-act-220 / Notes: BMS/BAS integrated functional testing + HVAC TAB / Expenses: Integrated testing (L4) - H1 — Materials/Plant/Sublet 87600
- 42: Duration Basis: None - load-bank test per PDC-ER-001 L5 (no direct analog) / Notes: L5 load-bank (24h test) / Expenses: Load-bank test (L5) - H1 — Materials/Plant/Sublet 60024
- 43: Duration Basis: None - walkdown & punch per PDC-ER-001 (no direct analog) / Notes: Pre-handover walkdown / Expenses: Pre-handover walkdown & punch - H1 — Materials/Plant/Sublet 25040
- 45: Duration Basis: hist-prj-001-act-220 / Notes: BMS/BAS integrated functional testing + HVAC TAB / Expenses: Integrated testing (L4) - H2 — Materials/Plant/Sublet 87600
- 46: Duration Basis: None - load-bank test per PDC-ER-001 L5 (no direct analog) / Notes: L5 load-bank (24h test) / Expenses: Load-bank test (L5) - H2 — Materials/Plant/Sublet 60024
- 47: Duration Basis: None - walkdown & punch per PDC-ER-001 (no direct analog) / Notes: Pre-handover walkdown / Expenses: Pre-handover walkdown & punch - H2 — Materials/Plant/Sublet 25040
- 49: Duration Basis: hist-prj-001-act-220 / Notes: BMS/BAS integrated functional testing + HVAC TAB / Expenses: Integrated testing (L4) - H3 — Materials/Plant/Sublet 87600
- 50: Duration Basis: None - load-bank test per PDC-ER-001 L5 (no direct analog) / Notes: L5 load-bank (24h test) / Expenses: Load-bank test (L5) - H3 — Materials/Plant/Sublet 60024
- 51: Duration Basis: None - walkdown & punch per PDC-ER-001 (no direct analog) / Notes: Pre-handover walkdown / Expenses: Pre-handover walkdown & punch - H3 — Materials/Plant/Sublet 25040
- 53: Duration Basis: hist-prj-001-act-220 / Notes: BMS/BAS integrated functional testing + HVAC TAB / Expenses: Integrated testing (L4) - H4 — Materials/Plant/Sublet 87600
- 54: Duration Basis: None - load-bank test per PDC-ER-001 L5 (no direct analog) / Notes: L5 load-bank (24h test) / Expenses: Load-bank test (L5) - H4 — Materials/Plant/Sublet 60024
- 55: Duration Basis: None - walkdown & punch per PDC-ER-001 (no direct analog) / Notes: Pre-handover walkdown / Expenses: Pre-handover walkdown & punch - H4 — Materials/Plant/Sublet 25040

| ID | WBS | Activity | Type | Duration | Start | Finish | Predecessors | Total float | Resources | Cost |
| --- | --- | --- | --- | --- | --- | --- | --- | --- | --- | --- |
|  | 13.1 | **13.1 TFC Milestones** |  |  | 2027-07-14 | 2028-05-09 |  |  |  |  |
| 44 |  | Section H1 TFC date (contractual milestone) | milestone | 0d | 2027-07-14 | 2027-07-14 | 43 | 189d | Commissioning |  |
| 48 |  | Section H2 TFC date (contractual milestone) | milestone | 0d | 2027-10-05 | 2027-10-05 | 47 | 153d | Commissioning |  |
| 52 |  | Section H3 TFC date (contractual milestone) | milestone | 0d | 2028-02-04 | 2028-02-04 | 51 | 66d | Commissioning |  |
| 56 |  | Section H4 TFC date (contractual milestone) | milestone | 0d | 2028-05-09 | 2028-05-09 | 55 | 0d | Commissioning |  |
|  | 14 | **14** |  |  | 2028-05-09 | 2028-05-30 |  |  |  |  |
|  | 14.0 | **14.0 Final Handover** |  |  | 2028-05-09 | 2028-05-29 |  |  |  |  |
| 57 |  | Final completion & as-built submission |  | 15d | 2028-05-09 | 2028-05-29 | 44, 48, 52, 56, 18, 33, 34, 27 | 0d | Project Mgmt [1200 h] | 1,210,000 |
|  | 14.1 | **14.1 Completion Milestone** |  |  | 2028-05-30 | 2028-05-30 |  |  |  |  |
| 58 |  | PROJECT COMPLETION (milestone) | milestone | 0d | 2028-05-30 | 2028-05-30 | 57 | 0d | Project Mgmt |  |

Notes:
- 44: Duration Basis: None - contractual TFC S1=2027-05-02 (PDC-PC-001 Rev C §2.2) / Notes: Contractual TFC H1 = 2027-05-02 (PDC-PC-001 Rev C §2.2)
- 48: Duration Basis: None - contractual TFC S2=2027-07-02 (PDC-PC-001 Rev C §2.2) / Notes: Contractual TFC H2 = 2027-07-02 (PDC-PC-001 Rev C §2.2)
- 52: Duration Basis: None - contractual TFC S3=2027-10-02 (PDC-PC-001 Rev C §2.2) / Notes: Contractual TFC H3 = 2027-10-02 (PDC-PC-001 Rev C §2.2)
- 56: Duration Basis: None - contractual TFC S4=2028-01-02 (PDC-PC-001 Rev C §2.2) / Notes: Contractual TFC H4 = 2028-01-02 (PDC-PC-001 Rev C §2.2)
- 57: Duration Basis: hist-prj-001-act-221 / Notes: Snagging & remediation + as-built + handover / Expenses: Final completion & as-built submission — Materials/Plant/Sublet 1108000
- 58: Duration Basis: None - single project completion milestone (contractual) / Notes: Single project completion milestone, successor to Final completion & as-built submission (57)
