# Aurora Tower — 13-Storey Pre-fab Office, Helsinki

Schedule from Primavera P6, 2026-05-20 to 2029-03-16, costs in USD.
Must finish by 2029-03-16

## Resources

| Resource | Group | Rate |
| --- | --- | --- |
| Design Team - Architectural | labor | 120 |
| Design Team - Structural | labor | 125 |
| Site Establishment Crew | labor | 65 |
| Earthworks Crew | labor | 55 |
| Piling Crew | labor | 85 |
| Concrete Crew | labor | 60 |
| Precast Erection Crew | labor | 85 |
| Jump-Form Crew A | labor | 75 |
| Jump-Form Crew B | labor | 75 |
| Steel Erection Crew | labor | 90 |
| MEP Crew | labor | 80 |
| Façade Crew | labor | 70 |
| Interior Crew | labor | 65 |
| Finishes Crew | labor | 65 |
| External Crew | labor | 55 |
| Commissioning Crew | labor | 95 |
| Cleaning Crew | labor | 45 |

## Schedule

| ID | Activity | Type | Duration | Start | Finish | Predecessors | Total float | Resources | Cost |
| --- | --- | --- | --- | --- | --- | --- | --- | --- | --- |
| 1 | Project Start / Design NTP | milestone | 0d | 2026-05-20 | 2026-05-20 |  | 0d |  |  |
| 2 | Concept & Scheme Design (Architectural) |  | 50d | 2026-05-20 | 2026-07-28 | 1 | 5d | Design Team - Architectural [1600 h] | 192,000 |
| 3 | Structural Scheme Design (precast + cores + transfer) |  | 50d | 2026-05-20 | 2026-07-28 | 1 | 37d | Design Team - Structural [1200 h] | 150,000 |
| 4 | MEP Scheme Design (HVAC, electrical, lifts, plumbing) |  | 55d | 2026-05-20 | 2026-08-04 | 1 | 0d |  |  |
| 5 | Permit — Building Permit (Rakennuslupa) submission & issue |  | 80d | 2026-07-29 | 2026-11-17 | 2, 3 | 97d |  |  |
| 6 | Design Development — Architectural (GA drawings) |  | 55d | 2026-07-29 | 2026-10-13 | 2 | 5d |  |  |
| 7 | Design Development — Structural (precast detailing, jump-form cores, transfer) |  | 65d | 2026-07-29 | 2026-10-27 | 3 | 37d |  |  |
| 8 | Design Development — MEP & lifts |  | 55d | 2026-08-05 | 2026-10-20 | 4 | 0d |  |  |
| 12 | Procurement Tender — Façade (carrier frame + panels + glazing) |  | 25d | 2026-10-21 | 2026-11-24 | 6, 8 | 0d |  |  |
| 10 | Procurement Tender — Precast supplier (columns, beams, HC planks) |  | 25d | 2026-10-28 | 2026-12-01 | 7 | 37d |  |  |
| 11 | Structural Steel Order — Transfer Truss (12-week lead, delivered before L04 erection) |  | 50d | 2026-10-28 | 2027-01-05 | 7 | 189d |  |  |
| 9 | Precast Design FREEZE (architectural + structural) | milestone | 0d | 2026-10-28 | 2026-10-28 | 7 | 62d |  |  |
| 13 | Procurement Tender — MEP sub-packages |  | 25d | 2026-11-25 | 2026-12-29 | 8, 12 | 578d |  |  |
| 16 | Pre-site staging & contractor mobilisation period (precast delivered, contractor pre-mobilises off-site… |  | 92d | 2026-11-25 | 2027-04-01 | 12 | 0d |  |  |
| 14 | Precast Factory Order (14-week lead) — first deliveries arrive end Jan 2027 |  | 50d | 2026-12-02 | 2027-02-09 | 10, 9 | 37d |  |  |
| 15 | Structural Steel Order — Transfer Truss (12-week lead) |  | 12d | 2027-01-06 | 2027-01-21 | 11 | 189d |  |  |
| 17 | Construction NTP / Site Possession (Contractual: 1 April 2027 — no site activity before) | milestone | 0d | 2027-04-02 | 2027-04-02 | 5, 6, 7, 8, 9, 14, 16 | 0d |  |  |
| 18 | Pre-construction Procurement Period — sub-contract letting, final design coordination, insurances (anchors NTP at 1… |  | 35d | 2027-04-02 | 2027-05-20 | 17 | 74d | Site Establishment Crew [2240 h] | 240,000 |
| 19 | Preliminaries — surveys, ground investigation, utility checks |  | 12d | 2027-04-02 | 2027-04-19 | 17 | 0d |  |  |
| 20 | Excavation & bulk earthworks (basement) |  | 16d | 2027-04-20 | 2027-05-11 | 19 | 0d | Earthworks Crew [640 h] | 180,000 |
| 21 | Piling (continuous flight auger, ~120 piles) |  | 25d | 2027-05-12 | 2027-06-15 | 20 | 0d | Piling Crew [1600 h] | 620,000 |
| 22 | Foundation Raft & Pile Caps (Basement B1) |  | 20d | 2027-06-16 | 2027-07-13 | 21 | 0d | Concrete Crew [1280 h] | 540,000 |
| 23 | Basement Walls (B1 — perimeter RC) |  | 16d | 2027-07-14 | 2027-08-04 | 22 | 0d | Concrete Crew [1024 h] | 310,000 |
| 24 | Basement Slab on Grade + waterproofing |  | 10d | 2027-08-05 | 2027-08-18 | 23 | 0d | Concrete Crew [480 h] | 160,000 |
| 25 | Ground Floor Slab Prep (Level 01 substructure zone) |  | 10d | 2027-08-19 | 2027-09-01 | 24 | 0d | Concrete Crew [640 h] | 140,000 |
| 26 | Substructure Practical Completion | milestone | 0d | 2027-09-02 | 2027-09-02 | 25 | 0d |  |  |
| 27 | Set up Tower Crane 1 (heavy-lift, precast handling) |  | 10d | 2027-09-02 | 2027-09-15 | 26, 18 | 0d |  |  |
| 28 | Set up Tower Crane 2 (second precast handling, jump-form cores) |  | 10d | 2027-09-02 | 2027-09-15 | 26, 18 | 0d |  |  |
| 40 | Erect Atrium Columns L01-L13 (4 full-height, 4 storeys/batch) |  | 10d | 2027-09-02 | 2027-09-15 | 25, 14 | 31d | Precast Erection Crew [480 h] | 130,000 |
| 29 | Core-A Jump-Form Setup (Ground to Roof, ~14 cycles) |  | 8d | 2027-09-16 | 2027-09-27 | 27, 28 | 0d | Jump-Form Crew A [640 h] | 90,000 |
| 30 | Core-B Jump-Form Setup |  | 8d | 2027-09-16 | 2027-09-27 | 27, 28 | 0d | Jump-Form Crew B [640 h] | 90,000 |
| 31 | Core-A Jump-Form Cycle — Floor 01 (RC walls, 4-day cycle) |  | 4d | 2027-09-28 | 2027-10-01 | 29 | 0d | Jump-Form Crew A [320 h] | 45,000 |
| 32 | Core-B Jump-Form Cycle — Floor 01 |  | 4d | 2027-09-28 | 2027-10-01 | 30 | 0d | Jump-Form Crew B [320 h] | 45,000 |
| 33 | Core-A Jump-Form Cycle — Floor 02 |  | 4d | 2027-10-04 | 2027-10-07 | 31 | 0d |  |  |
| 34 | Core-B Jump-Form Cycle — Floor 02 |  | 4d | 2027-10-04 | 2027-10-07 | 32 | 0d |  |  |
| 41 | Precast Erection — Floor 01 (columns + spine beams + HC planks) |  | 3d | 2027-10-04 | 2027-10-06 | 31, 32, 40 | 19d | Precast Erection Crew [192 h] | 95,000 |
| 42 | Structural Topping & Welds — Floor 01 (in-situ concrete tie, winter-heated) |  | 5d | 2027-10-07 | 2027-10-13 | 41 | 19d | Concrete Crew [320 h] | 70,000 |
| 35 | Core-A Jump-Form Cycle — Floor 03 |  | 4d | 2027-10-08 | 2027-10-13 | 33 | 0d |  |  |
| 36 | Core-B Jump-Form Cycle — Floor 03 |  | 4d | 2027-10-08 | 2027-10-13 | 34 | 0d |  |  |
| 110 | MEP Rough-in — Floor 01 (HVAC, electrical, plumbing risers) |  | 10d | 2027-10-14 | 2027-10-27 | 42 | 78d | MEP Crew [1280 h] | 180,000 |
| 37 | Erect Composite Steel Transfer Truss at Level 04 (incl. welded connections) |  | 15d | 2027-10-14 | 2027-11-03 | 35, 36, 15 | 0d | Steel Erection Crew [960 h] | 320,000 |
| 38 | Core-A Jump-Form Cycle — Floor 04 |  | 4d | 2027-11-04 | 2027-11-09 | 37 | 0d |  |  |
| 39 | Core-B Jump-Form Cycle — Floor 04 |  | 4d | 2027-11-04 | 2027-11-09 | 37 | 0d |  |  |
| 43 | Precast Erection — Floor 02 |  | 3d | 2027-11-10 | 2027-11-12 | 38, 39, 42 | 0d |  |  |
| 44 | Structural Topping & Welds — Floor 02 |  | 5d | 2027-11-15 | 2027-11-19 | 43 | 0d |  |  |
| 111 | MEP Rough-in — Floor 02 |  | 10d | 2027-11-22 | 2027-12-03 | 44, 110 | 61d |  |  |
| 45 | Precast Erection — Floor 03 |  | 3d | 2027-11-22 | 2027-11-24 | 44 | 0d |  |  |
| 46 | Structural Topping & Welds — Floor 03 |  | 5d | 2027-11-25 | 2027-12-01 | 45 | 0d |  |  |
| 47 | Precast Erection — Floor 04 (off transfer truss) |  | 4d | 2027-12-02 | 2027-12-07 | 38, 39, 46 | 0d |  |  |
| 112 | MEP Rough-in — Floor 03 |  | 10d | 2027-12-06 | 2027-12-17 | 46, 111 | 61d |  |  |
| 48 | Structural Topping & Welds — Floor 04 |  | 5d | 2027-12-08 | 2027-12-14 | 47 | 0d |  |  |
| 49 | Precast Erection — Floor 05 |  | 3d | 2027-12-15 | 2027-12-17 | 48 | 0d |  |  |
| 113 | MEP Rough-in — Floor 04 |  | 10d | 2027-12-20 | 2027-12-31 | 48, 112 | 61d |  |  |
| 50 | Structural Topping & Welds — Floor 05 |  | 5d | 2027-12-20 | 2027-12-24 | 49 | 0d |  |  |
| 51 | Precast Erection — Floor 06 |  | 3d | 2027-12-27 | 2027-12-29 | 50 | 0d |  |  |
| 72 | Façade Survey — North Elevation L01-L13 (carrier frame survey) |  | 8d | 2027-12-27 | 2028-01-05 | 50, 16 | 21d | Façade Crew [320 h] | 35,000 |
| 52 | Structural Topping & Welds — Floor 06 |  | 5d | 2027-12-30 | 2028-01-05 | 51 | 0d |  |  |
| 114 | MEP Rough-in — Floor 05 |  | 10d | 2028-01-03 | 2028-01-14 | 50, 113 | 61d |  |  |
| 53 | Precast Erection — Floor 07 |  | 3d | 2028-01-06 | 2028-01-10 | 52 | 8d |  |  |
| 73 | Façade Survey — South Elevation L01-L13 |  | 8d | 2028-01-06 | 2028-01-17 | 52, 16 | 0d |  |  |
| 76 | Install Façade Carrier Frame — North L01-L04 (3 weeks survey → panels order lag) |  | 12d | 2028-01-06 | 2028-01-21 | 72 | 22d | Façade Crew [576 h] | 110,000 |
| 77 | Façade Panels Order — North (3-week minimum lag from survey) |  | 21d | 2028-01-06 | 2028-02-03 | 72 | 21d |  |  |
| 54 | Structural Topping & Welds — Floor 07 |  | 5d | 2028-01-11 | 2028-01-17 | 53 | 8d |  |  |
| 115 | MEP Rough-in — Floor 06 |  | 10d | 2028-01-17 | 2028-01-28 | 52, 114 | 61d |  |  |
| 55 | Precast Erection — Floor 08 |  | 3d | 2028-01-18 | 2028-01-20 | 54 | 8d |  |  |
| 74 | Façade Survey — East Elevation L01-L13 |  | 8d | 2028-01-18 | 2028-01-27 | 54, 16 | 28d |  |  |
| 80 | Install Façade Carrier Frame — South L01-L04 |  | 12d | 2028-01-18 | 2028-02-02 | 73 | 1d |  |  |
| 81 | Façade Panels Order — South |  | 21d | 2028-01-18 | 2028-02-15 | 73 | 0d |  |  |
| 56 | Structural Topping & Welds — Floor 08 |  | 5d | 2028-01-21 | 2028-01-27 | 55 | 8d |  |  |
| 78 | Façade Insulation — North L01-L04 |  | 8d | 2028-01-24 | 2028-02-02 | 76 | 22d |  |  |

Notes:
- 16: Full name: Pre-site staging & contractor mobilisation period (precast delivered, contractor pre-mobilises off-site, sub-contract letting, final insurances — no on-site activity permitted before NTP = 1 Apr 2027)
- 18: Full name: Pre-construction Procurement Period — sub-contract letting, final design coordination, insurances (anchors NTP at 1 Apr 2027) / Expenses: Pre-construction Procurement Period — sub-contract letting, final design coordination, insurances (anchors NTP at 1 Apr 2027) — Materials/Plant/Sublet 94400
- 20: Expenses: Excavation & bulk earthworks (basement) — Materials/Plant/Sublet 144800
- 21: Expenses: Piling (continuous flight auger, ~120 piles) — Materials/Plant/Sublet 484000
- 22: Expenses: Foundation Raft & Pile Caps (Basement B1) — Materials/Plant/Sublet 463200
- 23: Expenses: Basement Walls (B1 — perimeter RC) — Materials/Plant/Sublet 248560
- 24: Expenses: Basement Slab on Grade + waterproofing — Materials/Plant/Sublet 131200
- 25: Expenses: Ground Floor Slab Prep (Level 01 substructure zone) — Materials/Plant/Sublet 101600
- 40: Expenses: Erect Atrium Columns L01-L13 (4 full-height, 4 storeys/batch) — Materials/Plant/Sublet 89200
- 29: Expenses: Core-A Jump-Form Setup (Ground to Roof, ~14 cycles) — Materials/Plant/Sublet 42000
- 30: Expenses: Core-B Jump-Form Setup — Materials/Plant/Sublet 42000
- 31: Expenses: Core-A Jump-Form Cycle — Floor 01 (RC walls, 4-day cycle) — Materials/Plant/Sublet 21000
- 32: Expenses: Core-B Jump-Form Cycle — Floor 01 — Materials/Plant/Sublet 21000
- 41: Expenses: Precast Erection — Floor 01 (columns + spine beams + HC planks) — Materials/Plant/Sublet 78680
- 42: Expenses: Structural Topping & Welds — Floor 01 (in-situ concrete tie, winter-heated) — Materials/Plant/Sublet 50800
- 110: Expenses: MEP Rough-in — Floor 01 (HVAC, electrical, plumbing risers) — Materials/Plant/Sublet 77600
- 37: Expenses: Erect Composite Steel Transfer Truss at Level 04 (incl. welded connections) — Materials/Plant/Sublet 233600
- 72: Expenses: Façade Survey — North Elevation L01-L13 (carrier frame survey) — Materials/Plant/Sublet 12600
- 76: Expenses: Install Façade Carrier Frame — North L01-L04 (3 weeks survey → panels order lag) — Materials/Plant/Sublet 69680

| ID | Activity | Type | Duration | Start | Finish | Predecessors | Total float | Resources | Cost |
| --- | --- | --- | --- | --- | --- | --- | --- | --- | --- |
| 57 | Precast Erection — Floor 09 |  | 3d | 2028-01-28 | 2028-02-01 | 56 | 9d |  |  |
| 75 | Façade Survey — West Elevation L01-L13 |  | 8d | 2028-01-28 | 2028-02-08 | 56, 16 | 8d |  |  |
| 84 | Install Façade Carrier Frame — East L01-L04 |  | 10d | 2028-01-28 | 2028-02-10 | 74 | 32d |  |  |
| 85 | Façade Panels Order — East |  | 21d | 2028-01-28 | 2028-02-25 | 74 | 28d |  |  |
| 116 | MEP Rough-in — Floor 07 |  | 10d | 2028-01-31 | 2028-02-11 | 54, 115 | 61d |  |  |
| 58 | Structural Topping & Welds — Floor 09 |  | 5d | 2028-02-02 | 2028-02-08 | 57 | 9d |  |  |
| 82 | Façade Insulation — South L01-L04 |  | 8d | 2028-02-03 | 2028-02-14 | 80 | 1d |  |  |
| 79 | Façade Panels Install — North L01-L04 |  | 14d | 2028-02-04 | 2028-02-23 | 77, 78 | 21d |  |  |
| 59 | Precast Erection — Floor 10 |  | 3d | 2028-02-09 | 2028-02-11 | 58 | 9d |  |  |
| 88 | Install Façade Carrier Frame — West L01-L04 |  | 10d | 2028-02-09 | 2028-02-22 | 75 | 12d |  |  |
| 89 | Façade Panels Order — West |  | 21d | 2028-02-09 | 2028-03-08 | 75 | 8d |  |  |
| 86 | Façade Insulation — East L01-L04 |  | 7d | 2028-02-11 | 2028-02-21 | 84 | 32d |  |  |
| 117 | MEP Rough-in — Floor 08 |  | 10d | 2028-02-14 | 2028-02-25 | 56, 116 | 61d |  |  |
| 60 | Structural Topping & Welds — Floor 10 |  | 5d | 2028-02-14 | 2028-02-18 | 59 | 9d |  |  |
| 83 | Façade Panels Install — South L01-L04 |  | 12d | 2028-02-16 | 2028-03-02 | 81, 82 | 0d |  |  |
| 61 | Precast Erection — Floor 11 |  | 3d | 2028-02-21 | 2028-02-23 | 60 | 17d |  |  |
| 90 | Façade Insulation — West L01-L04 |  | 7d | 2028-02-23 | 2028-03-02 | 88 | 12d |  |  |
| 124 | Drywall & Partitions — Floor 01 |  | 12d | 2028-02-24 | 2028-03-10 | 110, 79 | 47d | Interior Crew [1152 h] | 90,000 |
| 62 | Structural Topping & Welds — Floor 11 |  | 5d | 2028-02-24 | 2028-03-01 | 61 | 17d |  |  |
| 92 | Install Façade Carrier Frame — North L05-L13 |  | 14d | 2028-02-24 | 2028-03-14 | 58, 79 | 21d |  |  |
| 93 | Façade Panels Order — North upper |  | 21d | 2028-02-24 | 2028-03-23 | 58, 79 | 24d |  |  |
| 118 | MEP Rough-in — Floor 09 |  | 10d | 2028-02-28 | 2028-03-10 | 58, 117 | 61d |  |  |
| 87 | Façade Panels Install — East L01-L04 |  | 12d | 2028-02-28 | 2028-03-14 | 85, 86 | 28d |  |  |
| 63 | Precast Erection — Floor 12 |  | 3d | 2028-03-02 | 2028-03-06 | 62 | 17d |  |  |
| 125 | Drywall & Partitions — Floor 02 |  | 12d | 2028-03-03 | 2028-03-20 | 111, 83 | 17d |  |  |
| 96 | Install Façade Carrier Frame — South L05-L13 |  | 14d | 2028-03-03 | 2028-03-22 | 60, 83 | 0d |  |  |
| 97 | Façade Panels Order — South upper |  | 21d | 2028-03-03 | 2028-03-31 | 60, 83 | 3d |  |  |
| 64 | Structural Topping & Welds — Floor 12 |  | 5d | 2028-03-07 | 2028-03-13 | 63 | 17d |  |  |
| 91 | Façade Panels Install — West L01-L04 |  | 12d | 2028-03-09 | 2028-03-24 | 89, 90 | 8d |  |  |
| 119 | MEP Rough-in — Floor 10 |  | 10d | 2028-03-13 | 2028-03-24 | 60, 118 | 61d |  |  |
| 137 | Floor Finishes — Floor 01 (raised access, screed, carpet, suspended ceiling) |  | 16d | 2028-03-13 | 2028-04-03 | 124 | 169d | Finishes Crew [1536 h] | 120,000 |
| 65 | Precast Erection — Floor 13 (top floor) |  | 4d | 2028-03-14 | 2028-03-17 | 64 | 84d |  |  |
| 100 | Install Façade Carrier Frame — East L05-L13 |  | 12d | 2028-03-15 | 2028-03-30 | 62, 87 | 29d |  |  |
| 101 | Façade Panels Order — East upper |  | 21d | 2028-03-15 | 2028-04-12 | 62, 87 | 28d |  |  |
| 126 | Drywall & Partitions — Floor 03 |  | 12d | 2028-03-15 | 2028-03-30 | 112, 87, 124 | 45d |  |  |
| 94 | Façade Insulation — North L05-L13 |  | 10d | 2028-03-15 | 2028-03-28 | 92 | 21d |  |  |
| 66 | Structural Topping & Welds — Floor 13 |  | 5d | 2028-03-20 | 2028-03-24 | 65 | 84d |  |  |
| 138 | Floor Finishes — Floor 02 |  | 16d | 2028-03-21 | 2028-04-11 | 125 | 17d |  |  |
| 98 | Façade Insulation — South L05-L13 |  | 10d | 2028-03-23 | 2028-04-05 | 96 | 0d |  |  |
| 104 | Install Façade Carrier Frame — West L05-L13 |  | 12d | 2028-03-27 | 2028-04-11 | 64, 91 | 9d |  |  |
| 105 | Façade Panels Order — West upper |  | 21d | 2028-03-27 | 2028-04-24 | 64, 91 | 8d |  |  |
| 120 | MEP Rough-in — Floor 11 |  | 10d | 2028-03-27 | 2028-04-07 | 62, 119 | 61d |  |  |
| 127 | Drywall & Partitions — Floor 04 |  | 12d | 2028-03-27 | 2028-04-11 | 113, 91, 125 | 17d |  |  |
| 67 | Core-A Jump-Form Final Lift to Roof |  | 5d | 2028-03-27 | 2028-03-31 | 66 | 84d |  |  |
| 68 | Core-B Jump-Form Final Lift to Roof |  | 5d | 2028-03-27 | 2028-03-31 | 66 | 84d |  |  |
| 71 | STRUCTURAL TOPPING OUT MILESTONE (F13 topping complete = building structurally topped out) | milestone | 0d | 2028-03-27 | 2028-03-27 | 66 | 202d |  |  |
| 95 | Façade Panels Install — North L05-L13 |  | 22d | 2028-03-29 | 2028-04-27 | 93, 94 | 21d |  |  |
| 102 | Façade Insulation — East L05-L13 |  | 8d | 2028-03-31 | 2028-04-11 | 100 | 29d |  |  |
| 69 | Roof Slab (in-situ, RC, heated enclosure) |  | 12d | 2028-04-03 | 2028-04-18 | 67, 68 | 84d | Concrete Crew [960 h] | 220,000 |
| 139 | Floor Finishes — Floor 03 |  | 16d | 2028-04-04 | 2028-04-25 | 126, 137 | 169d |  |  |
| 99 | Façade Panels Install — South L05-L13 |  | 25d | 2028-04-06 | 2028-05-10 | 97, 98 | 0d |  |  |
| 121 | MEP Rough-in — Floor 12 |  | 10d | 2028-04-10 | 2028-04-21 | 64, 120 | 61d |  |  |
| 106 | Façade Insulation — West L05-L13 |  | 8d | 2028-04-12 | 2028-04-21 | 104 | 9d |  |  |
| 140 | Floor Finishes — Floor 04 |  | 16d | 2028-04-12 | 2028-05-03 | 127, 138 | 17d |  |  |
| 103 | Façade Panels Install — East L05-L13 |  | 20d | 2028-04-13 | 2028-05-10 | 101, 102 | 28d |  |  |
| 70 | Roof Plant Screen Walls (RC upstands) |  | 8d | 2028-04-19 | 2028-04-28 | 69 | 84d |  |  |
| 122 | MEP Rough-in — Floor 13 |  | 10d | 2028-04-24 | 2028-05-05 | 66, 121 | 67d |  |  |
| 107 | Façade Panels Install — West L05-L13 |  | 20d | 2028-04-25 | 2028-05-22 | 105, 106 | 8d |  |  |
| 128 | Drywall & Partitions — Floor 05 |  | 12d | 2028-04-28 | 2028-05-15 | 114, 95, 126 | 25d |  |  |
| 123 | MEP Roof Plant — chiller plant, AHU, lifts motor room |  | 20d | 2028-05-08 | 2028-06-02 | 70, 122 | 79d | MEP Crew [2560 h] | 380,000 |
| 152 | Lift installation & commissioning (4 passenger + 2 service lifts) |  | 45d | 2028-05-08 | 2028-07-07 | 122 | 124d |  |  |
| 108 | Glazing & Curtain Wall — Atrium & entrances |  | 20d | 2028-05-11 | 2028-06-07 | 95, 99 | 12d |  |  |
| 129 | Drywall & Partitions — Floor 06 |  | 12d | 2028-05-11 | 2028-05-26 | 115, 99, 127 | 0d |  |  |
| 130 | Drywall & Partitions — Floor 07 |  | 12d | 2028-05-16 | 2028-05-31 | 116, 103, 128 | 25d |  |  |
| 141 | Floor Finishes — Floor 05 |  | 16d | 2028-05-16 | 2028-06-06 | 128, 139 | 155d |  |  |
| 131 | Drywall & Partitions — Floor 08 |  | 12d | 2028-05-29 | 2028-06-13 | 117, 107, 129 | 4d |  |  |
| 142 | Floor Finishes — Floor 06 |  | 16d | 2028-05-29 | 2028-06-19 | 129, 140 | 0d |  |  |
| 143 | Floor Finishes — Floor 07 |  | 16d | 2028-06-07 | 2028-06-28 | 130, 141 | 155d |  |  |
| 109 | BUILDING WEATHERTIGHT MILESTONE (envelope closed L01-L13, glazing, roof sealed) | milestone | 0d | 2028-06-08 | 2028-06-08 | 107, 103, 108, 71 | 149d |  |  |
| 132 | Drywall & Partitions — Floor 09 |  | 12d | 2028-06-08 | 2028-06-23 | 118, 108, 130 | 20d |  |  |

Notes:
- 124: Expenses: Drywall & Partitions — Floor 01 — Materials/Plant/Sublet 15120
- 137: Expenses: Floor Finishes — Floor 01 (raised access, screed, carpet, suspended ceiling) — Materials/Plant/Sublet 20160
- 69: Expenses: Roof Slab (in-situ, RC, heated enclosure) — Materials/Plant/Sublet 162400
- 123: Expenses: MEP Roof Plant — chiller plant, AHU, lifts motor room — Materials/Plant/Sublet 175200

| ID | Activity | Type | Duration | Start | Finish | Predecessors | Total float | Resources | Cost |
| --- | --- | --- | --- | --- | --- | --- | --- | --- | --- |
| 153 | External works — paving, landscaping, cycle store, loading bay, substation enclosure |  | 35d | 2028-06-08 | 2028-07-26 | 26, 109 | 149d | External Crew [1400 h] | 180,000 |
| 133 | Drywall & Partitions — Floor 10 |  | 12d | 2028-06-14 | 2028-06-29 | 119, 108, 131 | 8d |  |  |
| 144 | Floor Finishes — Floor 08 |  | 16d | 2028-06-20 | 2028-07-11 | 131, 142 | 0d |  |  |
| 134 | Drywall & Partitions — Floor 11 |  | 12d | 2028-06-26 | 2028-07-11 | 120, 108, 132 | 20d |  |  |
| 145 | Floor Finishes — Floor 09 |  | 16d | 2028-06-29 | 2028-07-20 | 132, 143 | 155d |  |  |
| 135 | Drywall & Partitions — Floor 12 |  | 12d | 2028-06-30 | 2028-07-17 | 121, 108, 133 | 12d |  |  |
| 136 | Drywall & Partitions — Floor 13 |  | 12d | 2028-07-12 | 2028-07-27 | 122, 108, 134 | 20d |  |  |
| 146 | Floor Finishes — Floor 10 |  | 16d | 2028-07-12 | 2028-08-02 | 133, 144 | 0d |  |  |
| 147 | Floor Finishes — Floor 11 |  | 16d | 2028-07-21 | 2028-08-11 | 134, 145 | 155d |  |  |
| 148 | Floor Finishes — Floor 12 |  | 16d | 2028-08-03 | 2028-08-24 | 135, 146 | 0d |  |  |
| 149 | Floor Finishes — Floor 13 |  | 20d | 2028-08-25 | 2028-09-21 | 136, 148 | 0d |  |  |
| 150 | Internal Fit-out (joinery, FF&E, signage, lift cars, lift install) |  | 25d | 2028-09-22 | 2028-10-26 | 149 | 31d |  |  |
| 151 | Commissioning — MEP systems testing & balancing (TAB), lift commissioning, BMS integration |  | 70d | 2028-09-22 | 2028-12-28 | 123, 149 | 0d | Commissioning Crew [3360 h] | 319,200 |
| 154 | Final Cleaning (whole building, professional clean before PC) |  | 14d | 2028-10-27 | 2028-11-15 | 150 | 31d | Cleaning Crew [1792 h] | 80,640 |
| 155 | Inspections, H&S audits, energy performance verification, authority approvals |  | 20d | 2028-12-29 | 2029-01-25 | 154, 151, 152 | 0d |  |  |
| 156 | Snagging / punch list rectification, finishing contractor close-out |  | 18d | 2029-01-26 | 2029-02-20 | 155 | 0d |  |  |
| 157 | PRACTICAL COMPLETION MILESTONE | milestone | 0d | 2029-02-21 | 2029-02-21 | 156, 153 | 0d |  |  |
| 158 | Demobilisation, handover documentation, O&M manuals, as-built drawings |  | 18d | 2029-02-21 | 2029-03-16 | 157 | 0d |  |  |

Notes:
- 153: Expenses: External works — paving, landscaping, cycle store, loading bay, substation enclosure — Materials/Plant/Sublet 103000
