Schedule from Primavera P6, 2026-03-02 to 2027-12-21, costs in USD.
Must finish by 2027-12-21

## Resources

| Resource | Group |
| --- | --- |
| Site mgmt | labor |
| Earthworks | labor |
| HV/MV install | labor |
| Mechanical install | labor |
| ELV | labor |
| External works | labor |
| Blasting | labor |
| Concrete | labor |
| Steel erect | labor |
| Cladding | labor |
| Roofing | labor |
| Internal fit-out | labor |
| Fire systems | labor |
| Fire protection | labor |
| Electrical install | labor |
| Commissioning | labor |
| Concrete/Steel | labor |
| Landscaping | labor |

## Schedule

| ID | Activity | Type | Duration | Start | Finish | Predecessors | Total float | Resources | Cost |
| --- | --- | --- | --- | --- | --- | --- | --- | --- | --- |
| 1 | Commencement & Mobilisation (site establishment, hoarding, welfare, offices, tower crane base) |  | 15d | 2026-03-02 | 2026-03-20 |  | 0d | Site mgmt [720 h] | 3,000,000 |
| 17 | 110kV termination & primary substation equipment delivery & install (T1+T2 16 MVA, 20 kV SWB 14 panels) |  | 80d | 2026-03-23 | 2026-07-10 | 1 | 286d | HV/MV install [7680 h] | 3,989,650 |
| 18 | Generators & fuel storage — 8 × 2.5 MVA + paralleling + ATS (long-lead procurement ~28 wk) |  | 110d | 2026-03-23 | 2026-08-21 | 1 | 256d | HV/MV install [8800 h] | 9,865,737 |
| 2 | Site clearance, topsoil strip (26 565 m²) |  | 8d | 2026-03-23 | 2026-04-01 | 1 | 0d | Earthworks [512 h] | 168,512 |
| 20 | Chillers (4 nr) + dry coolers (10 nr) — manufacture, deliver, place on foundations |  | 120d | 2026-03-23 | 2026-09-04 | 1 | 181d | Mechanical install [9600 h] | 5,152,236 |
| 26 | Spine BMS head-end + DCIM + structured cabling (system-level install) |  | 60d | 2026-03-23 | 2026-06-12 | 1 | 306d | ELV [3840 h] | 2,510,469 |
| 3 | Bulk excavation in glacial till, cart away (19 256 m³) |  | 25d | 2026-04-02 | 2026-05-06 | 2 | 0d | Earthworks [2400 h] | 538,021 |
| 30 | Site-wide external works & access — entrance road base, perimeter fencing (1 070 m), gatehouse foundations |  | 40d | 2026-04-02 | 2026-05-27 | 2 | 298d | External works [3200 h] | 1,214,166 |
| 5 | Sub-base, capping and geotextile (12 837 m² footprint, sequenced per hall) |  | 25d | 2026-05-07 | 2026-06-10 | 3 | 0d | Earthworks [1600 h] | 659,196 |
| 4 | Rock excavation by blasting, eastern third (3 214 m³) incl. vibration monitoring |  | 20d | 2026-05-14 | 2026-06-10 | 3 FS+5d | 135d | Blasting [800 h] | 465,946 |
| 6 | Pad & strip foundations bearing on till — F1+F2 (30 nr) for substation + Hall 1 + spine |  | 22d | 2026-06-11 | 2026-07-10 | 5 | 113d | Concrete [2112 h] | 534,657 |
| 78 | Gatehouse build, ANPR & access control systems, CCTV (90-day retention) |  | 35d | 2026-06-25 | 2026-08-12 | 30 FS+20d | 333d | External works [2240 h] | 918,572 |
| 32 | Hall 1 — pad foundations F1+F2 (6 nr) and ground beams |  | 18d | 2026-07-09 | 2026-08-03 | 5 FS+20d | 0d | Concrete [720 h] | 122,000 |
| 77 | Final external works — roads (9 800 m²), stormwater, fibre entry (1 240 m), external lighting |  | 60d | 2026-07-09 | 2026-09-30 | 30 FS+30d | 298d | External works [4800 h] | 1,816,530 |
| 7 | Direct-to-rock and rock-socketed foundations, blasting zone — F3+F4 (10 nr) |  | 20d | 2026-07-13 | 2026-08-07 | 4, 6 | 113d | Concrete [1920 h] | 370,031 |
| 8 | Ground beams and pile caps (1 450 m) |  | 20d | 2026-07-13 | 2026-08-07 | 6 | 113d | Concrete [1600 h] | 630,715 |
| 31 | Hall 1 — ground slab FM2 (1 650 m²) on prepared sub-base |  | 15d | 2026-08-04 | 2026-08-24 | 32 | 345d | Concrete [1200 h] | 294,149 |
| 33 | Hall 1 — structural steel frame (≈112 t) — columns, truss, bracing, purlins, side rails |  | 28d | 2026-08-04 | 2026-09-10 | 32 | 0d | Steel erect [2688 h] | 632,800 |
| 21 | Primary + secondary pump sets, buffer vessels (12 pumps + 1 vessel) |  | 25d | 2026-08-10 | 2026-09-11 | 20 FS-20d | 181d | Mechanical install [1600 h] | 1,397,986 |
| 9 | Cable basement + waterproofing to substation (1 100 m²) |  | 22d | 2026-08-10 | 2026-09-08 | 7, 8 | 113d | Concrete [1760 h] | 159,491 |
| 10 | Substation blast/fire separation walls in-situ RC (640 m³) + bunding |  | 30d | 2026-09-09 | 2026-10-20 | 9 | 113d | Concrete [2880 h] | 476,084 |
| 22 | Chilled water pipework — primary loop spine (≈2 850 m) incl. valves |  | 35d | 2026-09-14 | 2026-10-30 | 21 | 181d | Mechanical install [3360 h] | 4,024,154 |
| 34 | Hall 1 — insulated precast wall panels & mezzanine floor (64 nr panels) |  | 22d | 2026-09-18 | 2026-10-19 | 33 FS+5d | 211d | Cladding [1408 h] | 450,048 |
| 35 | Hall 1 — warm roof build-up incl. AOVs & GRP walkways (1 728 m²) |  | 25d | 2026-09-25 | 2026-10-29 | 33 FS+10d | 203d | Roofing [1600 h] | 380,232 |
| 43 | Hall 2 — foundations, ground slab and ground beams (1 650 m² slab, 6 nr pads) |  | 20d | 2026-10-02 | 2026-10-29 | 33 FS+15d | 0d | Concrete [800 h] | 416,000 |
| 11 | Ground-bearing slab 250 mm FM2 — substation + spine (≈3 200 m²) |  | 18d | 2026-10-21 | 2026-11-13 | 10 | 131d | Concrete [1440 h] | 570,357 |
| 12 | Structural steel frame to substation (≈45 t incl. bracing) |  | 22d | 2026-10-21 | 2026-11-19 | 10 | 113d | Steel erect [1056 h] | 218,000 |
| 36 | Hall 1 — internal blockwork, EI 120 compartmentation, UPS/LV/battery rooms fit-out |  | 22d | 2026-10-30 | 2026-11-30 | 34, 35 | 203d | Internal fit-out [1408 h] | 140,000 |
| 44 | Hall 2 — structural steel frame (≈112 t) |  | 25d | 2026-10-30 | 2026-12-03 | 43 | 0d | Steel erect [2400 h] | 632,800 |
| 23 | Heat-recovery pipework + waste-heat recovery plant (260 m + plant) |  | 25d | 2026-11-02 | 2026-12-04 | 22 | 181d | Mechanical install [2000 h] | 4,075,006 |
| 24 | Thermal insulation + water treatment to spine chilled water |  | 25d | 2026-11-02 | 2026-12-04 | 22 | 181d | Mechanical install [1600 h] | 1,945,473 |
| 19 | Shared MEP spine steel + precast panels + mezzanine (≈80 t steel, 148 nr precast) |  | 35d | 2026-11-16 | 2027-01-01 | 11 | 131d | Steel erect [3360 h] | 1,346,326 |
| 13 | Metal deck, purlins and side rails — substation + spine roof (≈3 200 m²) |  | 18d | 2026-11-20 | 2026-12-15 | 12 | 113d | Steel erect [720 h] | 230,700 |
| 40 | Hall 1 — aspirating detection, addressable FA, gaseous suppression + sprinklers |  | 20d | 2026-12-01 | 2026-12-28 | 36 | 243d | Fire systems [1280 h] | 432,000 |
| 45 | Hall 2 — precast wall panels + mezzanine (64 nr) |  | 22d | 2026-12-11 | 2027-01-11 | 44 FS+5d | 30d | Cladding [1408 h] | 450,048 |
| 14 | Intumescent fire protection to substation steel (≈1 600 m²) |  | 14d | 2026-12-16 | 2027-01-04 | 13 | 113d | Fire protection [336 h] | 76,248 |
| 16 | Warm roof build-up to substation + spine (≈3 200 m², U=0.09) |  | 18d | 2026-12-16 | 2027-01-08 | 13 | 131d | Roofing [1152 h] | 339,616 |
| 46 | Hall 2 — warm roof build-up (1 728 m²) |  | 22d | 2026-12-18 | 2027-01-18 | 44 FS+10d | 25d | Roofing [1408 h] | 380,232 |
| 54 | Hall 3 — foundations, ground slab and ground beams (1 650 m² slab, 6 nr pads) |  | 20d | 2027-01-01 | 2027-01-28 | 44 FS+20d | 0d | Concrete [800 h] | 416,000 |
| 25 | Spine ventilation + dry cooler yard louvres & acoustic treatment |  | 30d | 2027-01-04 | 2027-02-12 | 19 | 131d | Mechanical install [1920 h] | 2,496,403 |
| 15 | Insulated composite cladding — substation + spine (≈3 200 m²) |  | 22d | 2027-01-05 | 2027-02-03 | 14 | 113d | Cladding [1408 h] | 559,120 |
| 47 | Hall 2 — internal blockwork, EI 120, UPS/LV/battery rooms fit-out |  | 22d | 2027-01-19 | 2027-02-17 | 45, 46 | 25d | Internal fit-out [1408 h] | 140,000 |
| 55 | Hall 3 — structural steel frame (≈112 t) |  | 25d | 2027-01-29 | 2027-03-04 | 54 | 0d | Steel erect [2400 h] | 632,800 |
| 27 | Spine fire detection (addressable) + sprinklers + gaseous suppression to switchgear |  | 25d | 2027-02-04 | 2027-03-10 | 15, 16 | 113d | Fire systems [1600 h] | 709,000 |
| 28 | Spine earthing, lightning protection & energy metering |  | 20d | 2027-02-04 | 2027-03-03 | 15 | 118d | Electrical install [1280 h] | 1,148,898 |
| 48 | Hall 2 — UPS/batteries/LV switchgear + 240 m overhead busway + transformer |  | 35d | 2027-02-18 | 2027-04-07 | 47 | 25d | Electrical install [2800 h] | 1,937,080 |
| 51 | Hall 2 — fire detection + gaseous suppression + sprinklers |  | 18d | 2027-02-18 | 2027-03-15 | 47 | 72d | Fire systems [1152 h] | 432,000 |
| 29 | Shared substation + spine & generator compound energisation / pre-commissioning (Section 1 enabling) |  | 18d | 2027-03-11 | 2027-04-05 | 17, 18, 23, 24, 25, 26, 27, 28 | 113d | Commissioning [864 h] | 1,500,000 |
| 56 | Hall 3 — precast wall panels + mezzanine (64 nr) |  | 22d | 2027-03-12 | 2027-04-12 | 55 FS+5d | 75d | Cladding [1408 h] | 450,048 |
| 57 | Hall 3 — warm roof build-up (1 728 m²) |  | 22d | 2027-03-19 | 2027-04-19 | 55 FS+10d | 70d | Roofing [1408 h] | 380,232 |
| 37 | Hall 1 — UPS, batteries, LV switchboards, hall transformer, overhead busway (4 × 1 MVA UPS + 240 m busway) |  | 32d | 2027-04-06 | 2027-05-19 | 36, 29 | 113d | Electrical install [2560 h] | 1,937,080 |
| 49 | Hall 2 — 7 × CRAH units + secondary CHW + valves + insulation |  | 30d | 2027-04-08 | 2027-05-19 | 48 | 25d | Mechanical install [2400 h] | 2,412,000 |
| 50 | Hall 2 — cold-aisle containment, PDUs, structured cabling |  | 22d | 2027-04-08 | 2027-05-07 | 48 | 33d | ELV [1408 h] | 520,000 |
| 65 | Hall 4 — foundations, ground slab and ground beams (1 650 m² slab, 6 nr pads) |  | 20d | 2027-04-09 | 2027-05-06 | 55 FS+25d | 0d | Concrete [800 h] | 416,000 |
| 58 | Hall 3 — internal blockwork, EI 120, UPS/LV/battery rooms fit-out |  | 22d | 2027-04-20 | 2027-05-19 | 56, 57 | 70d | Internal fit-out [1408 h] | 140,000 |
| 66 | Hall 4 — structural steel frame (≈112 t) |  | 25d | 2027-05-07 | 2027-06-10 | 65 | 0d | Steel erect [2400 h] | 632,800 |
| 38 | Hall 1 — 7 × CRAH units + secondary CHW pipework + valves + insulation |  | 28d | 2027-05-20 | 2027-06-28 | 37 | 113d | Mechanical install [2240 h] | 2,412,000 |
| 39 | Hall 1 — cold-aisle containment, rack PDUs, structured cabling, cable trays |  | 25d | 2027-05-20 | 2027-06-23 | 37 | 116d | ELV [1600 h] | 520,000 |
| 52 | Hall 2 — L1–L3 commissioning |  | 18d | 2027-05-20 | 2027-06-14 | 49, 50, 51 | 25d | Commissioning [720 h] | 483,000 |
| 59 | Hall 3 — UPS/batteries/LV switchgear + 240 m overhead busway + transformer |  | 35d | 2027-05-20 | 2027-07-07 | 58 | 70d | Electrical install [2800 h] | 1,937,080 |
| 62 | Hall 3 — fire detection + gaseous suppression + sprinklers |  | 18d | 2027-05-20 | 2027-06-14 | 58 | 117d | Fire systems [1152 h] | 432,000 |
| 53 | Hall 2 — L4 + L5 load-bank + Section 2 sectional completion | milestone | 0d | 2027-06-15 | 2027-06-15 | 52 | 25d | Commissioning | 720,000 |
| 67 | Hall 4 — precast wall panels + mezzanine (64 nr) |  | 22d | 2027-06-18 | 2027-07-19 | 66 FS+5d | 5d | Cladding [1408 h] | 450,048 |
| 68 | Hall 4 — warm roof build-up (1 728 m²) |  | 22d | 2027-06-25 | 2027-07-26 | 66 FS+10d | 0d | Roofing [1408 h] | 380,232 |
| 41 | Hall 1 — L1/L2/L3 commissioning (factory, static, integrated) |  | 12d | 2027-06-29 | 2027-07-14 | 38, 39, 40 | 113d | Commissioning [480 h] | 483,000 |
| 75 | Admin/NOC 2-storey block — foundations, frame, envelope (1 250 m²) |  | 40d | 2027-06-29 | 2027-08-23 | 53 FS+10d | 25d | Concrete/Steel [3200 h] | 980,000 |
| 60 | Hall 3 — 7 × CRAH units + secondary CHW + valves + insulation |  | 30d | 2027-07-08 | 2027-08-18 | 59 | 70d | Mechanical install [2400 h] | 2,412,000 |
| 61 | Hall 3 — cold-aisle containment, PDUs, structured cabling |  | 22d | 2027-07-08 | 2027-08-06 | 59 | 78d | ELV [1408 h] | 520,000 |
| 42 | Hall 1 — L4 integrated testing + L5 load-bank + Section 1 sectional completion | milestone | 0d | 2027-07-15 | 2027-07-15 | 41, 29 | 113d | Commissioning | 1,003,000 |
| 69 | Hall 4 — internal blockwork, EI 120, UPS/LV/battery rooms fit-out |  | 22d | 2027-07-27 | 2027-08-25 | 67, 68 | 0d | Internal fit-out [1408 h] | 140,000 |

Notes:
- 1: Expenses: Commencement & Mobilisation (site establishment, hoarding, welfare, offices, tower crane base) — Materials/Plant/Sublet 3000000
- 17: Expenses: 110kV termination & primary substation equipment delivery & install (T1+T2 16 MVA, 20 kV SWB 14 panels) — Materials/Plant/Sublet 3989650
- 18: Expenses: Generators & fuel storage — 8 × 2.5 MVA + paralleling + ATS (long-lead procurement ~28 wk) — Materials/Plant/Sublet 9865737
- 2: Expenses: Site clearance, topsoil strip (26 565 m²) — Materials/Plant/Sublet 168512
- 20: Expenses: Chillers (4 nr) + dry coolers (10 nr) — manufacture, deliver, place on foundations — Materials/Plant/Sublet 5152236
- 26: Expenses: Spine BMS head-end + DCIM + structured cabling (system-level install) — Materials/Plant/Sublet 2510469
- 3: Expenses: Bulk excavation in glacial till, cart away (19 256 m³) — Materials/Plant/Sublet 538021
- 30: Expenses: Site-wide external works & access — entrance road base, perimeter fencing (1 070 m), gatehouse foundations — Materials/Plant/Sublet 1214166
- 5: Expenses: Sub-base, capping and geotextile (12 837 m² footprint, sequenced per hall) — Materials/Plant/Sublet 659196
- 4: Expenses: Rock excavation by blasting, eastern third (3 214 m³) incl. vibration monitoring — Materials/Plant/Sublet 465946
- 6: Expenses: Pad & strip foundations bearing on till — F1+F2 (30 nr) for substation + Hall 1 + spine — Materials/Plant/Sublet 534657
- 78: Expenses: Gatehouse build, ANPR & access control systems, CCTV (90-day retention) — Materials/Plant/Sublet 918572
- 32: Expenses: Hall 1 — pad foundations F1+F2 (6 nr) and ground beams — Materials/Plant/Sublet 122000
- 77: Expenses: Final external works — roads (9 800 m²), stormwater, fibre entry (1 240 m), external lighting — Materials/Plant/Sublet 1816530
- 7: Expenses: Direct-to-rock and rock-socketed foundations, blasting zone — F3+F4 (10 nr) — Materials/Plant/Sublet 370031
- 8: Expenses: Ground beams and pile caps (1 450 m) — Materials/Plant/Sublet 630715
- 31: Expenses: Hall 1 — ground slab FM2 (1 650 m²) on prepared sub-base — Materials/Plant/Sublet 294149
- 33: Expenses: Hall 1 — structural steel frame (≈112 t) — columns, truss, bracing, purlins, side rails — Materials/Plant/Sublet 632800
- 21: Expenses: Primary + secondary pump sets, buffer vessels (12 pumps + 1 vessel) — Materials/Plant/Sublet 1397986
- 9: Expenses: Cable basement + waterproofing to substation (1 100 m²) — Materials/Plant/Sublet 159491
- 10: Expenses: Substation blast/fire separation walls in-situ RC (640 m³) + bunding — Materials/Plant/Sublet 476084
- 22: Expenses: Chilled water pipework — primary loop spine (≈2 850 m) incl. valves — Materials/Plant/Sublet 4024154
- 34: Expenses: Hall 1 — insulated precast wall panels & mezzanine floor (64 nr panels) — Materials/Plant/Sublet 450048
- 35: Expenses: Hall 1 — warm roof build-up incl. AOVs & GRP walkways (1 728 m²) — Materials/Plant/Sublet 380232
- 43: Expenses: Hall 2 — foundations, ground slab and ground beams (1 650 m² slab, 6 nr pads) — Materials/Plant/Sublet 416000
- 11: Expenses: Ground-bearing slab 250 mm FM2 — substation + spine (≈3 200 m²) — Materials/Plant/Sublet 570357
- 12: Expenses: Structural steel frame to substation (≈45 t incl. bracing) — Materials/Plant/Sublet 218000
- 36: Expenses: Hall 1 — internal blockwork, EI 120 compartmentation, UPS/LV/battery rooms fit-out — Materials/Plant/Sublet 140000
- 44: Expenses: Hall 2 — structural steel frame (≈112 t) — Materials/Plant/Sublet 632800
- 23: Expenses: Heat-recovery pipework + waste-heat recovery plant (260 m + plant) — Materials/Plant/Sublet 4075006
- 24: Expenses: Thermal insulation + water treatment to spine chilled water — Materials/Plant/Sublet 1945473
- 19: Expenses: Shared MEP spine steel + precast panels + mezzanine (≈80 t steel, 148 nr precast) — Materials/Plant/Sublet 1346326
- 13: Expenses: Metal deck, purlins and side rails — substation + spine roof (≈3 200 m²) — Materials/Plant/Sublet 230700
- 40: Expenses: Hall 1 — aspirating detection, addressable FA, gaseous suppression + sprinklers — Materials/Plant/Sublet 432000
- 45: Expenses: Hall 2 — precast wall panels + mezzanine (64 nr) — Materials/Plant/Sublet 450048
- 14: Expenses: Intumescent fire protection to substation steel (≈1 600 m²) — Materials/Plant/Sublet 76248
- 16: Expenses: Warm roof build-up to substation + spine (≈3 200 m², U=0.09) — Materials/Plant/Sublet 339616
- 46: Expenses: Hall 2 — warm roof build-up (1 728 m²) — Materials/Plant/Sublet 380232
- 54: Expenses: Hall 3 — foundations, ground slab and ground beams (1 650 m² slab, 6 nr pads) — Materials/Plant/Sublet 416000
- 25: Expenses: Spine ventilation + dry cooler yard louvres & acoustic treatment — Materials/Plant/Sublet 2496403
- 15: Expenses: Insulated composite cladding — substation + spine (≈3 200 m²) — Materials/Plant/Sublet 559120
- 47: Expenses: Hall 2 — internal blockwork, EI 120, UPS/LV/battery rooms fit-out — Materials/Plant/Sublet 140000
- 55: Expenses: Hall 3 — structural steel frame (≈112 t) — Materials/Plant/Sublet 632800
- 27: Expenses: Spine fire detection (addressable) + sprinklers + gaseous suppression to switchgear — Materials/Plant/Sublet 709000
- 28: Expenses: Spine earthing, lightning protection & energy metering — Materials/Plant/Sublet 1148898
- 48: Expenses: Hall 2 — UPS/batteries/LV switchgear + 240 m overhead busway + transformer — Materials/Plant/Sublet 1937080
- 51: Expenses: Hall 2 — fire detection + gaseous suppression + sprinklers — Materials/Plant/Sublet 432000
- 29: Expenses: Shared substation + spine & generator compound energisation / pre-commissioning (Section 1 enabling) — Materials/Plant/Sublet 1500000
- 56: Expenses: Hall 3 — precast wall panels + mezzanine (64 nr) — Materials/Plant/Sublet 450048
- 57: Expenses: Hall 3 — warm roof build-up (1 728 m²) — Materials/Plant/Sublet 380232
- 37: Expenses: Hall 1 — UPS, batteries, LV switchboards, hall transformer, overhead busway (4 × 1 MVA UPS + 240 m busway) — Materials/Plant/Sublet 1937080
- 49: Expenses: Hall 2 — 7 × CRAH units + secondary CHW + valves + insulation — Materials/Plant/Sublet 2412000
- 50: Expenses: Hall 2 — cold-aisle containment, PDUs, structured cabling — Materials/Plant/Sublet 520000
- 65: Expenses: Hall 4 — foundations, ground slab and ground beams (1 650 m² slab, 6 nr pads) — Materials/Plant/Sublet 416000
- 58: Expenses: Hall 3 — internal blockwork, EI 120, UPS/LV/battery rooms fit-out — Materials/Plant/Sublet 140000
- 66: Expenses: Hall 4 — structural steel frame (≈112 t) — Materials/Plant/Sublet 632800
- 38: Expenses: Hall 1 — 7 × CRAH units + secondary CHW pipework + valves + insulation — Materials/Plant/Sublet 2412000
- 39: Expenses: Hall 1 — cold-aisle containment, rack PDUs, structured cabling, cable trays — Materials/Plant/Sublet 520000
- 52: Expenses: Hall 2 — L1–L3 commissioning — Materials/Plant/Sublet 483000
- 59: Expenses: Hall 3 — UPS/batteries/LV switchgear + 240 m overhead busway + transformer — Materials/Plant/Sublet 1937080
- 62: Expenses: Hall 3 — fire detection + gaseous suppression + sprinklers — Materials/Plant/Sublet 432000
- 53: Expenses: Hall 2 — L4 + L5 load-bank + Section 2 sectional completion — Materials/Plant/Sublet 720000
- 67: Expenses: Hall 4 — precast wall panels + mezzanine (64 nr) — Materials/Plant/Sublet 450048
- 68: Expenses: Hall 4 — warm roof build-up (1 728 m²) — Materials/Plant/Sublet 380232
- 41: Expenses: Hall 1 — L1/L2/L3 commissioning (factory, static, integrated) — Materials/Plant/Sublet 483000
- 75: Expenses: Admin/NOC 2-storey block — foundations, frame, envelope (1 250 m²) — Materials/Plant/Sublet 980000
- 60: Expenses: Hall 3 — 7 × CRAH units + secondary CHW + valves + insulation — Materials/Plant/Sublet 2412000
- 61: Expenses: Hall 3 — cold-aisle containment, PDUs, structured cabling — Materials/Plant/Sublet 520000
- 42: Expenses: Hall 1 — L4 integrated testing + L5 load-bank + Section 1 sectional completion — Materials/Plant/Sublet 1003000
- 69: Expenses: Hall 4 — internal blockwork, EI 120, UPS/LV/battery rooms fit-out — Materials/Plant/Sublet 140000

| ID | Activity | Type | Duration | Start | Finish | Predecessors | Total float | Resources | Cost |
| --- | --- | --- | --- | --- | --- | --- | --- | --- | --- |
| 63 | Hall 3 — L1–L3 commissioning |  | 18d | 2027-08-19 | 2027-09-13 | 60, 61, 62 | 70d | Commissioning [720 h] | 483,000 |
| 76 | Admin/NOC internal fit-out, services and finishing (1 250 m²) |  | 40d | 2027-08-24 | 2027-10-18 | 75 | 25d | Internal fit-out [2560 h] | 620,000 |
| 70 | Hall 4 — UPS/batteries/LV switchgear + 240 m overhead busway + transformer |  | 35d | 2027-08-26 | 2027-10-13 | 69 | 0d | Electrical install [2800 h] | 1,937,080 |
| 73 | Hall 4 — fire detection + gaseous suppression + sprinklers |  | 18d | 2027-08-26 | 2027-09-20 | 69 | 47d | Fire systems [1152 h] | 432,000 |
| 64 | Hall 3 — L4 + L5 load-bank + Section 3 sectional completion | milestone | 0d | 2027-09-14 | 2027-09-14 | 63 | 70d | Commissioning | 720,000 |
| 71 | Hall 4 — 7 × CRAH units + secondary CHW + valves + insulation |  | 30d | 2027-10-14 | 2027-11-24 | 70 | 0d | Mechanical install [2400 h] | 2,412,000 |
| 72 | Hall 4 — cold-aisle containment, PDUs, structured cabling |  | 22d | 2027-10-14 | 2027-11-12 | 70 | 8d | ELV [1408 h] | 520,000 |
| 79 | Site-wide landscaping & final finishes |  | 20d | 2027-10-19 | 2027-11-15 | 76, 77, 78 | 25d | Landscaping [1280 h] | 212,311 |
| 74 | Hall 4 — L1–L3 commissioning |  | 18d | 2027-11-25 | 2027-12-20 | 71, 72, 73 | 0d | Commissioning [720 h] | 483,000 |
| 80 | Hall 4 — L4 + L5 load-bank + Section 4 sectional completion (whole Works) | milestone | 0d | 2027-12-21 | 2027-12-21 | 74, 79 | 0d | Commissioning | 720,000 |

Notes:
- 63: Expenses: Hall 3 — L1–L3 commissioning — Materials/Plant/Sublet 483000
- 76: Expenses: Admin/NOC internal fit-out, services and finishing (1 250 m²) — Materials/Plant/Sublet 620000
- 70: Expenses: Hall 4 — UPS/batteries/LV switchgear + 240 m overhead busway + transformer — Materials/Plant/Sublet 1937080
- 73: Expenses: Hall 4 — fire detection + gaseous suppression + sprinklers — Materials/Plant/Sublet 432000
- 64: Expenses: Hall 3 — L4 + L5 load-bank + Section 3 sectional completion — Materials/Plant/Sublet 720000
- 71: Expenses: Hall 4 — 7 × CRAH units + secondary CHW + valves + insulation — Materials/Plant/Sublet 2412000
- 72: Expenses: Hall 4 — cold-aisle containment, PDUs, structured cabling — Materials/Plant/Sublet 520000
- 79: Expenses: Site-wide landscaping & final finishes — Materials/Plant/Sublet 212311
- 74: Expenses: Hall 4 — L1–L3 commissioning — Materials/Plant/Sublet 483000
- 80: Expenses: Hall 4 — L4 + L5 load-bank + Section 4 sectional completion (whole Works) — Materials/Plant/Sublet 720000
